# SOA AIA Project Plan

Schedule from MS Project, 2006-05-31 to 2006-07-18.
Oracle Corp.
Copyright © 2006, 2016, Oracle and/or its affiliates. All rights reserved.

## Calendars

- Standard: Mon-Fri 08:00-12:00, 13:00-17:00; Sat-Sun off.

## Schedule

| ID | WBS | Task | Duration | Start | Finish | Predecessors | Total slack | Work | Text5 | Text8 | Text2 | Text1 |
| --- | --- | --- | --- | --- | --- | --- | --- | --- | --- | --- | --- | --- |
| 1 | E | **OUM** | 34.03d? | 2006-05-31 | 2006-07-18 |  | 0d | 245.82h | 31/05/2006 | null |  |  |
| 2 | I | **OUM - SOA AIA Project Workplan** | 272.28h? | 2006-05-31 | 2006-07-18 |  | 0d | 245.82h |  | null |  |  |
| 3 | PS | **Project Start Up** | 8h? | 2006-05-31 | 2006-05-31 |  | 0d |  |  | null | PS |  |
| 4 | PS.ACT.RBC | **Review Bid and Contract** | 1d? | 2006-05-31 | 2006-05-31 |  | 0d |  |  |  |  |  |
| 5 | PS.BT.020 | Review and Confirm Business Case | 1d? | 2006-05-31 | 2006-05-31 |  | 0d |  |  |  |  | Confirmed Business Case |
| 6 | INIT | **Initiate** | 21.53d? | 2006-05-31 | 2006-06-29 |  | 0d |  |  |  |  |  |
| 7 | INIT.ACT.EDBPD | **Execute Discovery - Brainstorm, Prioritize and Discover Entry Points** | 1d? | 2006-05-31 | 2006-05-31 |  | 0d |  |  |  |  |  |
| 8 | INIT.EA.075 | Develop Technology Reference Architectures | 1d? | 2006-05-31 | 2006-05-31 |  | 0d |  |  |  |  | Technology Reference Architectures |
| 9 | INIT.ACT.EDGI | **Execute Discovery - Gather Information (As Is)** | 1d? | 2006-06-28 | 2006-06-29 |  | 0d |  |  |  |  |  |
| 10 | INIT.IP.014 | Inventory Services (Register/Re-register AIA Artifacts in Business Services Repository) | 1d? | 2006-06-28 | 2006-06-29 | 119 | 0d |  |  |  |  | Services Portfolio |
| 11 | INIT.ACT.DSPC | **Develop Solution and Present to Customer** | 1d? | 2006-06-01 | 2006-06-01 |  | 0d |  |  |  |  |  |
| 12 | INIT.EA.110 | Develop Future State Enterprise Architecture | 1d? | 2006-06-01 | 2006-06-01 | 8 | 0d |  |  |  |  | Future State Enterprise Architecture |
| 13 | A | **Inception** | 4d? | 2006-05-31 | 2006-06-05 |  | 0d |  |  |  |  |  |
| 14 | A.ACT.GBRI | **Gather Business Requirements - Inception** | 2d? | 2006-05-31 | 2006-06-01 |  | 0d |  |  |  |  |  |
| 15 | A.RD.001 | Detail Business and System Objectives | 1d? | 2006-05-31 | 2006-05-31 |  | 0d |  |  |  |  | Business and System Objectives |
| 16 | A.RD.011 | Develop Future Process Model | 1d? | 2006-06-01 | 2006-06-01 | 15 | 2d |  |  |  |  | Future Process Model |
| 17 | A.RA.015 | Develop Business Use Case Model (Identify Integration Scenarios) | 1d? | 2006-06-01 | 2006-06-01 | 15 | 2d |  |  |  |  | Business Use Case Model |
| 18 | A.ACT.ECBB | **Establish Current Business Baseline** | 1d? | 2006-05-31 | 2006-05-31 |  | 0d |  |  |  |  |  |
| 19 | A.RD.030 | Develop Current Business Process Model | 1d? | 2006-05-31 | 2006-05-31 |  | 0d |  |  |  |  | Current Process Model |
| 20 | A.ACT.GR | **Gather Solution Requirements** | 3d? | 2006-06-01 | 2006-06-05 |  | 0d |  |  |  |  |  |
| 21 | A.RA.023.1 | Develop Use Case Model (Identify Enterprise Business Objects and Messages) | 1d? | 2006-06-01 | 2006-06-01 | 15 | 0d |  |  |  |  | Use Case Model |
| 22 | A.RA.023.2 | Develop Use Case Model (Identify Enterprise Business Service Operations) | 1d? | 2006-06-02 | 2006-06-02 | 21 | 0d |  |  |  |  | Use Case Model |
| 23 | A.RA.023.3 | Develop Use Case Model (Identify Participating Applications and their Roles - Requesters/Service Providers) | 1d? | 2006-06-05 | 2006-06-05 | 22 | 0d |  |  |  |  | Use Case Model |
| 24 | A.ACT.GSP | **Gather Supporting Requirements** | 1d? | 2006-06-01 | 2006-06-01 |  | 0d |  |  |  |  |  |
| 25 | A.TA.010 | Conduct Technical Architecture Workshop | 1d? | 2006-06-01 | 2006-06-01 | 15 | 0d |  |  |  |  | Technical Architecture Workshop Results |
| 26 | A.DO.010 | Define Documentation Requirements and Strategy | 1d? | 2006-06-01 | 2006-06-01 | 15 | 0d |  |  |  |  | Documentation Requirements and Strategy |
| 27 | A.RD.070 | Determine Audit and Control Requirements | 1d? | 2006-06-01 | 2006-06-01 | 15 | 0d |  |  |  |  | Audit and Control Requirements |

| ID | WBS | Task | Type | Duration | Start | Finish | Predecessors | Total slack | Work | Text1 | Text2 | Text8 | Text18 | Text6 | Text7 | Text12 |
| --- | --- | --- | --- | --- | --- | --- | --- | --- | --- | --- | --- | --- | --- | --- | --- | --- |
| 28 | A.ACT.LCOB | **Lifecycle Objective Milestone** |  | 0d | 2006-06-05 | 2006-06-05 |  | 0d |  |  |  |  |  |  |  |  |
| 29 | A.PMC.LCOB | Lifecycle Objective Milestone | milestone | 0h | 2006-06-05 | 2006-06-05 | 15, 16, 17, 23 | 0d |  | Lifecycle Objective Milestone | PMC.LCOB | null | MGMT |  |  |  |
| 30 | B | **Elaboration** |  | 68.23h? | 2006-06-06 | 2006-06-16 |  | 0d | 120.76h |  |  | null |  |  |  |  |
| 31 | B.ACT.DPS | **Define Project Strategy** |  | 1d? | 2006-06-06 | 2006-06-06 |  | 0d |  |  |  |  |  |  |  |  |
| 32 | B.TE.010 | Develop Testing Strategy |  | 1d? | 2006-06-06 | 2006-06-06 | 29 | 0d |  | Testing Strategy |  |  |  |  |  |  |
| 33 | B.ACT.DI | **Define Infrastructure** |  | 1d? | 2006-06-06 | 2006-06-06 |  | 0d |  |  |  |  |  |  |  |  |
| 34 | B.TA.020 | Define Technical Architecture Requirements and Strategy |  | 1d? | 2006-06-06 | 2006-06-06 | 29 | 0d |  | Technical Architecture Requirements and Strategy |  |  |  |  |  |  |
| 35 | B.TA.070 | Define Initial Architecture and Application Mapping |  | 1d? | 2006-06-06 | 2006-06-06 | 29 | 6.53d |  | Initial Architecture and Application Mapping |  |  |  |  |  |  |
| 36 | B.ACT.DTP | **Develop Test Plans** |  | 1d? | 2006-06-07 | 2006-06-07 |  | 0d |  |  |  |  |  |  |  |  |
| 37 | B.TE.082 | Develop Acceptance Test Plan |  | 1d? | 2006-06-07 | 2006-06-07 | 32 | 0d |  | Acceptance Test Plan |  |  |  |  |  |  |
| 38 | B.ACT.DUCD | **Develop Use Case Details** |  | 4.53d | 2006-06-06 | 2006-06-12 |  | 0d | 120.76h |  |  |  |  |  |  |  |
| 39 | B.RA.024.1 | Develop Use Case Details (identify/Review the Requester Application Request Operations and Messages) |  | 36.23h | 2006-06-06 | 2006-06-12 | 29 | 0d | 60.38h | Use Case Specification | RA.024.1 | 20 | EXEC | RA | Requirements Analysis | REI |
| 40 | B.RA.024.2 | Develop Use Case Details (identify/Review the Provider Application Service Capabilities and Messages) |  | 36.23h | 2006-06-06 | 2006-06-12 | 29 | 0d | 60.38h | Use Case Specification | RA.024.1 | 20 | EXEC | RA | Requirements Analysis | REI |
| 41 | B.ACT.AE | **Analyze - Elaboration** |  | 2d? | 2006-06-12 | 2006-06-14 |  | 0d |  |  |  |  |  |  |  |  |
| 42 | B.AN.050.1 | Analyze Data (Define/Extend Enterprise Business Objects and Messages) |  | 1d? | 2006-06-12 | 2006-06-13 | 40 | 0d |  | Data Analysis |  |  |  |  |  |  |
| 43 | B.AN.080.1 | Analyze Service (Define/Extend Service Patterns for Business Service Operations) |  | 1d? | 2006-06-12 | 2006-06-13 | 40 | 0d |  | Service Portfolio - Proposed Services |  |  |  |  |  |  |
| 44 | B.AN.085.1 | Define Service (Define/Extend Service Patterns for Business Service Operations) |  | 1d? | 2006-06-13 | 2006-06-14 | 43 | 0d |  | Service Definition |  |  |  |  |  |  |
| 45 | B.AN.080.2 | Analyze Service (Design/Extend Enterprise Business Services) |  | 1d? | 2006-06-12 | 2006-06-13 | 40 | 0d |  | Service Portfolio - Proposed Services |  |  |  |  |  |  |
| 46 | B.AN.085.2 | Define Service (Design/Extend Enterprise Business Services) |  | 1d? | 2006-06-13 | 2006-06-14 | 45 | 0d |  | Service Definition |  |  |  |  |  |  |
| 47 | B.AN.080.3 | Analyze Service (Design/Extend Enterprise Business Flows) |  | 1d? | 2006-06-12 | 2006-06-13 | 40 | 0d |  | Service Portfolio - Proposed Services |  |  |  |  |  |  |
| 48 | B.AN.085.3 | Define Service (Design/Extend Enterprise Business Flows) |  | 1d? | 2006-06-13 | 2006-06-14 | 47 | 0d |  | Service Definition |  |  |  |  |  |  |
| 49 | B.AN.080.4 | Analyze Service (Design/Extend Application Business Connector Services) |  | 1d? | 2006-06-12 | 2006-06-13 | 40 | 0d |  | Service Portfolio - Proposed Services |  |  |  |  |  |  |
| 50 | B.AN.085.4 | Define Service (Design/Extend Application Business Connector Services) |  | 1d? | 2006-06-13 | 2006-06-14 | 49 | 0d |  | Service Definition |  |  |  |  |  |  |
| 51 | B.AN.080.5 | Analyze Service [Design/Revisit Adaptor Services (SOA Entry Points to AIA Artifacts)] |  | 1d? | 2006-06-12 | 2006-06-13 | 40 | 0d |  | Service Portfolio - Proposed Services |  |  |  |  |  |  |
| 52 | B.AN.085.5 | Define Service [Design/Revisit Adaptor Services (SOA Entry Points to AIA Artifacts)] |  | 1d? | 2006-06-13 | 2006-06-14 | 51 | 0d |  | Service Definition |  |  |  |  |  |  |

| ID | WBS | Task | Duration | Start | Finish | Predecessors | Total slack | Work | Text1 | Text8 |
| --- | --- | --- | --- | --- | --- | --- | --- | --- | --- | --- |
| 53 | B.ACT.DE | **Design - Elaboration** | 2d? | 2006-06-13 | 2006-06-15 |  | 0d |  |  |  |
| 54 | B.DS.090.1 | Design Data (Define/Extend Enterprise Business Objects and Messages) | 1d? | 2006-06-13 | 2006-06-14 | 42 | 0d |  | Component Data Design |  |
| 55 | B.DS.120.1 | Design Services (Define/Extend Service Patterns for Business Service Operations) | 1d? | 2006-06-14 | 2006-06-15 | 44 | 0d |  | Service Design |  |
| 56 | B.DS.120.2 | Design Services (Design/Extend Enterprise Business Services) | 1d? | 2006-06-14 | 2006-06-15 | 46 | 0d |  | Service Design |  |
| 57 | B.DS.120.3 | Design Services (Design/Extend Enterprise Business Flows) | 1d? | 2006-06-14 | 2006-06-15 | 48 | 0d |  | Service Design |  |
| 58 | B.DS.120.4 | Design Services (Design/Extend Application Business Connector Services) | 1d? | 2006-06-14 | 2006-06-15 | 50 | 0d |  | Service Design |  |
| 59 | B.DS.120.5 | Design Services [Design/Revisit Adaptor Services (SOA Entry Points to AIA Artifacts)] | 1d? | 2006-06-14 | 2006-06-15 | 52 | 0d |  | Service Design |  |
| 60 | B.ACT.PPM | **Plan Performance Management** | 1d? | 2006-06-12 | 2006-06-13 |  | 0d |  |  |  |
| 61 | B.PT.030 | Define Performance Testing Strategy | 1d? | 2006-06-12 | 2006-06-13 | 40 | 0d |  | Performance Testing Strategy |  |
| 62 | B.ACT.PACDE | **Prepare to Acquire and Convert Data - Elaboration** | 1d? | 2006-06-06 | 2006-06-06 |  | 0d |  |  |  |
| 63 | B.CV.027 | Perform Data Mapping | 1d? | 2006-06-06 | 2006-06-06 | 29 | 0d |  | Data Mapping |  |
| 64 | B.ACT.LCAR | **Lifecycle Architecture Milestone** | 1d? | 2006-06-15 | 2006-06-16 |  | 0d |  |  |  |
| 65 | B.PMC.LCAR | Lifecycle Architecture Milestone | 1d? | 2006-06-15 | 2006-06-16 | 35, 59 | 0d |  | Lifecycle Architecture Milestone |  |
| 66 | C | **Construction** | 34.03d? | 2006-05-31 | 2006-07-18 |  | 0d | 125.06h |  | null |
| 67 | C.ACT.AC | **Analyze - Construction** | 2d? | 2006-06-16 | 2006-06-20 |  | 0d |  |  |  |
| 68 | C.AN.050.2 | Analyze Data (Define/Extend Enterprise Business Objects and Messages) | 1d? | 2006-06-16 | 2006-06-19 | 65 | 0d |  | Data Analysis |  |
| 69 | C.AN.080.6 | Analyze Service (Define/Extend Service Patterns for Business Service Operations) | 1d? | 2006-06-16 | 2006-06-19 | 65 | 0d |  | Service Portfolio - Proposed Services |  |
| 70 | C.AN.085.6 | Define Service (Define/Extend Service Patterns for Business Service Operations) | 1d? | 2006-06-19 | 2006-06-20 | 69 | 0d |  | Service Definition |  |
| 71 | C.AN.080.7 | Analyze Service (Design/Extend Enterprise Business Services) | 1d? | 2006-06-16 | 2006-06-19 | 65 | 0d |  | Service Portfolio - Proposed Services |  |
| 72 | C.AN.085.7 | Define Service (Design/Extend Enterprise Business Services) | 1d? | 2006-06-19 | 2006-06-20 | 71 | 0d |  | Service Definition |  |
| 73 | C.AN.080.8 | Analyze Service (Design/Extend Enterprise Business Flows) | 1d? | 2006-06-16 | 2006-06-19 | 65 | 0d |  | Service Portfolio - Proposed Services |  |
| 74 | C.AN.085.8 | Define Service (Design/Extend Enterprise Business Flows) | 1d? | 2006-06-19 | 2006-06-20 | 73 | 0d |  | Service Definition |  |
| 75 | C.AN.080.9 | Analyze Service (Design/Extend Application Business Connector Services) | 1d? | 2006-06-16 | 2006-06-19 | 65 | 0d |  | Service Portfolio - Proposed Services |  |
| 76 | C.AN.085.9 | Define Service (Design/Extend Application Business Connector Services) | 1d? | 2006-06-19 | 2006-06-20 | 75 | 0d |  | Service Definition |  |
| 77 | C.AN.080.10 | Analyze Service [Design/Revisit Adaptor Services (SOA Entry Points to AIA Artifacts)] | 1d? | 2006-06-16 | 2006-06-19 | 65 | 0d |  | Service Portfolio - Proposed Services |  |
| 78 | C.AN.085.10 | Define Service [Design/Revisit Adaptor Services (SOA Entry Points to AIA Artifacts)] | 1d? | 2006-06-19 | 2006-06-20 | 77 | 0d |  | Service Definition |  |

| ID | WBS | Task | Duration | Start | Finish | Predecessors | Total slack | Work | Text1 | Text2 | Text6 | Text7 | Text8 | Text18 |
| --- | --- | --- | --- | --- | --- | --- | --- | --- | --- | --- | --- | --- | --- | --- |
| 79 | C.ACT.DC | **Design - Construction** | 2d? | 2006-06-19 | 2006-06-21 |  | 0d |  |  |  |  |  |  |  |
| 80 | C.DS.090.2 | Design Data (Define/Extend Enterprise Business Objects and Messages) | 1d? | 2006-06-19 | 2006-06-20 | 68 | 0d |  | Component Data Design |  |  |  |  |  |
| 81 | C.DS.120.6 | Design Services (Define/Extend Service Patterns for Business Service Operations) | 1d? | 2006-06-20 | 2006-06-21 | 70 | 0d |  | Service Design |  |  |  |  |  |
| 82 | C.DS.120.7 | Design Services (Design/Extend Enterprise Business Services) | 1d? | 2006-06-20 | 2006-06-21 | 72 | 0d |  | Service Design |  |  |  |  |  |
| 83 | C.DS.120.8 | Design Services (Design/Extend Enterprise Business Flows) | 1d? | 2006-06-20 | 2006-06-21 | 74 | 0d |  | Service Design |  |  |  |  |  |
| 84 | C.DS.120.9 | Design Services (Design/Extend Application Business Connector Services) | 1d? | 2006-06-20 | 2006-06-21 | 76 | 0d |  | Service Design |  |  |  |  |  |
| 85 | C.DS.120.10 | Design Services [Design/Revisit Adaptor Services (SOA Entry Points to AIA Artifacts)] | 1d? | 2006-06-20 | 2006-06-21 | 78 | 0d |  | Service Design |  |  |  |  |  |
| 86 | C.ACT.PTP | **Perform Test Planning** | 1d? | 2006-06-16 | 2006-06-19 |  | 0d |  |  |  |  |  |  |  |
| 87 | C.TE.015 | Develop Integration Test Plan (Create/Revisit Test Scripts for all Relevant AIA Service Artifacts) | 1d? | 2006-06-16 | 2006-06-19 | 65 | 0d |  | Integration Test Plan |  |  |  |  |  |
| 88 | C.ACT.PEC | **Prepare Environments - Construction** | 1d? | 2006-06-19 | 2006-06-20 |  | 0d |  |  |  |  |  |  |  |
| 89 | C.IM.007 | Prepare Development Environment (Install Software) | 1d? | 2006-06-19 | 2006-06-20 | 87 | 0d |  | Development Environment |  |  |  |  |  |
| 90 | C.ACT.DCCTSC | **Develop Custom Component Test Scripts - Construction** | 1d? | 2006-05-31 | 2006-05-31 |  | 0d |  |  |  |  |  |  |  |
| 91 | C.TE.020 | Develop Unit Test Scripts (Create/Revisit Test Scripts for all Relevant AIA Service Artifacts) | 1d? | 2006-05-31 | 2006-05-31 |  | 0d |  | Integration Test Plan |  |  |  |  |  |
| 92 | C.ACT.ICC | **Implement Custom Components** | 19.51d? | 2006-06-20 | 2006-07-18 |  | 0d | 125.06h |  |  |  |  |  |  |
| 93 | C.IM.050.1 | Implement Components (Develop/Extend Enterprise Business Services) | 1d? | 2006-06-21 | 2006-06-22 | 85 | 0d |  | Implemented Components |  |  |  |  |  |
| 94 | C.IM.080 | Integrate Services (Develop/Extend Enterpise Business Flows) | 100.05h | 2006-06-22 | 2006-07-11 | 93 | 0d | 125.06h | Integrated Services | IM.080 | IM | Implementation | 50 | EXEC |
| 95 | C.IM.050.2 | Implement Components (Develop/Extend Application Business Connector Services) | 1d? | 2006-07-11 | 2006-07-12 | 94 | 0d |  | Implemented Components |  |  |  |  |  |
| 96 | C.IM.050.3 | Implement Components (Enable the Requestor and Provider Applications) | 1d? | 2006-07-12 | 2006-07-13 | 95 | 0d |  | Implemented Components |  |  |  |  |  |
| 97 | C.IM.050.4 | Implement Components (Develop/Revisit SOAP Entry Points to AIA Service Artifacts) | 1d? | 2006-07-13 | 2006-07-14 | 96 | 0d |  | Implemented Components |  |  |  |  |  |
| 98 | C.IM.050.5 | Implement Components (Configure/Revisit AIA Service Artifacts for Error Handling and Logging) | 1d? | 2006-07-14 | 2006-07-17 | 97 | 0d |  | Implemented Components |  |  |  |  |  |
| 99 | C.IM.050.6 | Implement Components (Configure/Revisit Service Properties in Relevant AIA Service Artifacts) | 1d? | 2006-07-17 | 2006-07-18 | 98 | 0d |  | Implemented Components |  |  |  |  |  |
| 100 | C.IM.090 | Create Installation Routines (Install Software) | 1d? | 2006-06-20 | 2006-06-21 | 89 | 0d |  | Installation Routines |  |  |  |  |  |
| 101 | C.TE.065 | Perform Installation Test | 1d? | 2006-06-21 | 2006-06-22 | 100 | 0d |  | Tested Installation Routines |  |  |  |  |  |
| 102 | C.ACT.PCCTC | **Perform Custom Component Testing - Construction** | 2d? | 2006-06-22 | 2006-06-26 |  | 0d |  |  |  |  |  |  |  |
| 103 | C.TE.030 | Perform Unit Test | 1d? | 2006-06-22 | 2006-06-23 | 101 | 0d |  | Unit-Tested Components |  |  |  |  |  |
| 104 | C.TE.040 | Perform Integration Test | 1d? | 2006-06-23 | 2006-06-26 | 103 | 0d |  | Integration-Tested Components |  |  |  |  |  |

| ID | WBS | Task | Duration | Start | Finish | Predecessors | Total slack | Text1 |
| --- | --- | --- | --- | --- | --- | --- | --- | --- |
| 105 | C.ACT.PPT | **Prepare for Performance Testing** | 1d? | 2006-06-13 | 2006-06-14 |  | 0d |  |
| 106 | C.PT.070 | Build Performance Test Scripts and Programs | 1d? | 2006-06-13 | 2006-06-14 | 61 | 0d | Performance Test Scripts and Programs |
| 107 | C.ACT.PCO | **Prepare for Cutover** | 1d? | 2006-06-16 | 2006-06-19 |  | 5d |  |
| 108 | C.TS.020 | Define Cutover Strategy | 1d? | 2006-06-16 | 2006-06-19 | 65 | 5d | Cutover Strategy |
| 109 | C.ACT.PD | **Produce Documentation** | 1d? | 2006-06-16 | 2006-06-19 |  | 0d |  |
| 110 | C.DO.080 | Publish Technical Reference Material | 1d? | 2006-06-16 | 2006-06-19 | 65 | 0d | Technical Reference Material |
| 111 | C.ACT.IOCM | **Initial Operational Capability Milestone** | 1d? | 2006-06-26 | 2006-06-27 |  | 0d |  |
| 112 | C.PMC.IOCM | Initial Operational Capability Milestone | 1d? | 2006-06-26 | 2006-06-27 | 85, 104, 108 | 0d | Initial Operational Capability Milestone |
| 113 | D | **Transition** | 16.53d? | 2006-06-08 | 2006-06-30 |  | 0d |  |
| 114 | D.ACT.SUAT | **Support User Acceptance Test** | 1d? | 2006-06-08 | 2006-06-08 |  | 0d |  |
| 115 | D.TE.120 | Support Acceptance Test | 1d? | 2006-06-08 | 2006-06-08 | 37 | 0d | Acceptance Test Results |
| 116 | D.ACT.CPTST | **Conduct Performance Test** | 1d? | 2006-06-14 | 2006-06-15 |  | 0d |  |
| 117 | D.PT.100 | Execute Performance Test | 1d? | 2006-06-14 | 2006-06-15 | 106 | 0d | Performance Test Results |
| 118 | D.ACT.PPE | **Prepare Production Environment** | 1d? | 2006-06-27 | 2006-06-28 |  | 0d |  |
| 119 | D.TS.050 | Prepare Production Environment (Install Software) | 1d? | 2006-06-27 | 2006-06-28 | 112 | 0d | Production Environment |
| 120 | D.ACT.GP | **Go Production** | 1d? | 2006-06-28 | 2006-06-29 |  | 0d |  |
| 121 | D.TS.060 | Go Production | 1d? | 2006-06-28 | 2006-06-29 | 119 | 0d | System in Production |
| 122 | D.ACT.SIP | **System in Production Milestone** | 1d? | 2006-06-29 | 2006-06-30 |  | 0d |  |
| 123 | D.PMC.SIP | System in Production Milestone | 1d? | 2006-06-29 | 2006-06-30 | 121, 119 | 0d | System in Production Milestone |
| 124 | E | **Production** | 1d? | 2006-06-30 | 2006-07-03 |  | 0d |  |
| 125 | E.ACT.RPP | **Resolve Production Problems** | 1d? | 2006-06-30 | 2006-07-03 |  | 0d |  |
| 126 | E.PS.060 | Monitor and Respond to System Problems | 1d? | 2006-06-30 | 2006-07-03 | 123 | 0d | Problem Log |
