# BPM Project Engineering Project Plan

Schedule from MS Project, 2006-05-31 to 2006-07-17.
Oracle Corp.
Copyright © 2006, 2011, Oracle and/or its affiliates. All rights reserved.

## Calendars

- Standard: Mon-Fri 08:00-12:00, 13:00-17:00; Sat-Sun off.

## Schedule

| ID | WBS | Task | Duration | Start | Finish | Predecessors | Total slack | Work | Text5 | Text8 | Text2 | Text6 | Text7 | Text18 | Text1 |
| --- | --- | --- | --- | --- | --- | --- | --- | --- | --- | --- | --- | --- | --- | --- | --- |
| 1 | E | **OUM** | 33.31d? | 2006-05-31 | 2006-07-17 |  | 0d | 1004.36h | 31/05/2006 | null |  |  |  |  |  |
| 2 | I | **OUM - BPM Project Engineering Project Workplan** | 266.52h? | 2006-05-31 | 2006-07-17 |  | 0d | 1004.36h |  | null |  |  |  |  |  |
| 3 | PS | **Project Start Up** | 5d? | 2006-05-31 | 2006-06-06 |  | 0d |  |  | null | PS |  |  |  |  |
| 4 | PS.ACT.RBC | **Review Bid and Contract** | 1d? | 2006-05-31 | 2006-05-31 |  | 0d |  |  | 190 | PMC.PSSUM1 | PMC | Project Management Control | MGMT |  |
| 5 | PS.BT.010 | Review and Analyze Bid Material | 1d? | 2006-05-31 | 2006-05-31 |  | 0d |  |  |  |  |  |  |  | Reviewed and Analyzed Bid Material |
| 6 | PS.BT.020 | Review and Confirm Business Case | 1d? | 2006-05-31 | 2006-05-31 |  | 0d |  |  |  |  |  |  |  | Confirmed Business Case |
| 7 | PS.BT.030 | Identify Project Stakeholders | 1d? | 2006-05-31 | 2006-05-31 |  | 0d |  |  |  |  |  |  |  | Identified Project Stakeholders |
| 8 | PS.BT.040 | Review and Accept Project Budget | 1d? | 2006-05-31 | 2006-05-31 |  | 0d |  |  |  |  |  |  |  | Accepted Project Budget |
| 9 | PS.RKM .020 | Conduct Baseline Risk Assessment | 1d? | 2006-05-31 | 2006-05-31 |  | 0d |  |  |  |  |  |  |  | Baseline Risk Assessment |
| 10 | PS.ACT.RPAC | **Review Project Assets with Client** | 1d? | 2006-06-01 | 2006-06-01 | 4 | 0d |  |  |  |  |  |  |  |  |
| 11 | PS.BT.050 | Review Contract with Client | 1d? | 2006-06-01 | 2006-06-01 |  | 0d |  |  |  |  |  |  |  | Reviewed Contract |
| 12 | PS.BT.060 | Review Project Approach with Client | 1d? | 2006-06-01 | 2006-06-01 |  | 0d |  |  |  |  |  |  |  | Reviewed Project Approach |
| 13 | PS.BT.070 | Create Project Management Framework | 1d? | 2006-06-01 | 2006-06-01 |  | 0d |  |  |  |  |  |  |  | Project Management Framework |
| 14 | PS.ACT.VSSOS | **Validate Scope, Stakeholders and OCM Strategy** | 1d? | 2006-06-02 | 2006-06-02 | 10 | 0d |  |  |  |  |  |  |  |  |
| 15 | PS.SM.010 | Define and Confirm Scope | 1d? | 2006-06-02 | 2006-06-02 |  | 0d |  |  |  |  |  |  |  | Validated Scope |
| 16 | PS.CMM.010 | Conduct Project Stakeholder Analysis | 1d? | 2006-06-02 | 2006-06-02 |  | 0d |  |  |  |  |  |  |  | Project Stakeholder Analysis |
| 17 | PS.OCHM.010 | Understand Customer's Organizational Change Management Strategy | 1d? | 2006-06-02 | 2006-06-02 |  | 0d |  |  |  |  |  |  |  | Client's Organizational Change Management Strategy |
| 18 | PS.ACT.DW | **Develop Workplan** | 1d? | 2006-06-05 | 2006-06-05 | 14 | 0d |  |  |  |  |  |  |  |  |
| 19 | PS.WM.010 | Develop Baseline Project Workplan | 1d? | 2006-06-05 | 2006-06-05 |  | 0d |  |  |  |  |  |  |  | Baseline Project Workplan |
| 20 | PS.ACT.DSPB | **Develop Staff Plan and Budget** | 1d? | 2006-06-05 | 2006-06-05 | 14 | 0d |  |  |  |  |  |  |  |  |
| 21 | PS.FM.010 | Refine Project Budget | 1d? | 2006-06-05 | 2006-06-05 |  | 0d |  |  |  |  |  |  |  | Approved Project Budget |
| 22 | PS.STM.010 | Plan Resource Requirements | 1d? | 2006-06-05 | 2006-06-05 |  | 0d |  |  |  |  |  |  |  | Resource Plan |
| 23 | PS.STM.030 | Staff Project | 1d? | 2006-06-05 | 2006-06-05 |  | 0d |  |  |  |  |  |  |  | Staffed Project |
| 24 | PS.STM.040 | Prepare Orientation Guide(s) | 1d? | 2006-06-05 | 2006-06-05 |  | 0d |  |  |  |  |  |  |  | Orientation Guide |
| 25 | PS.QM.030 | Conduct Project Team Quality Management Orientation | 1d? | 2006-06-05 | 2006-06-05 |  | 0d |  |  |  |  |  |  |  | Project Team Quality Management Orientation |

| ID | WBS | Task | Duration | Start | Finish | Predecessors | Total slack | Text1 |
| --- | --- | --- | --- | --- | --- | --- | --- | --- |
| 26 | PS.ACT.CPMP | **Complete Project Management Plan** | 1d? | 2006-06-06 | 2006-06-06 | 18, 20 | 0d |  |
| 27 | PS.SM.020 | Develop Scope Change Management Processes | 1d? | 2006-06-06 | 2006-06-06 |  | 0d | Scope Change Management Procedures |
| 28 | PS.FM.020 | Develop Financial Management Plan | 1d? | 2006-06-06 | 2006-06-06 |  | 0d | Financial Management Plan |
| 29 | PS.WM.020 | Develop Work Management Execution and Control Processes and Policies | 1d? | 2006-06-06 | 2006-06-06 |  | 0d | Work Management Plan |
| 30 | PS.RKM.010 | Develop Risk Management Plan | 1d? | 2006-06-06 | 2006-06-06 |  | 0d | Risk Management Plan |
| 31 | PS.IPM.010 | Develop Issue Management Strategy | 1d? | 2006-06-06 | 2006-06-06 |  | 0d | Issue Management Strategy |
| 32 | PS.IPM.020 | Develop Problem Management Strategy | 1d? | 2006-06-06 | 2006-06-06 |  | 0d | Problem Management Strategy |
| 33 | PS.STM.020 | Develop Staff Management Plan | 1d? | 2006-06-06 | 2006-06-06 |  | 0d | Staff Management Plan |
| 34 | PS.CMM.020 | Develop Project Team Communication Plan | 1d? | 2006-06-06 | 2006-06-06 |  | 0d | Project Team Communication Plan |
| 35 | PS.QM.010 | Develop Quality Management Plan | 1d? | 2006-06-06 | 2006-06-06 |  | 0d | Quality Management Plan |
| 36 | PS.QM.020 | Develop and Document Quality Control and Reporting Process | 1d? | 2006-06-06 | 2006-06-06 |  | 0d | Quality Control and Reporting Process |
| 37 | PS.CM.010 | Develop Configuration Management Strategy and Processes | 1d? | 2006-06-06 | 2006-06-06 |  | 0d | Configuration Management Plan and Processes |
| 38 | PS.CM.030 | Create Project Documentation Management Plan | 1d? | 2006-06-06 | 2006-06-06 |  | 0d | Documentation Management Plan |
| 39 | PS.IFM.010 | Develop Infrastructure Management Plan | 1d? | 2006-06-06 | 2006-06-06 |  | 0d | Infrastructure Management Plan |
| 40 | PS.PCM.010 | Develop Procurement Strategy and Process | 1d? | 2006-06-06 | 2006-06-06 |  | 0d | Procurement Strategy and Process |
| 41 | PS.OCHM.020 | Identify Change Management Warning Signs | 1d? | 2006-06-06 | 2006-06-06 |  | 0d | Change Management Warning Signs |
| 42 | PS.ACT.EPI | **Establish Project Infrastructure** | 1d? | 2006-06-06 | 2006-06-06 | 18, 20 | 0d |  |
| 43 | PS.FM.030 | Set Up Time and Expense Tracking | 1d? | 2006-06-06 | 2006-06-06 |  | 0d | Time and Expense Tracking |
| 44 | PS.RKM.030 | Develop Risk Management System | 1d? | 2006-06-06 | 2006-06-06 |  | 0d | Risk Management System |
| 45 | PS.IPM.030 | Develop Issue and Problem Management System | 1d? | 2006-06-06 | 2006-06-06 |  | 0d | Issue and Problem Management System |
| 46 | PS.CM.020 | Obtain Configuration Management Tools | 1d? | 2006-06-06 | 2006-06-06 |  | 0d | Configuration Management Plan |
| 47 | PS.IFM.020 | Establish Team Work Environment | 1d? | 2006-06-06 | 2006-06-06 |  | 0d | Team Work Environment |
| 48 | PS.IFM.030 | Establish Technical Infrastructure | 1d? | 2006-06-06 | 2006-06-06 |  | 0d | Established Technical Infrastructure |
| 49 | PS.PCM.020 | Procure Goods and Contracted Services | 1d? | 2006-06-06 | 2006-06-06 |  | 0d | Service Orders |

| ID | WBS | Task | Duration | Start | Finish | Predecessors | Total slack | Text2 | Text8 | Text1 |
| --- | --- | --- | --- | --- | --- | --- | --- | --- | --- | --- |
| 50 | PEC | **Project Execution and Control** | 1d? | 2006-06-07 | 2006-06-07 |  | 0d | PEC | null |  |
| 51 | PEC.ACT.MSAA | **Manage Scope, Acceptance and Approvals** | 1d? | 2006-06-07 | 2006-06-07 | 42 | 0d |  |  |  |
| 52 | PEC.SM.030 | Manage Scope | 1d? | 2006-06-07 | 2006-06-07 |  | 0d |  |  | Managed Scope |
| 53 | PEC.SM.040 | Manage Acceptance | 1d? | 2006-06-07 | 2006-06-07 |  | 0d |  |  | Managed Acceptance |
| 54 | PEC.WM.050 | Manage Approvals | 1d? | 2006-06-07 | 2006-06-07 |  | 0d |  |  | Managed Approvals |
| 55 | PEC.ACT.MPF | **Manage Project Finances** | 1d? | 2006-06-07 | 2006-06-07 | 42 | 0d |  |  |  |
| 56 | PEC.FM.040 | Manage Project Financials | 1d? | 2006-06-07 | 2006-06-07 |  | 0d |  |  | Managed Project Finances |
| 57 | PEC.ACT.MPW | **Manage Project Workplan** | 1d? | 2006-06-07 | 2006-06-07 | 42 | 0d |  |  |  |
| 58 | PEC.WM.030 | Manage Project Workplan | 1d? | 2006-06-07 | 2006-06-07 |  | 0d |  |  | Project Workplan |
| 59 | PEC.WM.040 | Track Schedule Performance | 1d? | 2006-06-07 | 2006-06-07 |  | 0d |  |  | Scheduled Performance |
| 60 | PEC.ACT.MRIP | **Manage Risks, Issues and Problems** | 1d? | 2006-06-07 | 2006-06-07 | 42 | 0d |  |  |  |
| 61 | PEC.RKM.040 | Manage Risk | 1d? | 2006-06-07 | 2006-06-07 |  | 0d |  |  | Managed Risk |
| 62 | PEC.RKM.050 | Monitor and Control Risk | 1d? | 2006-06-07 | 2006-06-07 |  | 0d |  |  | Assessed Risk |
| 63 | PEC.IPM.040 | Manage Issues and Problems | 1d? | 2006-06-07 | 2006-06-07 |  | 0d |  |  | Managed Issues and Problems |
| 64 | PEC.ACT.OMT | **Orient and Manage Team** | 1d? | 2006-06-07 | 2006-06-07 | 42 | 0d |  |  |  |
| 65 | PEC.STM.050 | Conduct Team Orientation(s) | 1d? | 2006-06-07 | 2006-06-07 |  | 0d |  |  | Oriented Team |
| 66 | PEC.STM.060 | Manage Project Team | 1d? | 2006-06-07 | 2006-06-07 |  | 0d |  |  | Managed Project Team |
| 67 | PEC.ACT.MCOP | **Manage Communications and OCM Plans** | 1d? | 2006-06-07 | 2006-06-07 | 42 | 0d |  |  |  |
| 68 | PEC.CMM.030 | Manage Project Team Communication | 1d? | 2006-06-07 | 2006-06-07 |  | 0d |  |  | Managed Project Team Communication |
| 69 | PEC.OCHM.030 | Execute Change and Communication Plan | 1d? | 2006-06-07 | 2006-06-07 |  | 0d |  |  | Executed Change and Communication Plan |
| 70 | PEC.ACT.MPQ | **Manage Project Quality** | 1d? | 2006-06-07 | 2006-06-07 | 42 | 0d |  |  |  |
| 71 | PEC.QM.040 | Manage Quality Control | 1d? | 2006-06-07 | 2006-06-07 |  | 0d |  |  | Quality Control |
| 72 | PEC.QM.050 | Perform Quality Assurance | 1d? | 2006-06-07 | 2006-06-07 |  | 0d |  |  | Managed Quality Assurance |
| 73 | PEC.ACT.CECRM | **Create and Execute Configuration and Release Management** | 1d? | 2006-06-07 | 2006-06-07 | 42 | 0d |  |  |  |
| 74 | PEC.CM.040 | Create and Execute Software Configuration Management Plan | 1d? | 2006-06-07 | 2006-06-07 |  | 0d |  |  | Software Configuration Management Plan |
| 75 | PEC.CM.050 | Create and Execute Software Release Management Plan | 1d? | 2006-06-07 | 2006-06-07 |  | 0d |  |  | Software Release Management Plan |
| 76 | PEC.CM.060 | Create and Execute Environment and Patch Management Plan | 1d? | 2006-06-07 | 2006-06-07 |  | 0d |  |  | Environment and Patch Management Plan |
| 77 | PEC.CM.070 | Create and Execute Configuration Management Control Plan | 1d? | 2006-06-07 | 2006-06-07 |  | 0d |  |  | Configuration Management Control Plan |

| ID | WBS | Task | Duration | Start | Finish | Predecessors | Total slack | Text1 | Text2 | Text8 |
| --- | --- | --- | --- | --- | --- | --- | --- | --- | --- | --- |
| 78 | PEC.ACT.MMI | **Manage and Maintain Infrastructure** | 1d? | 2006-06-07 | 2006-06-07 | 42 | 0d |  |  |  |
| 79 | PEC.IFM.040 | Manage and Maintain Infrastructure | 1d? | 2006-06-07 | 2006-06-07 |  | 0d | Maintained Infrastructure |  |  |
| 80 | PEC.ACT.APGCS | **Administer Procurement of Goods and Contracted Services** | 1d? | 2006-06-07 | 2006-06-07 | 42 | 0d |  |  |  |
| 81 | PEC.PCM.030 | Administer Procurement of Goods and Contracted Services | 1d? | 2006-06-07 | 2006-06-07 |  | 0d | Managed Procurement of Goods and Services |  |  |
| 82 | A | **Strategic Analysis and Business Process Selection** | 1d? | 2006-05-31 | 2006-05-31 |  | 0d |  | PS | null |
| 83 | A.BA.010 | Identify Business Strategy | 1d? | 2006-05-31 | 2006-05-31 |  | 0d | Business Strategy |  |  |
| 84 | A.BA.012 | Define Business Scope | 1d? | 2006-05-31 | 2006-05-31 |  | 0d | Business Scope |  |  |
| 85 | A.BA.020 | Document Enterprise Organization Structures | 1d? | 2006-05-31 | 2006-05-31 |  | 0d | Enterprise Organization Structures |  |  |
| 86 | A.ER.015 | Conduct Enterprise Maturity Assessment | 1d? | 2006-05-31 | 2006-05-31 |  | 0d | Maturity Analysis and Recommendations Report |  |  |
| 87 | A.ER.110 | Perform Benefit Analysis | 1d? | 2006-05-31 | 2006-05-31 |  | 0d | Benefit Analysis |  |  |
| 88 | A.ER.070 | Define Modeling Strategy for the Enterprise | 1d? | 2006-05-31 | 2006-05-31 |  | 0d | Enterprise Modeling Strategy |  |  |
| 89 | A.GV.100 | Implement Governance | 1d? | 2006-05-31 | 2006-05-31 |  | 0d | Governance Implementation |  |  |
| 90 | A.BA.040.1 | Create Enterprise Function or Process Model | 1d? | 2006-05-31 | 2006-05-31 |  | 0d | Enterprise Function or Process Model |  |  |
| 91 | A.BA.090.1 | Identify Process Improvement Options | 1d? | 2006-05-31 | 2006-05-31 |  | 0d | Process Improvement Options |  |  |
| 92 | A.ER.130 | Produce MoSCoW Improvement List | 1d? | 2006-05-31 | 2006-05-31 |  | 0d | MoSCoW Improvement List |  |  |
| 93 | A.IP.040.1 | Identify Candidate Projects | 1d? | 2006-05-31 | 2006-05-31 |  | 0d | Candidate Projects |  |  |
| 94 | A.IP.040.2 | Identify Candidate Projects | 1d? | 2006-05-31 | 2006-05-31 |  | 0d | Candidate Projects |  |  |
| 95 | A.IP.040.3 | Identify Candidate Projects | 1d? | 2006-05-31 | 2006-05-31 |  | 0d | Candidate Projects |  |  |
| 96 | A.IP.050.1 | Prioritize Projects | 1d? | 2006-05-31 | 2006-05-31 |  | 0d | Prioritized Projects |  |  |
| 97 | A.IP.060 | Develop IT Portfolio Plan | 1d? | 2006-05-31 | 2006-05-31 |  | 0d | IT Portfolio Plan |  |  |
| 98 | A.IP.050.2 | Prioritize Projects | 1d? | 2006-05-31 | 2006-05-31 |  | 0d | Prioritized Projects |  |  |
| 99 | A.BA.040.2 | Create Enterprise Function or Process Model | 1d? | 2006-05-31 | 2006-05-31 |  | 0d | Enterprise Function or Process Model |  |  |
| 100 | A.BA.045.1 | Develop Enterprise Business Context Diagram | 1d? | 2006-05-31 | 2006-05-31 |  | 0d | Enterprise Business Context Diagram |  |  |
| 101 | A.BA.017 | Determine Metrics Collection and Reporting Strategy | 1d? | 2006-05-31 | 2006-05-31 |  | 0d | Metrics Collection and Reporting Strategy |  |  |
| 102 | A.BA.018 | Establish Current Baseline Metrics | 1d? | 2006-05-31 | 2006-05-31 |  | 0d | Current Baseline Metrics |  |  |
| 103 | A.EA.170.1 | Identify Integration Requirements | 1d? | 2006-05-31 | 2006-05-31 |  | 0d | Integration Requirements |  |  |
| 104 | A.EA.120 | Develop Information Architecture | 1d? | 2006-05-31 | 2006-05-31 |  | 0d | Information Architecture |  |  |
| 105 | A.BA.050 | Develop Enterprise Domain Model (Business Entities) | 1d? | 2006-05-31 | 2006-05-31 |  | 0d | Enterprise Domain Model |  |  |
| 106 | A.BA.090.2 | Identify Process Improvement Options | 1d? | 2006-05-31 | 2006-05-31 |  | 0d | Process Improvement Options |  |  |
| 107 | A.EA.170.2 | Identify Integration Requirements | 1d? | 2006-05-31 | 2006-05-31 |  | 0d | Integration Requirements |  |  |

| ID | WBS | Task | Duration | Start | Finish | Total slack | Work | Text8 | Text1 | Text2 | Text6 | Text7 | Text12 | Text18 |
| --- | --- | --- | --- | --- | --- | --- | --- | --- | --- | --- | --- | --- | --- | --- |
| 108 | B | **Process Discovery and Definition** | 36.23h? | 2006-05-31 | 2006-06-06 | 0d | 60.38h | null |  |  |  |  |  |  |
| 109 | B.RD.001 | Detail Business and System Objectives | 14.57h | 2006-05-31 | 2006-06-01 | 0d |  | 10 | Business and System Objectives | RD.001 | RD | Business Requirements Definition | BRSI | EXEC |
| 110 | B.RD.030 | Develop Current Business Process Model | 1d? | 2006-05-31 | 2006-05-31 | 0d |  |  | Current Process Model |  |  |  |  |  |
| 111 | B.RA.027.1 | Identify Candidate Business Rules | 1d? | 2006-05-31 | 2006-05-31 | 0d |  |  | Candidate Business Rules |  |  |  |  |  |
| 112 | B.RD.005 | Create System Context Diagram | 3.64h | 2006-05-31 | 2006-05-31 | 0d |  | 10 | System Context Diagram | RD.005 | RD | Business Requirements Definition | BRSI | EXEC |
| 113 | B.RD.015 | Determine KPI Collection and Reporting Strategy | 1d? | 2006-05-31 | 2006-05-31 | 0d |  |  | Key Business Strategies and Objectives |  |  |  |  |  |
| 114 | B.RD.034 | Document Current Business Baseline Metrics | 1d? | 2006-05-31 | 2006-05-31 | 0d |  |  | Current Business Baseline Metrics |  |  |  |  |  |
| 115 | B.TA.030 | Define Integration Requirements and Strategy | 36.23h | 2006-05-31 | 2006-06-06 | 0d |  | 80 | Integration Architecture Strategy | TA.030 | TA | Application and Technical Architecture |  | EXEC |
| 116 | B.RA.025.1 | Identify Candidate Services | 1d? | 2006-05-31 | 2006-05-31 | 0d |  |  | Service Portfolio - Candidate Services |  |  |  |  |  |
| 117 | B.RD.065 | Develop Domain Model (Business Entities) | 3.64h | 2006-05-31 | 2006-05-31 | 0d |  | 10 | Domain Model | RD.065 | RD | Business Requirements Definition | BRSI | EXEC |
| 118 | B.RD.011.1 | Develop Future Process Model | 3.64h | 2006-05-31 | 2006-05-31 | 0d |  | 10 | Future Process Model | RD.011 | RD | Business Requirements Definition | BRSI | EXEC |
| 119 | B.RA.023 | Develop Use Case Model | 17.7h | 2006-05-31 | 2006-06-02 | 0d |  | 20 | Use Case Model | RA.023.1 | RA | Requirements Analysis | REI | EXEC |
| 120 | B.RA.024.1 | Develop Use Case Details | 36.23h | 2006-05-31 | 2006-06-06 | 0d | 60.38h | 20 | Use Case Specification | RA.024.1 | RA | Requirements Analysis | REI | EXEC |
| 121 | B.RD.011.2 | Develop Future Process Model | 3.64h | 2006-05-31 | 2006-05-31 | 0d |  | 10 | Future Process Model | RD.011 | RD | Business Requirements Definition | BRSI | EXEC |
| 122 | C | **Business Proess Refinement** | 36.23h? | 2006-05-31 | 2006-06-06 | 0d | 66.28h | null |  |  |  |  |  |  |
| 123 | C.RD.011.3 | Develop Future Process Model | 1d? | 2006-05-31 | 2006-05-31 | 0d |  |  | Future Process Model |  |  |  |  |  |
| 124 | C.RA.010 | Simulate Business Process | 1d? | 2006-05-31 | 2006-05-31 | 0d |  |  | Business Process Simulation |  |  |  |  |  |
| 125 | C.RD.011.4 | Develop Future Process Model | 1d? | 2006-05-31 | 2006-05-31 | 0d |  |  | Future Process Model |  |  |  |  |  |
| 126 | C.RA.024.2 | Develop Use Case Details | 1d? | 2006-05-31 | 2006-05-31 | 0d |  |  | Use Case Specification |  |  |  |  |  |
| 127 | C.RA.030 | Validate Conceptual Prototype | 2.36h | 2006-05-31 | 2006-05-31 | 0d | 5.9h | 20 | Validated Conceptual Prototype | RA.030 | RA | Requirements Analysis |  | EXEC |
| 128 | C.RA.085 | Validate Functional Prototype | 16.11h | 2006-05-31 | 2006-06-02 | 0d |  | 20 | Validated Functional Prototype | RA.085 | RA | Requirements Analysis | REI | EXEC |
| 129 | C.RD.011.5 | Develop Future Process Model | 1d? | 2006-05-31 | 2006-05-31 | 0d |  |  | Future Process Model |  |  |  |  |  |
| 130 | C.IM.005 | Develop Conceptual Prototype | 12.49h | 2006-05-31 | 2006-06-01 | 0d |  | 50 | Conceptual Prototype | IM.005 | IM | Implementation | BSI | EXEC |
| 131 | C.IM.010 | Develop Functional Prototype | 35.59h | 2006-05-31 | 2006-06-06 | 0d |  | 50 | Functional Prototype | IM.010 | IM | Implementation | REI | EXEC |
| 132 | B.RA.024.3 | Develop Use Case Details | 36.23h | 2006-05-31 | 2006-06-06 | 0d | 60.38h | 20 | Use Case Specification | RA.024.1 | RA | Requirements Analysis | REI | EXEC |

| ID | WBS | Task | Duration | Start | Finish | Total slack | Work | Text1 | Text2 | Text6 | Text7 | Text8 | Text12 | Text18 |
| --- | --- | --- | --- | --- | --- | --- | --- | --- | --- | --- | --- | --- | --- | --- |
| 133 | D | **Technical Analysis and Business Process Design** | 9.15d? | 2006-05-31 | 2006-06-13 | 0d | 236.75h |  |  |  |  |  |  |  |
| 134 | D.AN.050.1 | Analyze Data | 29.23h | 2006-05-31 | 2006-06-05 | 0d | 48.72h | Data Analysis | AN.020.1 | AN | Analysis | 30 | REI | EXEC |
| 135 | D.AN.060.1 | Analyze Behavior | 1d? | 2006-05-31 | 2006-05-31 | 0d |  | Behavior Analysis |  |  |  |  |  |  |
| 136 | D.AN.070.1 | Analyze Business Rules | 1d? | 2006-05-31 | 2006-05-31 | 0d |  | Business Rules Analysis |  |  |  |  |  |  |
| 137 | D.AN.080.1 | Analyze Services | 1d? | 2006-05-31 | 2006-05-31 | 0d |  | Service Portfolio - Proposed Services |  |  |  |  |  |  |
| 138 | D.AN.090.1 | Analyze User Interface | 1d? | 2006-05-31 | 2006-05-31 | 0d |  | User Interface Analysis |  |  |  |  |  |  |
| 139 | D.TA.090.1 | Develop Security and Control Strategy | 36.23h | 2006-05-31 | 2006-06-06 | 0d | 45.3h | Security and Control Strategy | TA.090 | TA | Application and Technical Architecture | 80 |  | EXEC |
| 140 | D.RA.025.2 | Identify Candidate Services | 1d? | 2006-05-31 | 2006-05-31 | 0d |  | Service Portfolio - Candidate Services |  |  |  |  |  |  |
| 141 | D.AN.050.2 | Analyze Data | 29.23h | 2006-05-31 | 2006-06-05 | 0d | 48.72h | Data Analysis | AN.020.1 | AN | Analysis | 30 | REI | EXEC |
| 142 | D.TA.090.2 | Develop Security and Control Strategy | 36.23h | 2006-05-31 | 2006-06-06 | 0d | 45.3h | Security and Control Strategy | TA.090 | TA | Application and Technical Architecture | 80 |  | EXEC |
| 143 | D.MC.030 | Map Business Requirements | 1d? | 2006-05-31 | 2006-05-31 | 0d |  | Mapped Business Requirements |  |  |  |  |  |  |
| 144 | D.AN.080.2 | Analyze Services | 1d? | 2006-05-31 | 2006-05-31 | 0d |  | Service Portfolio - Proposed Services |  |  |  |  |  |  |
| 145 | D.AN.050.3 | Analyze Data | 29.23h | 2006-05-31 | 2006-06-05 | 0d | 48.72h | Data Analysis | AN.020.1 | AN | Analysis | 30 | REI | EXEC |
| 146 | D.AN.060.2 | Analyze Behavior | 1d? | 2006-05-31 | 2006-05-31 | 0d |  | Behavior Analysis |  |  |  |  |  |  |
| 147 | D.AN.070.2 | Analyze Business Rules | 1d? | 2006-05-31 | 2006-05-31 | 0d |  | Business Rules Analysis |  |  |  |  |  |  |
| 148 | D.AN.085.1 | Define Service | 9.15d? | 2006-05-31 | 2006-06-13 | 0d |  | Service Definition |  |  |  |  |  |  |
| 149 | D.AN.100.1 | Prepare Analysis Specification | 1d? | 2006-05-31 | 2006-05-31 | 0d |  | Analysis Specification |  |  |  |  |  |  |
| 150 | D.MC.100 | Define and Estimate Application Extensions | 1d? | 2006-05-31 | 2006-05-31 | 0d |  | Application Extension Definition and Estimates |  |  |  |  |  |  |
| 151 | D.MC.110 | Define Gap Resolutions | 1d? | 2006-05-31 | 2006-05-31 | 0d |  | Gap Resolutions |  |  |  |  |  |  |
| 152 | E | **Business Process Application Composition** | 10.27d? | 2006-05-31 | 2006-06-14 | 0d | 192.68h |  |  |  |  |  |  |  |
| 153 | E.DS.090 | Design Data | 1d? | 2006-05-31 | 2006-05-31 | 0d |  | Component Data Design |  |  |  |  |  |  |
| 154 | E.DS.100 | Design Behavior | 43.72h | 2006-05-31 | 2006-06-07 | 0d | 87.45h | Component Behavior Design | DS.020.2 | DS | Design | 40 |  | EXEC |
| 155 | E.DS.110 | Design Business Rules | 10.27d? | 2006-05-31 | 2006-06-14 | 0d |  | Business Rules Design |  |  |  |  |  |  |
| 156 | E.IM.055 | Perform Business Rules Implementation (Rules Engine) | 1d? | 2006-05-31 | 2006-05-31 | 0d |  | Implemented Business Rules (Rules Engine) |  |  |  |  |  |  |
| 157 | E.TE.020.1 | Develop Unit Test Scripts | 13.3h | 2006-05-31 | 2006-06-01 | 0d | 16.62h | Unit Test Scripts | TE.020 | TE | Business System Testing | 60 |  | EXEC |
| 158 | E.TE.018.1 | Prepare Static Test Data | 4.98d? | 2006-05-31 | 2006-06-06 | 0d |  | Static Test Data |  |  |  |  |  |  |
| 159 | E.TE.030.1 | Perform Unit Test | 70.9h | 2006-05-31 | 2006-06-12 | 0d | 88.62h | Unit-Tested Components | TE.030 | TE | Business System Testing | 60 |  | EXEC |

| ID | WBS | Task | Duration | Start | Finish | Total slack | Work | Text8 | Text1 | Text2 | Text6 | Text7 | Text18 |
| --- | --- | --- | --- | --- | --- | --- | --- | --- | --- | --- | --- | --- | --- |
| 160 | F | **Integration Testing** | 70.9h? | 2006-05-31 | 2006-06-12 | 0d | 105.23h | null |  |  |  |  |  |
| 161 | F.TE.015 | Develop Integration Test Plan | 1d? | 2006-05-31 | 2006-05-31 | 0d |  |  | Integration Test Plan |  |  |  |  |
| 162 | E.TE.020.2 | Develop Unit Test Scripts | 13.3h | 2006-05-31 | 2006-06-01 | 0d | 16.62h | 60 | Unit Test Scripts | TE.020 | TE | Business System Testing | EXEC |
| 163 | E.TE.018.2 | Prepare Static Test Data | 4.98d? | 2006-05-31 | 2006-06-06 | 0d |  |  | Static Test Data |  |  |  |  |
| 164 | E.TE.030.2 | Perform Unit Test | 70.9h | 2006-05-31 | 2006-06-12 | 0d | 88.62h | 60 | Unit-Tested Components | TE.030 | TE | Business System Testing | EXEC |
| 165 | F.TE.035 | Create Integration Test Scenarios | 1d? | 2006-05-31 | 2006-05-31 | 0d |  |  | Integration Test Scenarios |  |  |  |  |
| 166 | F.TE.018.3 | Prepare Static Test Data | 4.98d? | 2006-05-31 | 2006-06-06 | 0d |  |  | Static Test Data |  |  |  |  |
| 167 | F.TE.040 | Perform Integration Test | 53.17h | 2006-05-31 | 2006-06-08 | 0d |  | 60 | Integration-Tested Components | TE.040 | TE | Business System Testing | EXEC |
| 168 | F.TE.050 | Develop System Test Plan | 1d? | 2006-05-31 | 2006-05-31 | 0d |  |  | System Test Plan |  |  |  |  |
| 169 | F.TE.025.1 | Create System Test Scenarios | 1d? | 2006-05-31 | 2006-05-31 | 0d |  |  | System Test Scenarios |  |  |  |  |
| 170 | F.TE.018.4 | Prepare Static Test Data | 4.98d? | 2006-05-31 | 2006-06-06 | 0d |  |  | Static Test Data |  |  |  |  |
| 171 | F.TE.070 | Perform System Test | 1d? | 2006-05-31 | 2006-05-31 | 0d |  | 60 | System-Tested Applications | TE.070 | TE | Business System Testing | EXEC |
| 172 | F.TE.080 | Develop Systems Integration Test Plan | 1d? | 2006-05-31 | 2006-05-31 | 0d |  |  | Systems Integration Test Plan |  |  |  |  |
| 173 | F.TE.090 | Develop Systems Integration Test Scenarios | 1d? | 2006-05-31 | 2006-05-31 | 0d |  |  | Systems Integration Test Scenarios |  |  |  |  |
| 174 | F.TE.018.5 | Prepare Static Test Data | 4.98d? | 2006-05-31 | 2006-06-06 | 0d |  |  | Static Test Data |  |  |  |  |
| 175 | F.TE.100 | Perform Systems Integration Test | 1d? | 2006-05-31 | 2006-05-31 | 0d |  |  | Integration-Tested System |  |  |  |  |
| 176 | F.TE.105.1 | Prepare Users for Testing | 1d? | 2006-05-31 | 2006-05-31 | 0d |  |  | Prepared Users for Testing |  |  |  |  |
| 177 | F.TE.110.1 | Prepare Acceptance Test Environment | 17.49h | 2006-05-31 | 2006-06-02 | 0d |  | 60 | Acceptance Test Environment | TE.110 | TE | Business System Testing | EXEC |
| 178 | F.TE.120.1 | Support Acceptance Test | 5h | 2006-05-31 | 2006-05-31 | 0d |  | 60 | Acceptance Test Results | TE.120 | TE | Business System Testing | EXEC |
| 179 | G | **Deployment Planning** | 11.66d? | 2006-05-31 | 2006-06-15 | 0d | 196.15h |  |  |  |  |  |  |
| 180 | G.DDS.070 | Define SOA Implementation Strategy | 1d? | 2006-05-31 | 2006-05-31 | 0d |  |  | SOA Implementation Strategy |  |  |  |  |
| 181 | G.IM.090 | Create Installation Routines | 1d? | 2006-05-31 | 2006-05-31 | 0d |  |  | Installation Routines |  |  |  |  |
| 182 | G.PT.030 | Define Performance Testing Strategy | 14.49h | 2006-05-31 | 2006-06-01 | 0d |  | 70 | Performance Testing Strategy | PT.030 | PT | Performance Testing | EXEC |
| 183 | G.PT.040 | Identify Performance Testing Models and Scenarios | 25.76h | 2006-05-31 | 2006-06-05 | 0d |  | 70 | Performance Testing Models and Scenarios | PT.040 | PT | Performance Testing | EXEC |
| 184 | G.PT.050 | Design Performance Test Scripts and Programs | 38.65h | 2006-05-31 | 2006-06-06 | 0d |  | 70 | Performance Test Scripts and Programs Design | PT.050 | PT | Performance Testing | EXEC |
| 185 | G.PT.060 | Design Performance Test Data and Load Programs | 28.99h | 2006-05-31 | 2006-06-05 | 0d | 48.3h | 70 | Performance Test Data and Load Programs Design | PT.060 | PT | Performance Testing | EXEC |
| 186 | G.PT.070 | Build Performance Test Scripts and Programs | 75.79h | 2006-05-31 | 2006-06-13 | 0d |  | 70 | Performance Test Scripts and Programs | PT.070 | PT | Performance Testing | EXEC |
| 187 | G.PT.080 | Construct Performance Test Environment and Database | 14.58h | 2006-05-31 | 2006-06-01 | 0d |  | 70 | Performance Test Environment and Database | PT.080 | PT | Performance Testing | EXEC |
| 188 | G.PT.090 | Conduct Performance Test Dress Rehearsal | 8.75h | 2006-05-31 | 2006-06-01 | 0d | 14.58h | 70 | Validated Performance Test and Environment | PT.090 | PT | Performance Testing | EXEC |
| 189 | G.PT.100 | Execute Performance Test | 62.19h | 2006-05-31 | 2006-06-09 | 0d |  | 70 | Performance Test Results | PT.100 | PT | Performance Testing | EXEC |
| 190 | G.PT.110 | Create Performance Test Report | 93.28h | 2006-05-31 | 2006-06-15 | 0d | 133.27h | 70 | Performance Test Report | PT.110 | PT | Performance Testing | EXEC |
| 191 | G.TS.030 | Develop Installation Plan | 1d? | 2006-05-31 | 2006-05-31 | 0d |  |  | Installation Plan |  |  |  |  |
| 192 | G.TS.054.1 | Perform Pre-Upgrade Steps | 1d? | 2006-05-31 | 2006-05-31 | 0d |  |  | Pre-Upgrade Checklist |  |  |  |  |
| 193 | G.DO.040 | Prepare Documentation Environment | 1d? | 2006-05-31 | 2006-05-31 | 0d |  |  | Documentation Environment |  |  |  |  |
| 194 | G.DO.060 | Publish User Reference Manual | 1d? | 2006-05-31 | 2006-05-31 | 0d |  |  | User Reference Manual |  |  |  |  |
| 195 | G.DO.070 | Publish User Guide | 1d? | 2006-05-31 | 2006-05-31 | 0d |  |  | User Guide |  |  |  |  |
| 196 | G.DO.080 | Publish Technical Reference Material | 1d? | 2006-05-31 | 2006-05-31 | 0d |  |  | Technical Reference Material |  |  |  |  |

| ID | WBS | Task | Duration | Start | Finish | Predecessors | Total slack | Work | Text8 | Text1 | Text2 | Text6 | Text7 | Text18 | Text3 |
| --- | --- | --- | --- | --- | --- | --- | --- | --- | --- | --- | --- | --- | --- | --- | --- |
| 197 | H | **Approval** | 17.49h? | 2006-05-31 | 2006-06-02 |  | 0d | 55.53h | null |  |  |  |  |  |  |
| 198 | H.TE.105.2 | Prepare Users for Testing | 1d? | 2006-05-31 | 2006-05-31 |  | 0d |  |  | Prepared Users for Testing |  |  |  |  |  |
| 199 | H.TE.110.2 | Prepare Acceptance Test Environment | 17.49h | 2006-05-31 | 2006-06-02 |  | 0d | 38.87h | 60 | Acceptance Test Environment | TE.110 | TE | Business System Testing | EXEC |  |
| 200 | H.TE.120.2 | Support Acceptance Test | 5h | 2006-05-31 | 2006-05-31 |  | 0d | 16.66h | 60 | Acceptance Test Results | TE.120 | TE | Business System Testing | EXEC |  |
| 201 | I | **Commissioning** | 33.31d? | 2006-05-31 | 2006-07-17 |  | 0d | 66.63h |  |  |  |  |  |  |  |
| 202 | I.TS.054.2 | Perform Pre-Upgrade Steps | 1d? | 2006-05-31 | 2006-05-31 |  | 0d |  |  | Pre-Upgrade Checklist |  |  |  |  |  |
| 203 | I.TS.055 | Upgrade Production Environment | 1d? | 2006-05-31 | 2006-05-31 |  | 0d |  |  | Upgraded Production Environment |  |  |  |  |  |
| 204 | I.TS.056 | Perform Post-Upgrade Steps | 1d? | 2006-05-31 | 2006-05-31 |  | 0d |  |  | Post-Upgrade Checklist |  |  |  |  |  |
| 205 | I.TS.058 | Verify Production Readiness | 1d? | 2006-05-31 | 2006-05-31 |  | 0d |  |  | Production-Ready System |  |  |  |  |  |
| 206 | I.TS.060 | Go Production | 266.52h | 2006-05-31 | 2006-07-17 |  | 0d |  | 100 | System in Production | TS.060 | TS | Transition | EXEC |  |
| 207 | I.TS.070 | Shut Down Legacy System | 66.63h | 2006-05-31 | 2006-06-12 |  | 0d | 66.63h | 100 | Legacy System Shut Down | TS.070 | TS | Transition | EXEC |  |
| 208 | J | **Monitoring and Analysis** | 44.48h? | 2006-05-31 | 2006-06-07 |  | 0d | 24.71h | null |  |  |  |  |  |  |
| 209 | J.PS.010 | Audit System | 44.48h | 2006-05-31 | 2006-06-07 |  | 0d |  | 110 | System Evaluation | PS.010 | PS | Post System Support | EXEC |  |
| 210 | J.PS.060 | Monitor and Respond to System Problems | 19.77h | 2006-05-31 | 2006-06-02 |  | 0d | 24.71h | 110 | Problem Log | PS.060 | PS | Post System Support | EXEC |  |
| 211 | J.PS.135 | Determine Future Functional Enhancements | 24.71h | 2006-05-31 | 2006-06-05 |  | 0d |  | 110 | Future Functional Enhancements | PS.135 | PS | Post System Support | EXEC |  |
| 212 | PC | **Project Closure** | 16h? | 2006-05-31 | 2006-06-01 |  | 0d |  | null |  | PC |  |  |  |  |
| 213 | PC.ACT.GA | **Gain Acceptance** | 1d? | 2006-05-31 | 2006-05-31 |  | 0d |  | 190 |  | PMC.PCSUM1 | PMC | Project Management Control | MGMT | OG |
| 214 | PC.SM.050 | Gain Acceptance | 1d? | 2006-05-31 | 2006-05-31 |  | 0d |  |  | Final Acceptance Certificate |  |  |  |  |  |
| 215 | PC.ACT.CPC | **Close Processes and Contract** | 1d? | 2006-06-01 | 2006-06-01 | 213 | 0d |  |  | Closed Processes and Contract |  |  |  |  |  |
| 216 | PC.SM.060 | Close Scope Management | 1d? | 2006-06-01 | 2006-06-01 |  | 0d |  |  | Closed Scope Management |  |  |  |  |  |
| 217 | PC.SM.070 | Identify Future System Enhancements | 1d? | 2006-06-01 | 2006-06-01 |  | 0d |  |  | Future System Enhancements |  |  |  |  |  |
| 218 | PC.FM.050 | Close Project Financials | 1d? | 2006-06-01 | 2006-06-01 |  | 0d |  |  | Closed Project Financials |  |  |  |  |  |
| 219 | PC.WM.060 | Close Work Management | 1d? | 2006-06-01 | 2006-06-01 |  | 0d |  |  | Closed Work Management |  |  |  |  |  |
| 220 | PC.RKM.060 | Conduct Post-Production Risk Assessment | 1d? | 2006-06-01 | 2006-06-01 |  | 0d |  |  | Post-Production Risk Assessment |  |  |  |  |  |
| 221 | PC.IPM.050 | Produce Final Issue and Problem Report and Close Log(s) | 1d? | 2006-06-01 | 2006-06-01 |  | 0d |  |  | Closed Issue and Problem Log |  |  |  |  |  |
| 222 | PC.STM.070 | Release Staff | 1d? | 2006-06-01 | 2006-06-01 |  | 0d |  |  | Released Staff |  |  |  |  |  |
| 223 | PC.QM.060 | Conduct Post Production Quality Review | 1d? | 2006-06-01 | 2006-06-01 |  | 0d |  |  | Post-Production Quality Review |  |  |  |  |  |
| 224 | PC.CM.080 | Close Configuration Management | 1d? | 2006-06-01 | 2006-06-01 |  | 0d |  |  | Closed Configuration Management |  |  |  |  |  |
| 225 | PC.IFM.050 | Close Infrastructure | 1d? | 2006-06-01 | 2006-06-01 |  | 0d |  |  | Closed Infrastructure |  |  |  |  |  |
| 226 | PC.PCM.040 | Close Contract | 1d? | 2006-06-01 | 2006-06-01 |  | 0d |  |  | Closed Contract |  |  |  |  |  |
| 227 | PC.OCHM.040 | Establish Follow-Up Process | 1d? | 2006-06-01 | 2006-06-01 |  | 0d |  |  | Follow-Up Process |  |  |  |  |  |

| ID | WBS | Task | Duration | Start | Finish | Predecessors | Total slack | Text1 | Text2 | Text8 | Text3 | Text6 | Text7 | Text18 |
| --- | --- | --- | --- | --- | --- | --- | --- | --- | --- | --- | --- | --- | --- | --- |
| 228 | PC.ACT.DLLAP | **Document Lessons Learned and Archive Project** | 1d? | 2006-06-01 | 2006-06-01 | 213 | 0d |  |  |  |  |  |  |  |
| 229 | PC.CMM.040 | Document Lessons Learned | 1d? | 2006-06-01 | 2006-06-01 |  | 0d | Lessons Learned |  |  |  |  |  |  |
| 230 | PC.CMM.050 | Turn Over Project Documentation (Project Archives) | 1d? | 2006-06-01 | 2006-06-01 |  | 0d | Project Archives |  |  |  |  |  |  |
| 231 | PC.CMM.060 | Submit Final Reports | 1d? | 2006-06-01 | 2006-06-01 |  | 0d | Final Reports |  |  |  |  |  |  |
| 232 | PGM | **Program Management** | 8h? | 2006-05-31 | 2006-05-31 |  | 0d |  | PGM | null |  |  |  |  |
| 233 | PGM.ACT.PGM | **Perform PGM Program Management** | 1d? | 2006-05-31 | 2006-05-31 |  | 0d |  | PMC.PGMSUM | 190 | OG | PMC | Project Management Control | MGMT |
| 234 | PGM.PMC.PGMSUM1 | Perform Program Management Activities | 1d? | 2006-05-31 | 2006-05-31 |  | 0d | Program Management Activities |  |  |  |  |  |  |
