# Cloud Application Services OUM Workplan

Schedule from MS Project, 2006-05-31 to 2006-10-24.
Oracle Corp.
Copyright © 2016, Oracle and/or its affiliates. All rights reserved.

## Calendars

- Standard: Mon-Fri 08:00-12:00, 13:00-17:00; Sat-Sun off.

## Schedule

| ID | WBS | Task | Duration | Start | Finish | Predecessors | Total slack | Work | Text5 | Text8 | Text2 | Text12 | Text18 | Text6 | Text7 | Text3 |
| --- | --- | --- | --- | --- | --- | --- | --- | --- | --- | --- | --- | --- | --- | --- | --- | --- |
| 1 | OUM | **OUM** | 104.3d? | 2006-05-31 | 2006-10-24 |  | 0d | 940.26h | 31/05/2006 | null |  |  |  |  |  |  |
| 2 | CAS OUM | **CAS OUM (Cloud Application Services OUM) Project Workplan** | 834.4h? | 2006-05-31 | 2006-10-24 |  | 0d | 940.26h |  | null |  |  |  |  |  |  |
| 3 | A | **Project Design** | 50.21h? | 2006-05-31 | 2006-06-08 |  | 0d | 42.49h |  | null |  |  |  |  |  |  |
| 4 | A.PS.ACT | **Project Start Up** | 1d? | 2006-05-31 | 2006-05-31 |  | 0d |  |  |  |  |  |  |  |  |  |
| 5 | A.PSU.RCSWB | Review Contract, Scope, Workplan and Budget (Core) | 1d? | 2006-05-31 | 2006-05-31 |  | 0d |  |  |  |  |  |  |  |  |  |
| 6 | A.PSU.RPAC | Review Project Approach with Customer and Confirm Customer Readiness (Core) | 1d? | 2006-05-31 | 2006-05-31 |  | 0d |  |  |  |  |  |  |  |  |  |
| 7 | A.PSU.EGSI | Establish Governance and Supporting Infrastructure (Core) | 1d? | 2006-05-31 | 2006-05-31 |  | 0d |  |  |  |  |  |  |  |  |  |
| 8 | A.TG.TR | **Prepare Project Team** | 2.28d? | 2006-06-01 | 2006-06-05 |  | 0d | 30.36h |  | null | PMC.BBRSI | BRSI | MGMT |  |  |  |
| 9 | A.STM.050 | Conduct Customer Kickoff Meeting (Core) | 14.57h | 2006-06-01 | 2006-06-02 | 7 | 0d | 24.29h |  | 10 | RD.001 | BRSI | EXEC | RD | Business Requirements Definition |  |
| 10 | A.TR.050 | Train Project Team (Optional) | 1d? | 2006-06-01 | 2006-06-01 | 7 | 0d |  |  |  |  |  |  |  |  |  |
| 11 | A.WM.070 | Schedule Workshops (Core) | 3.64h | 2006-06-02 | 2006-06-05 | 9 | 0d | 6.07h |  | 10 | RD.011 | BRSI | EXEC | RD | Business Requirements Definition |  |
| 12 | A.TG.FT | **Conduct Functional and Technical Design Workshops** | 2d? | 2006-06-05 | 2006-06-07 |  | 0d | 6.07h |  |  |  |  |  |  |  |  |
| 13 | A.MC.040 | Conduct Functional Design Workshops (Core) | 3.64h | 2006-06-05 | 2006-06-05 | 11 | 0d | 6.07h |  | 10 | RD.065 | BRSI | EXEC | RD | Business Requirements Definition |  |
| 14 | A.DS.145 | Conduct Technical Design Workshops (Optional) | 1d? | 2006-06-05 | 2006-06-06 | 11 | 0d |  |  |  |  |  |  |  |  |  |
| 15 | A.DS.160 | Conduct Design Reviews (Core) | 1d? | 2006-06-06 | 2006-06-07 | 13, 14 | 0d |  |  |  |  |  |  |  |  |  |
| 16 | A.TG.SP | **Security Planning** | 1d? | 2006-06-05 | 2006-06-06 |  | 0.55d |  |  |  |  |  |  |  |  |  |
| 17 | A.MC.060 | Develop Security Strategy and Plan (Core) | 1d? | 2006-06-05 | 2006-06-06 | 13 | 0.55d |  |  |  |  |  |  |  |  |  |
| 18 | A.TG.VP | **Validation Planning** | 1d? | 2006-06-06 | 2006-06-07 |  | 0d |  |  |  |  |  |  |  |  |  |
| 19 | A.TE.010 | Define Validation Strategy and Plan (Core) | 1d? | 2006-06-06 | 2006-06-07 | 13, 14 | 0d |  |  |  |  |  |  |  |  |  |
| 20 | A.TG.DO | **Documentation** | 0.76d | 2006-06-05 | 2006-06-06 |  | 0d | 6.07h |  |  |  |  |  |  |  |  |
| 21 | A.DO.010 | Define Documentation Requirements and Strategy (Optional) | 6.07h | 2006-06-05 | 2006-06-06 | 13 | 0d | 6.07h |  | 10 | RD.042.1 | BRSI | EXEC | RD | Business Requirements Definition | OG |
| 22 | A.TG.TA | **Technical Readiness Assessment Kickoff** | 1d? | 2006-06-01 | 2006-06-01 |  | 0d |  |  |  |  |  |  |  |  |  |
| 23 | A.TA.010 | Conduct Technical Readiness Assessment Kickoff Meeting (Optional) | 1d? | 2006-06-01 | 2006-06-01 | 6 | 0d |  |  |  |  |  |  |  |  |  |
| 24 | A.TG.IC | **Implementation Checkpoint** | 1d? | 2006-06-07 | 2006-06-08 |  | 0d |  |  |  |  |  |  |  |  |  |
| 25 | A.WM.055.1 | Conduct Implementation Checkpoint (Core) | 1d? | 2006-06-07 | 2006-06-08 | 13, 14, 17, 19 | 0d |  |  |  |  |  |  |  |  |  |

Notes:
- 5: Text1: Reviewed Contract, Scope, Workplan and Budget
- 6: Text1: Confirmed Customer Readiness
- 7: Text1: Project Management Plan and Established Project Infrastructure
- 9: Text1: Kickoff Meeting
- 10: Text1: Trained Project Team
- 11: Text1: Workshop Schedule
- 13: Text1: Functional Design
- 14: Text1: Technical Designs
- 15: Text1: Approved Designs
- 17: Text1: Security Strategy and Plan
- 19: Text1: Validation Strategy and Plan
- 21: Text1: Documentation Requirements and Strategy
- 23: Text1: Technical Readiness Assessment Project Plan
- 25: Text1: Implementation Checkpoint Meeting / Approval to Proceed

| ID | WBS | Task | Duration | Start | Finish | Predecessors | Total slack | Free slack | Work | Text1 | Text8 | Text2 | Text6 | Text7 | Text12 | Text18 |
| --- | --- | --- | --- | --- | --- | --- | --- | --- | --- | --- | --- | --- | --- | --- | --- | --- |
| 26 | A.TG.PM | **Project Management** | 1d? | 2006-06-01 | 2006-06-01 |  | 0d |  |  |  |  |  |  |  |  |  |
| 27 | A.PEC.MPE.1 | Manage Project Execution (Core) | 1d? | 2006-06-01 | 2006-06-01 | 7 | 0d |  |  | Managed Project Assets |  |  |  |  |  |  |
| 28 | B | **Configure** | 124.74h? | 2006-06-02 | 2006-06-23 |  | 0d |  | 143.11h |  | null |  |  |  |  |  |
| 29 | B.TG.IF | **Initial Configuration** | 5.82d? | 2006-06-08 | 2006-06-16 |  | 0d |  | 22.53h |  |  |  |  |  |  |  |
| 30 | B.MC.070.1 | Setup Applications (Core) | 1d? | 2006-06-08 | 2006-06-09 | 25 | 0d |  |  | Configured Applications |  |  |  |  |  |  |
| 31 | B.TE.025 | Prepare Validation Scripts (Core) | 1d? | 2006-06-09 | 2006-06-12 | 30 | 0d |  |  | Validation Scripts |  |  |  |  |  |  |
| 32 | B.MC.080 | Conduct Configuration Validation Workshops (Core) | 22.54h | 2006-06-12 | 2006-06-15 | 31 | 0d |  | 22.53h | Validated Configuration | 60 | TE.010 | TE | Business System Testing | REI | EXEC |
| 33 | B.MC.050 | Update Setup Documentation (Core) | 1d? | 2006-06-15 | 2006-06-16 | 32 | 0d |  |  | Setup Documentation |  |  |  |  |  |  |
| 34 | B.RD.011 | Update Business Process Model (Core) | 1d? | 2006-06-15 | 2006-06-16 | 32 | 0d |  |  | Future Process Model |  |  |  |  |  |  |
| 35 | B.TG.FC | **Configuration Familiarization and Coaching** | 3.13d | 2006-06-16 | 2006-06-21 |  | 0d |  | 30.18h |  |  |  |  |  |  |  |
| 36 | B.MC.063 | Conduct Configuration Familiarization/Coaching Sessions (Core) | 25.06h | 2006-06-16 | 2006-06-21 | 32, 33 | 0d |  | 30.18h | Configuration Familiarization/Coaching Sessions | 80 | TA.020 | TA | Application and Technical Architecture |  | EXEC |
| 37 | B.TG.DL | **Load and Validate Data - Configure** | 3.94d? | 2006-06-16 | 2006-06-22 |  | 0d |  | 31h |  |  |  |  |  |  |  |
| 38 | B.CV.027 | Perform Data Mapping (Optional) | 1d? | 2006-06-16 | 2006-06-19 | 33 | 0d |  |  | Data Mapping |  |  |  |  |  |  |
| 39 | B.CV.053 | Prepare Data for Loading (Optional) | 15.5h | 2006-06-19 | 2006-06-21 | 32, 38 | 0d |  | 31h | Prepared Data | 60 | TE.018 | TE | Business System Testing |  | EXEC |
| 40 | B.CV.065.1 | Load, Reconcile and Validate Data (Optional) | 1d? | 2006-06-21 | 2006-06-22 | 39 | 0d |  |  | Validated Data |  |  |  |  |  |  |
| 41 | B.TG.CL | **Prepare and Load Content** | 2d? | 2006-06-08 | 2006-06-12 |  | 0d |  |  |  |  |  |  |  |  |  |
| 42 | B.CV.026 | Conduct Content Strategy Session (Optional) | 1d? | 2006-06-08 | 2006-06-09 | 25 | 0d |  |  | Content Strategy |  |  |  |  |  |  |
| 43 | B.CV.066 | Prepare and Load Content (Optional) | 1d? | 2006-06-09 | 2006-06-12 | 42 | 0d |  |  | Loaded Content |  |  |  |  |  |  |
| 44 | B.TG.IP | **Implement Integration Packages** | 2.41d? | 2006-06-19 | 2006-06-21 |  | 0.53d |  | 11.27h |  |  |  |  |  |  |  |
| 45 | B.IM.050.1 | Implement Integration Packages - Oracle (Optional) | 11.27h | 2006-06-19 | 2006-06-20 | 38 | 0.53d | 0d | 11.27h | Integration Components - Oracle | 60 | TE.015 | TE | Business System Testing | REI | EXEC |
| 46 | B.IM.050.2 | Implement Integration Packages - Customer Systems (Optional) | 1d? | 2006-06-19 | 2006-06-20 | 38 | 0.94d | 0.41d |  | Integration Components - Customer Systems |  |  |  |  |  |  |
| 47 | B.TE.045 | Validate Integration Packages (Optional) | 1d? | 2006-06-20 | 2006-06-21 | 45, 46 | 0.53d |  |  | Validated Integrations |  |  |  |  |  |  |
| 48 | B.TG.IE | **Implement Extensions** | 2d? | 2006-06-15 | 2006-06-19 |  | 0d |  |  |  |  |  |  |  |  |  |
| 49 | B.IM.050.3 | Implement Extensions (Optional) | 1d? | 2006-06-15 | 2006-06-16 | 32 | 0d |  |  | Implemented Extensions |  |  |  |  |  |  |
| 50 | B.MC.070.2 | Implement Extensible Items (Optional) | 1d? | 2006-06-15 | 2006-06-16 | 32 | 0d |  |  | Configured Extensible Items |  |  |  |  |  |  |
| 51 | B.MC.085 | Prepare Reports (Optional) | 1d? | 2006-06-15 | 2006-06-16 | 32 | 0d |  |  | Developed Reports |  |  |  |  |  |  |
| 52 | B.TE.030 | Validate Extensions (Optional) | 1d? | 2006-06-16 | 2006-06-19 | 49, 50, 51 | 0d |  |  | QA Tested Extensions |  |  |  |  |  |  |

| ID | WBS | Task | Duration | Start | Finish | Predecessors | Total slack | Work | Text1 | Text2 | Text6 | Text7 | Text8 | Text12 | Text18 | Text3 |
| --- | --- | --- | --- | --- | --- | --- | --- | --- | --- | --- | --- | --- | --- | --- | --- | --- |
| 53 | B.TG.PC | **Prepare for Cutover** | 2d? | 2006-06-19 | 2006-06-21 |  | 0d |  |  |  |  |  |  |  |  |  |
| 54 | B.TS.020 | Define Cutover Strategy (Core) | 1d? | 2006-06-19 | 2006-06-20 | 52 | 0d |  | Cutover Strategy |  |  |  |  |  |  |  |
| 55 | B.TS.040 | Design Production Support Infrastructure (Core) | 1d? | 2006-06-20 | 2006-06-21 | 54 | 0d |  | Production Support Infrastructure Design |  |  |  |  |  |  |  |
| 56 | B.TG.IS | **Implement Security Plan** | 1d? | 2006-06-21 | 2006-06-22 |  | 0d |  |  |  |  |  |  |  |  |  |
| 57 | B.MC.070.3 | Implement Security (Core) | 1d? | 2006-06-21 | 2006-06-22 | 36 | 0d |  | Implemented Security |  |  |  |  |  |  |  |
| 58 | B.TG.IC | **Implementation Checkpoint** | 1.56d | 2006-06-22 | 2006-06-23 |  | 0d | 31.22h |  |  |  |  |  |  |  |  |
| 59 | B.WM.055.2 | Conduct Implementation Checkpoint (Core) | 12.49h | 2006-06-22 | 2006-06-23 | 32, 40, 47, 54 | 0d | 31.22h | Implementation Checkpoint Meeting / Approval to Proceed | IM.005 | IM | Implementation | 50 | BSI | EXEC |  |
| 60 | B.TG.PM | **Project Management** | 2.11d | 2006-06-02 | 2006-06-06 |  | 0d | 16.91h |  | PMC.BREI |  |  | null | REI | MGMT |  |
| 61 | B.PEC.MPE.2 | Manage Project Execution (Core) | 16.91h | 2006-06-02 | 2006-06-06 | 27 | 0d | 16.91h | Managed Project Assets | RD.042.2 | RD | Business Requirements Definition | 10 |  | EXEC | OG |
| 62 | C | **Validate** | 311.53h? | 2006-06-06 | 2006-07-31 |  | 0d | 343.99h |  |  |  |  | null |  |  |  |
| 63 | C.TG.PR | **Prepare for End-to-End Review** | 3d? | 2006-06-23 | 2006-06-28 |  | 0d |  |  |  |  |  |  |  |  |  |
| 64 | C.MC.070.4 | Setup Applications (Core) | 1d? | 2006-06-23 | 2006-06-26 | 59 | 0d |  | Configured Applications |  |  |  |  |  |  |  |
| 65 | C.TE.027 | Update Validation Scripts (Core) | 1d? | 2006-06-26 | 2006-06-27 | 64 | 0d |  | Updated Validation Scripts |  |  |  |  |  |  |  |
| 66 | C.TE.105 | Prepare Users for Validation (Core) | 1d? | 2006-06-27 | 2006-06-28 | 64, 65 | 0d |  | Prepared Users |  |  |  |  |  |  |  |
| 67 | C.TG.DL | **Validate Data Load - Validate** | 1d? | 2006-06-26 | 2006-06-27 |  | 0d |  |  |  |  |  |  |  |  |  |
| 68 | C.CV.065.2 | Load, Reconcile and Validate Data (Optional) | 1d? | 2006-06-26 | 2006-06-27 | 64 | 0d |  | Validated Data |  |  |  |  |  |  |  |
| 69 | C.TG.ER | **End-to-End Review** | 1.66d | 2006-06-27 | 2006-06-29 |  | 0d | 16.62h |  |  |  |  |  |  |  |  |
| 70 | C.TE.070 | Conduct End-to-End Review (Core) | 13.3h | 2006-06-27 | 2006-06-29 | 68 | 0d | 16.62h | End-to-End Review Results | TE.020 | TE | Business System Testing | 60 |  | EXEC |  |
| 71 | C.TG.DO | **Documentation** | 1d? | 2006-06-29 | 2006-06-30 |  | 0d |  |  |  |  |  |  |  |  |  |
| 72 | C.DO.070 | Publish User Guide (i.e., Job Aid) (Optional) | 1d? | 2006-06-29 | 2006-06-30 | 70 | 0d |  | User Guide |  |  |  |  |  |  |  |
| 73 | C.DO.075 | Publish Admin Guide (Optional) | 1d? | 2006-06-29 | 2006-06-30 | 70 | 0d |  | Admin Guide |  |  |  |  |  |  |  |
| 74 | C.TG.TR | **Prepare for Training** | 12.94d? | 2006-06-29 | 2006-07-18 |  | 0d | 238.75h |  |  |  |  |  |  |  |  |
| 75 | C.TR.080 | Prepare for Training (Optional) | 95.5h | 2006-06-29 | 2006-07-17 | 70 | 0d | 238.75h | Training Preparations | IM.040 | IM | Implementation | 50 |  | EXEC |  |
| 76 | C.TR.095 | Conduct Train-the-Trainer Workshops (Optional) | 1d? | 2006-07-17 | 2006-07-18 | 75 | 0d |  | Trained Trainers |  |  |  |  |  |  |  |

| ID | WBS | Task | Type | Duration | Start | Finish | Predecessors | Total slack | Work | Text1 | Text2 | Text6 | Text7 | Text8 | Text18 |
| --- | --- | --- | --- | --- | --- | --- | --- | --- | --- | --- | --- | --- | --- | --- | --- |
| 77 | C.TG.TA | **Execute Technical Readiness Assessment** |  | 1d? | 2006-06-08 | 2006-06-09 |  | 0d |  |  |  |  |  |  |  |
| 78 | C.TA.125 | Execute Technical Readiness Assessment (Optional) |  | 1d? | 2006-06-08 | 2006-06-09 | 25 | 0d |  | Technical Readiness Assessment Recommendations |  |  |  |  |  |
| 79 | C.TG.IC | **Implementation Checkpoint** |  | 8.86d | 2006-07-18 | 2006-07-31 |  | 0d | 88.62h |  |  |  |  |  |  |
| 80 | C.WM.055.3 | Conduct Implementation Checkpoint (Core) |  | 70.9h | 2006-07-18 | 2006-07-31 | 68, 70, 76 | 0d | 88.62h | Implementation Checkpoint Meeting / Approval to Proceed | TE.030 | TE | Business System Testing | 60 | EXEC |
| 81 | C.TG.PM | **Project Management** |  | 1d? | 2006-06-06 | 2006-06-07 |  | 0d |  |  |  |  |  |  |  |
| 82 | C.PEC.MPE.3 | Manage Project Execution (Core) |  | 1d? | 2006-06-06 | 2006-06-07 | 61 | 0d |  | Managed Project Assets |  |  |  |  |  |
| 83 | D | **Transition** |  | 744.63h? | 2006-06-07 | 2006-10-16 |  | 0d | 349.59h |  |  |  |  | null |  |
| 84 | D.TG.PT | **Prepare for Transition** |  | 3.19d? | 2006-07-31 | 2006-08-03 |  | 0d | 38.87h |  |  |  |  |  |  |
| 85 | D.TS.045 | Remove Test Data from Production (Optional) |  | 1d? | 2006-07-31 | 2006-08-01 | 80 | 0d |  | Clean Production Environment |  |  |  |  |  |
| 86 | D.TS.050 | Migrate Configuration to Production (Core) |  | 1d? | 2006-07-31 | 2006-08-01 | 80 | 0d |  | Configured Production Environment |  |  |  |  |  |
| 87 | D.TS.051 | Migrate Integrations and Extensions to Production (Optional) |  | 1d? | 2006-08-01 | 2006-08-02 | 86 | 1.19d |  | Integrations and Extensions in Production |  |  |  |  |  |
| 88 | D.CV.065.3 | Load, Reconcile and Validate Data Loads in Production (Optional) |  | 17.49h | 2006-08-01 | 2006-08-03 | 86 | 0d | 38.87h | Validated Data | TE.110 | TE | Business System Testing | 60 | EXEC |
| 89 | D.TG.FV | **Final Validation** |  | 7.77d | 2006-08-03 | 2006-08-15 |  | 0d | 88.84h |  |  |  |  |  |  |
| 90 | D.TE.120 | Conduct Final Validation Review with Users and Stakeholders (Core) |  | 62.19h | 2006-08-03 | 2006-08-15 | 86, 87, 88 | 0d | 88.84h | Validated Production Environment | PT.100 | PT | Performance Testing | 70 | EXEC |
| 91 | D.TG.TR | **Training** |  | 6.66d | 2006-08-15 | 2006-08-23 |  | 0d | 133.27h |  |  |  |  |  |  |
| 92 | D.TR.100 | Conduct End-User Training (Optional) |  | 53.3h | 2006-08-15 | 2006-08-23 | 90 | 0d | 133.27h | Skilled Users | TS.050 | TS | Transition | 100 | EXEC |
| 93 | D.TG.TS | **Transition to Production** |  | 44.18d? | 2006-08-15 | 2006-10-16 |  | 0d | 88.62h |  |  |  |  |  |  |
| 94 | D.TS.052 | Implement Production Support Infrastructure (Core) |  | 1d? | 2006-08-15 | 2006-08-16 | 90 | 0d |  | Production Support Infrastructure |  |  |  |  |  |
| 95 | D.TS.058 | Verify Production and Operational Readiness (Core) |  | 1d? | 2006-08-16 | 2006-08-17 | 94 | 0d |  | Production Ready System |  |  |  |  |  |
| 96 | D.TS.060 | Begin Production Use (Core) |  | 266.52h | 2006-08-17 | 2006-10-03 | 95 | 0d |  | System in Production | TS.060 | TS | Transition | 100 | EXEC |
| 97 | D.TG.IC | **Implementation Checkpoint** |  | 8.86d | 2006-10-03 | 2006-10-16 |  | 0d | 88.62h |  |  |  |  |  |  |
| 98 | D.WM.055.4 | Conduct Implementation Checkpoint (Core) |  | 70.9h | 2006-10-03 | 2006-10-16 | 7, 95, 96 | 0d | 88.62h | Implementation Checkpoint Meeting / Approval to Proceed | TE.030 | TE | Business System Testing | 60 | EXEC |
| 99 | D.TG.PM | **Project Management** |  | 0d | 2006-06-07 | 2006-06-07 |  | 0d |  |  |  |  |  |  |  |
| 100 | D.PEC.MPE.4 | Manage Project Execution (Core) | milestone | 0h | 2006-06-07 | 2006-06-07 | 82 | 0d |  | Managed Project Assets | PMC.SIP |  |  | null | MGMT |

| ID | WBS | Task | Type | Duration | Start | Finish | Predecessors | Total slack | Work | Text8 | Text1 | Text2 | Text6 | Text7 | Text18 | Text3 |
| --- | --- | --- | --- | --- | --- | --- | --- | --- | --- | --- | --- | --- | --- | --- | --- | --- |
| 101 | E | **Realization** |  | 793.49h? | 2006-06-07 | 2006-10-24 |  | 0d | 61.08h | null |  |  |  |  |  |  |
| 102 | E.TG.SP | **Stabilization** |  | 6.11d? | 2006-10-16 | 2006-10-24 |  | 0d | 61.08h |  |  |  |  |  |  |  |
| 103 | E.PS.005 | Manage Transition to Steady-State Operations (Core) |  | 48.86h | 2006-10-16 | 2006-10-24 | 98 | 0d | 61.08h | 70 | Steady-State Operations | PT.120 | PT | Performance Testing | EXEC |  |
| 104 | E.PS.065 | Post Go-Live Support (Core) |  | 1d? | 2006-10-16 | 2006-10-17 | 98 | 0d |  |  | Post Go-Live Support |  |  |  |  |  |
| 105 | E.TG.TC | **Transition to Customer Relationship Manager** |  | 1d? | 2006-10-03 | 2006-10-04 |  | 0d |  |  |  |  |  |  |  |  |
| 106 | E.PS.070 | Execute Handoff to Customer Relationship Manager (Optional) |  | 1d? | 2006-10-03 | 2006-10-04 | 96 | 0d |  |  | Customer Relationship Manager Handoff |  |  |  |  |  |
| 107 | E.TG.PM | **Project Management** |  | 1d? | 2006-06-07 | 2006-06-08 |  | 0d |  |  |  |  |  |  |  |  |
| 108 | E.PEC.MPE.5 | Manage Project Execution (Core) | milestone | 1d? | 2006-06-07 | 2006-06-08 | 100 | 0d |  |  | Managed Project Assets |  |  |  |  |  |
| 109 | E.PC.ACT | **Project Closure** |  | 2d? | 2006-06-08 | 2006-06-12 |  | 0d |  |  |  |  |  |  |  |  |
| 110 | E.PC.GA | Gain Acceptance (Core) |  | 1d? | 2006-06-08 | 2006-06-09 | 108 | 0d |  | 190 | Final Acceptance Certificate | PMC.PCSUM1 | PMC | Project Management Control | MGMT | OG |
| 111 | E.PC.CPC | Close Processes and Contract (Core) |  | 1d? | 2006-06-09 | 2006-06-12 | 110 | 0d |  |  | Closed Processes and Contract |  |  |  |  |  |
