# SOA Project Delivery Project Plan

Schedule from MS Project, 2006-05-31 to 2006-09-11.
Oracle Corp.
Copyright © 2006, 2016, Oracle and/or its affiliates. All rights reserved.

## Calendars

- Standard: Mon-Fri 08:00-12:00, 13:00-17:00; Sat-Sun off.

## Schedule

| ID | WBS | Task | Duration | Start | Finish | Predecessors | Total slack | Work | Text5 | Text8 | Text2 | Text6 | Text7 | Text18 | Text1 |
| --- | --- | --- | --- | --- | --- | --- | --- | --- | --- | --- | --- | --- | --- | --- | --- |
| 1 | E | **OUM** | 73.11d? | 2006-05-31 | 2006-09-11 |  | 0d | 2778.37h | 31/05/2006 | null |  |  |  |  |  |
| 2 | I | **OUM - SOA Project Delivery Project Workplan** | 584.85h? | 2006-05-31 | 2006-09-11 |  | 0d | 2778.37h |  | null |  |  |  |  |  |
| 3 | PS | **Project Start Up** | 5d? | 2006-05-31 | 2006-06-06 |  | 0d |  |  | null | PS |  |  |  |  |
| 4 | PS.ACT.RBC | **Review Bid and Contract** | 1d? | 2006-05-31 | 2006-05-31 |  | 0d |  |  | 190 | PMC.PSSUM1 | PMC | Project Management Control | MGMT |  |
| 5 | PS.BT.010 | Review and Analyze Bid Material | 1d? | 2006-05-31 | 2006-05-31 |  | 0d |  |  |  |  |  |  |  | Reviewed and Analyzed Bid Material |
| 6 | PS.BT.020 | Review and Confirm Business Case | 1d? | 2006-05-31 | 2006-05-31 |  | 0d |  |  |  |  |  |  |  | Confirmed Business Case |
| 7 | PS.BT.030 | Identify Project Stakeholders | 1d? | 2006-05-31 | 2006-05-31 |  | 0d |  |  |  |  |  |  |  | Identified Project Stakeholders |
| 8 | PS.BT.040 | Review and Accept Project Budget | 1d? | 2006-05-31 | 2006-05-31 |  | 0d |  |  |  |  |  |  |  | Accepted Project Budget |
| 9 | PS.RKM .020 | Conduct Baseline Risk Assessment | 1d? | 2006-05-31 | 2006-05-31 |  | 0d |  |  |  |  |  |  |  | Baseline Risk Assessment |
| 10 | PS.ACT.RPAC | **Review Project Assets with Customer** | 1d? | 2006-06-01 | 2006-06-01 | 4 | 0d |  |  |  |  |  |  |  |  |
| 11 | PS.BT.050 | Review Contract with Customer | 1d? | 2006-06-01 | 2006-06-01 |  | 0d |  |  |  |  |  |  |  | Reviewed Contract |
| 12 | PS.BT.060 | Review Project Approach with Customer | 1d? | 2006-06-01 | 2006-06-01 |  | 0d |  |  |  |  |  |  |  | Reviewed Project Approach |
| 13 | PS.BT.070 | Create Project Management Framework | 1d? | 2006-06-01 | 2006-06-01 |  | 0d |  |  |  |  |  |  |  | Project Management Framework |
| 14 | PS.ACT.VSSOS | **Validate Scope, Stakeholders and OCM Strategy** | 1d? | 2006-06-02 | 2006-06-02 | 10 | 0d |  |  |  |  |  |  |  |  |
| 15 | PS.SM.010 | Define and Confirm Scope | 1d? | 2006-06-02 | 2006-06-02 |  | 0d |  |  |  |  |  |  |  | Validated Scope |
| 16 | PS.CMM.010 | Conduct Project Stakeholder Analysis | 1d? | 2006-06-02 | 2006-06-02 |  | 0d |  |  |  |  |  |  |  | Project Stakeholder Analysis |
| 17 | PS.OCHM.010 | Understand Customer's Organizational Change Management Strategy | 1d? | 2006-06-02 | 2006-06-02 |  | 0d |  |  |  |  |  |  |  | Customer's Organizational Change Management Strategy |
| 18 | PS.ACT.DW | **Develop Workplan** | 1d? | 2006-06-05 | 2006-06-05 | 14 | 0d |  |  |  |  |  |  |  |  |
| 19 | PS.WM.010 | Develop Baseline Project Workplan | 1d? | 2006-06-05 | 2006-06-05 |  | 0d |  |  |  |  |  |  |  | Baseline Project Workplan |
| 20 | PS.ACT.DSPB | **Develop Staff Plan and Budget** | 1d? | 2006-06-05 | 2006-06-05 | 14 | 0d |  |  |  |  |  |  |  |  |
| 21 | PS.FM.010 | Refine Project Budget | 1d? | 2006-06-05 | 2006-06-05 |  | 0d |  |  |  |  |  |  |  | Approved Project Budget |
| 22 | PS.STM.010 | Plan Resource Requirements | 1d? | 2006-06-05 | 2006-06-05 |  | 0d |  |  |  |  |  |  |  | Resource Plan |
| 23 | PS.STM.030 | Staff Project | 1d? | 2006-06-05 | 2006-06-05 |  | 0d |  |  |  |  |  |  |  | Staffed Project |
| 24 | PS.STM.040 | Prepare Orientation Guide(s) | 1d? | 2006-06-05 | 2006-06-05 |  | 0d |  |  |  |  |  |  |  | Orientation Guide |
| 25 | PS.QM.030 | Conduct Project Team Quality Management Orientation | 1d? | 2006-06-05 | 2006-06-05 |  | 0d |  |  |  |  |  |  |  | Project Team Quality Management Orientation |

| ID | WBS | Task | Duration | Start | Finish | Predecessors | Total slack | Text1 |
| --- | --- | --- | --- | --- | --- | --- | --- | --- |
| 26 | PS.ACT.CPMP | **Complete Project Management Plan** | 1d? | 2006-06-06 | 2006-06-06 | 18, 20 | 0d |  |
| 27 | PS.SM.020 | Develop Scope Change Management Processes | 1d? | 2006-06-06 | 2006-06-06 |  | 0d | Scope Change Management Procedures |
| 28 | PS.FM.020 | Develop Financial Management Plan | 1d? | 2006-06-06 | 2006-06-06 |  | 0d | Financial Management Plan |
| 29 | PS.WM.020 | Develop Work Management Execution and Control Processes and Policies | 1d? | 2006-06-06 | 2006-06-06 |  | 0d | Work Management Plan |
| 30 | PS.RKM.010 | Develop Risk Management Plan | 1d? | 2006-06-06 | 2006-06-06 |  | 0d | Risk Management Plan |
| 31 | PS.IPM.010 | Develop Issue Management Strategy | 1d? | 2006-06-06 | 2006-06-06 |  | 0d | Issue Management Strategy |
| 32 | PS.IPM.020 | Develop Problem Management Strategy | 1d? | 2006-06-06 | 2006-06-06 |  | 0d | Problem Management Strategy |
| 33 | PS.STM.020 | Develop Staff Management Plan | 1d? | 2006-06-06 | 2006-06-06 |  | 0d | Staff Management Plan |
| 34 | PS.CMM.020 | Develop Project Team Communication Plan | 1d? | 2006-06-06 | 2006-06-06 |  | 0d | Project Team Communication Plan |
| 35 | PS.QM.010 | Develop Quality Management Plan | 1d? | 2006-06-06 | 2006-06-06 |  | 0d | Quality Management Plan |
| 36 | PS.QM.020 | Develop and Document Quality Control and Reporting Process | 1d? | 2006-06-06 | 2006-06-06 |  | 0d | Quality Control and Reporting Process |
| 37 | PS.CM.010 | Develop Configuration Management Strategy and Processes | 1d? | 2006-06-06 | 2006-06-06 |  | 0d | Configuration Management Plan and Processes |
| 38 | PS.CM.030 | Create Project Documentation Management Plan | 1d? | 2006-06-06 | 2006-06-06 |  | 0d | Documentation Management Plan |
| 39 | PS.IFM.010 | Develop Infrastructure Management Plan | 1d? | 2006-06-06 | 2006-06-06 |  | 0d | Infrastructure Management Plan |
| 40 | PS.PCM.010 | Develop Procurement Strategy and Process | 1d? | 2006-06-06 | 2006-06-06 |  | 0d | Procurement Strategy and Process |
| 41 | PS.OCHM.020 | Identify Change Management Warning Signs | 1d? | 2006-06-06 | 2006-06-06 |  | 0d | Change Management Warning Signs |
| 42 | PS.ACT.EPI | **Establish Project Infrastructure** | 1d? | 2006-06-06 | 2006-06-06 | 18, 20 | 0d |  |
| 43 | PS.FM.030 | Set Up Time and Expense Tracking | 1d? | 2006-06-06 | 2006-06-06 |  | 0d | Time and Expense Tracking |
| 44 | PS.RKM.030 | Develop Risk Management System | 1d? | 2006-06-06 | 2006-06-06 |  | 0d | Risk Management System |
| 45 | PS.IPM.030 | Develop Issue and Problem Management System | 1d? | 2006-06-06 | 2006-06-06 |  | 0d | Issue and Problem Management System |
| 46 | PS.CM.020 | Obtain Configuration Management Tools | 1d? | 2006-06-06 | 2006-06-06 |  | 0d | Configuration Management Plan |
| 47 | PS.IFM.020 | Establish Team Work Environment | 1d? | 2006-06-06 | 2006-06-06 |  | 0d | Team Work Environment |
| 48 | PS.IFM.030 | Establish Technical Infrastructure | 1d? | 2006-06-06 | 2006-06-06 |  | 0d | Established Technical Infrastructure |
| 49 | PS.PCM.020 | Procure Goods and Contracted Services | 1d? | 2006-06-06 | 2006-06-06 |  | 0d | Service Orders |

| ID | WBS | Task | Duration | Start | Finish | Predecessors | Total slack | Text2 | Text8 | Text1 |
| --- | --- | --- | --- | --- | --- | --- | --- | --- | --- | --- |
| 50 | PEC | **Project Execution and Control** | 1d? | 2006-06-07 | 2006-06-07 |  | 0d | PEC | null |  |
| 51 | PEC.ACT.MSAA | **Manage Scope, Acceptance and Approvals** | 1d? | 2006-06-07 | 2006-06-07 | 42 | 0d |  |  |  |
| 52 | PEC.SM.030 | Manage Scope | 1d? | 2006-06-07 | 2006-06-07 |  | 0d |  |  | Managed Scope |
| 53 | PEC.SM.040 | Manage Acceptance | 1d? | 2006-06-07 | 2006-06-07 |  | 0d |  |  | Managed Acceptance |
| 54 | PEC.WM.050 | Manage Approvals | 1d? | 2006-06-07 | 2006-06-07 |  | 0d |  |  | Managed Approvals |
| 55 | PEC.ACT.MPF | **Manage Project Finances** | 1d? | 2006-06-07 | 2006-06-07 | 42 | 0d |  |  |  |
| 56 | PEC.FM.040 | Manage Project Financials | 1d? | 2006-06-07 | 2006-06-07 |  | 0d |  |  | Managed Project Finances |
| 57 | PEC.ACT.MPW | **Manage Project Workplan** | 1d? | 2006-06-07 | 2006-06-07 | 42 | 0d |  |  |  |
| 58 | PEC.WM.030 | Manage Project Workplan | 1d? | 2006-06-07 | 2006-06-07 |  | 0d |  |  | Project Workplan |
| 59 | PEC.WM.040 | Track Schedule Performance | 1d? | 2006-06-07 | 2006-06-07 |  | 0d |  |  | Scheduled Performance |
| 60 | PEC.ACT.MRIP | **Manage Risks, Issues and Problems** | 1d? | 2006-06-07 | 2006-06-07 | 42 | 0d |  |  |  |
| 61 | PEC.RKM.040 | Manage Risk | 1d? | 2006-06-07 | 2006-06-07 |  | 0d |  |  | Managed Risk |
| 62 | PEC.RKM.050 | Monitor and Control Risk | 1d? | 2006-06-07 | 2006-06-07 |  | 0d |  |  | Assessed Risk |
| 63 | PEC.IPM.040 | Manage Issues and Problems | 1d? | 2006-06-07 | 2006-06-07 |  | 0d |  |  | Managed Issues and Problems |
| 64 | PEC.ACT.OMT | **Orient and Manage Team** | 1d? | 2006-06-07 | 2006-06-07 | 42 | 0d |  |  |  |
| 65 | PEC.STM.050 | Conduct Team Orientation(s) | 1d? | 2006-06-07 | 2006-06-07 |  | 0d |  |  | Oriented Team |
| 66 | PEC.STM.060 | Manage Project Team | 1d? | 2006-06-07 | 2006-06-07 |  | 0d |  |  | Managed Project Team |
| 67 | PEC.ACT.MCOP | **Manage Communications and OCM Plans** | 1d? | 2006-06-07 | 2006-06-07 | 42 | 0d |  |  |  |
| 68 | PEC.CMM.030 | Manage Project Team Communication | 1d? | 2006-06-07 | 2006-06-07 |  | 0d |  |  | Managed Project Team Communication |
| 69 | PEC.OCHM.030 | Execute Change and Communication Plan | 1d? | 2006-06-07 | 2006-06-07 |  | 0d |  |  | Executed Change and Communication Plan |
| 70 | PEC.ACT.MPQ | **Manage Project Quality** | 1d? | 2006-06-07 | 2006-06-07 | 42 | 0d |  |  |  |
| 71 | PEC.QM.040 | Manage Quality Control | 1d? | 2006-06-07 | 2006-06-07 |  | 0d |  |  | Quality Control |
| 72 | PEC.QM.050 | Perform Quality Assurance | 1d? | 2006-06-07 | 2006-06-07 |  | 0d |  |  | Managed Quality Assurance |
| 73 | PEC.ACT.CECRM | **Create and Execute Configuration and Release Management** | 1d? | 2006-06-07 | 2006-06-07 | 42 | 0d |  |  |  |
| 74 | PEC.CM.040 | Create and Execute Software Configuration Management Plan | 1d? | 2006-06-07 | 2006-06-07 |  | 0d |  |  | Software Configuration Management Plan |
| 75 | PEC.CM.050 | Create and Execute Software Release Management Plan | 1d? | 2006-06-07 | 2006-06-07 |  | 0d |  |  | Software Release Management Plan |
| 76 | PEC.CM.060 | Create and Execute Environment and Patch Management Plan | 1d? | 2006-06-07 | 2006-06-07 |  | 0d |  |  | Environment and Patch Management Plan |
| 77 | PEC.CM.070 | Create and Execute Configuration Management Control Plan | 1d? | 2006-06-07 | 2006-06-07 |  | 0d |  |  | Configuration Management Control Plan |

| ID | WBS | Task | Duration | Start | Finish | Predecessors | Total slack | Text1 | Text2 | Text8 | Text6 | Text7 | Text18 |
| --- | --- | --- | --- | --- | --- | --- | --- | --- | --- | --- | --- | --- | --- |
| 78 | PEC.ACT.MMI | **Manage and Maintain Infrastructure** | 1d? | 2006-06-07 | 2006-06-07 | 42 | 0d |  |  |  |  |  |  |
| 79 | PEC.IFM.040 | Manage and Maintain Infrastructure | 1d? | 2006-06-07 | 2006-06-07 |  | 0d | Maintained Infrastructure |  |  |  |  |  |
| 80 | PEC.ACT.APGCS | **Administer Procurement of Goods and Contracted Services** | 1d? | 2006-06-07 | 2006-06-07 | 42 | 0d |  |  |  |  |  |  |
| 81 | PEC.PCM.030 | Administer Procurement of Goods and Contracted Services | 1d? | 2006-06-07 | 2006-06-07 |  | 0d | Managed Procurement of Goods and Services |  |  |  |  |  |
| 82 | INIT | **Initiate** | 4d? | 2006-05-31 | 2006-06-05 |  | 0d |  | PS | null |  |  |  |
| 83 | INIT.ACT.PEF | **Prepare Envision Foundation** | 4d? | 2006-05-31 | 2006-06-05 |  | 0d |  | PMC.PSSUM1 | 190 | PMC | Project Management Control | MGMT |
| 84 | INIT.ER.010 | Create Business Case for Envision Engagement | 1d? | 2006-05-31 | 2006-05-31 |  | 0d | Customer Envision Engagement Strategy |  |  |  |  |  |
| 85 | INIT.ER.040 | Research Enterprise | 1d? | 2006-05-31 | 2006-05-31 |  | 0d | Enterprise Research Findings |  |  |  |  |  |
| 86 | INIT.ER.045 | Establish Executive Sponsorship | 1d? | 2006-06-01 | 2006-06-01 | 85 | 0d | Committed Executive Sponsorship |  |  |  |  |  |
| 87 | INIT.BA.010 | Identify Business Strategy | 1d? | 2006-06-02 | 2006-06-02 | 86 | 0d | Business Strategy |  |  |  |  |  |
| 88 | INIT.BA.012 | Define Business Scope | 1d? | 2006-06-05 | 2006-06-05 | 87 | 0d | Business Scope |  |  |  |  |  |
| 89 | INIT.BA.015 | Conduct Enterprise Stakeholder Assessment | 1d? | 2006-06-01 | 2006-06-01 | 85 | 0d | Enterprise Stakeholder Inventory |  |  |  |  |  |
| 90 | INIT.ER.015 | Conduct Enterprise Maturity Assessment | 1d? | 2006-06-01 | 2006-06-01 | 84 | 0d | Maturity Analysis and Recommendations Report |  |  |  |  |  |
| 91 | INIT.ACT.PD | **Prepare for Discovery** | 1d? | 2006-06-01 | 2006-06-01 |  | 0d |  |  |  |  |  |  |
| 92 | INIT.EOCM.010 | Create and Manage Ad Hoc Communications | 1d? | 2006-06-01 | 2006-06-01 | 84 | 0d | Ad Hoc Communications |  |  |  |  |  |
| 93 | INIT.ACT.CEAWE | **Conduct Executive Alignment Workshop - Envision** | 2d? | 2006-06-01 | 2006-06-02 |  | 0d |  |  |  |  |  |  |
| 94 | INIT.EOCM.020 | Prepare for Executive Alignment Workshop | 1d? | 2006-06-01 | 2006-06-01 | 84 | 0d | Executive Alignment Workshop Materials |  |  |  |  |  |
| 95 | INIT.EOCM.030 | Conduct Executive Alignment Workshop | 1d? | 2006-06-02 | 2006-06-02 | 94 | 0d | Executive Execution Plan / Governance Rules |  |  |  |  |  |
| 96 | INIT.ACT.DMCEC | **Define and Maintain Common Enterprise Concepts** | 4d? | 2006-05-31 | 2006-06-05 |  | 0d |  |  |  |  |  |  |
| 97 | INIT.EA.010.1 | Review Architecture Principles, Guidelines and Standards | 1d? | 2006-05-31 | 2006-05-31 |  | 0d | Architecture Principles, Guidelines and Standards |  |  |  |  |  |
| 98 | INIT.ER.070 | Define Modeling Strategy for the Enterprise | 1d? | 2006-06-05 | 2006-06-05 | 87 | 0d | Enterprise Modeling Strategy |  |  |  |  |  |
| 99 | INIT.IP.080 | Maintain Repository of Artifacts | 1d? | 2006-05-31 | 2006-05-31 |  | 0d | Maintained Repository of Artifacts |  |  |  |  |  |
| 100 | INIT.ACT.EDGI | **Execute Discovery - Gather Information (As Is)** | 4d? | 2006-05-31 | 2006-06-05 |  | 0d |  |  |  |  |  |  |
| 101 | INIT.BA.040 | Create Enterprise Function or Process Model | 1d? | 2006-05-31 | 2006-05-31 |  | 0d | Enterprise Function or Process Model |  |  |  |  |  |
| 102 | INIT.BA.050 | Develop Enterprise Domain Model (Business Entities) | 1d? | 2006-05-31 | 2006-05-31 |  | 0d | Enterprise Domain Model |  |  |  |  |  |
| 103 | INIT.BA.060.1 | Perform High-Level Use Case Discovery | 1d? | 2006-06-01 | 2006-06-01 | 101, 102 | 0d | High-Level Use Cases |  |  |  |  |  |
| 104 | INIT.GV.092 | Determine Projects Meta Data Description | 1d? | 2006-05-31 | 2006-05-31 |  | 0d | Project Meta Data Description |  |  |  |  |  |
| 105 | INIT.GV.094 | Determine Applications Meta Data Description | 1d? | 2006-05-31 | 2006-05-31 |  | 0d | Applications Meta Data Description |  |  |  |  |  |
| 106 | INIT.GV.096 | Determine Services Meta Data Description | 1d? | 2006-05-31 | 2006-05-31 |  | 0d | Services Meta Data Description |  |  |  |  |  |
| 107 | INIT.IP.014 | Inventory Services | 1d? | 2006-06-05 | 2006-06-05 | 87 | 0d | Service Portfolio |  |  |  |  |  |
| 108 | INIT.GV.100 | Implement Governance | 1d? | 2006-06-01 | 2006-06-01 | 99, 104, 105, 106 | 0d | Governance Implementation |  |  |  |  |  |

| ID | WBS | Task | Duration | Start | Finish | Predecessors | Total slack | Work | Text1 | Text8 | Text2 | Text12 | Text18 | Text6 | Text7 | Text3 |
| --- | --- | --- | --- | --- | --- | --- | --- | --- | --- | --- | --- | --- | --- | --- | --- | --- |
| 109 | INIT.ACT.EDBPD | **Execute Discovery - Brainstorm, Prioritize and Discover Entry Points** | 4d? | 2006-05-31 | 2006-06-05 |  | 0d |  |  |  |  |  |  |  |  |  |
| 110 | INIT.BA.045 | Develop Enterprise Business Context Diagram | 1d? | 2006-06-01 | 2006-06-01 | 85, 101 | 0d |  | Enterprise Business Context Diagram |  |  |  |  |  |  |  |
| 111 | INIT.BA.060.2 | Perform High-Level Use Case Discovery | 1d? | 2006-06-01 | 2006-06-01 | 112 | 0d |  | High-Level Use Cases |  |  |  |  |  |  |  |
| 112 | INIT.EA.075 | Define SOA Reference Architecture | 1d? | 2006-05-31 | 2006-05-31 |  | 0d |  | SOA Reference Architecture |  |  |  |  |  |  |  |
| 113 | INIT.BA.070 | Identify Candidate Services | 1d? | 2006-06-02 | 2006-06-02 | 101, 102, 103 | 0d |  | Service Portfolio - Candidate Services |  |  |  |  |  |  |  |
| 114 | INIT.IP.020 | Analyze Services | 1d? | 2006-06-05 | 2006-06-05 | 113 | 0d |  | Service Portfolio - Proposed Services |  |  |  |  |  |  |  |
| 115 | INIT.ER.130.1 | Produce MoSCoW Improvement List | 1d? | 2006-06-02 | 2006-06-02 | 111 | 0d |  | MoSCoW Improvement List |  |  |  |  |  |  |  |
| 116 | INIT.EA.095 | Review Enterprise Software Development Process | 1d? | 2006-06-05 | 2006-06-05 | 115 | 0d |  | Enterprise Software Development Process |  |  |  |  |  |  |  |
| 117 | INIT.ACT.DSPC | **Develop Solution and Present to Client** | 1d? | 2006-05-31 | 2006-05-31 |  | 0d |  |  |  |  |  |  |  |  |  |
| 118 | INIT.ER.170 | Develop Future State Transition Plan | 1d? | 2006-05-31 | 2006-05-31 |  | 0d |  | Future State Transition Plan |  |  |  |  |  |  |  |
| 119 | INIT.ER.180 | Prepare for and Present Solution Recommendations | 1d? | 2006-05-31 | 2006-05-31 |  | 0d |  | Solution Recommendations |  |  |  |  |  |  |  |
| 120 | A | **Inception** | 94.84h? | 2006-05-31 | 2006-06-15 |  | 0d | 96.28h |  | null |  |  |  |  |  |  |
| 121 | A.ACT.GBRI | **Gather Business Requirements - Inception** | 7.73d | 2006-05-31 | 2006-06-09 |  | 0d | 48.56h |  | null | PMC.BBRSI | BRSI | MGMT |  |  |  |
| 122 | A.RD.001 | Detail Business and System Objectives | 14.57h | 2006-06-07 | 2006-06-08 | 26 | 0d | 24.29h | Business and System Objectives | 10 | RD.001 | BRSI | EXEC | RD | Business Requirements Definition |  |
| 123 | A.RD.005 | Create System Context Diagram | 3.64h | 2006-05-31 | 2006-05-31 |  | 7.28d | 6.07h | System Context Diagram | 10 | RD.005 | BRSI | EXEC | RD | Business Requirements Definition |  |
| 124 | A.RD.011.1 | Develop Future Process Model | 3.64h | 2006-06-08 | 2006-06-09 | 122 | 0.46d | 6.07h | Future Process Model | 10 | RD.011 | BRSI | EXEC | RD | Business Requirements Definition |  |
| 125 | A.RD.020 | Obtain High-Level Business Descriptions | 3.64h | 2006-06-08 | 2006-06-09 | 122 | 0d | 6.07h | High-Level Business Descriptions | 10 | RD.020 | BRSI | EXEC | RD | Business Requirements Definition |  |
| 126 | A.RD.065 | Develop Domain Model (Business Entities) | 3.64h | 2006-06-09 | 2006-06-09 | 125 | 0d | 6.07h | Domain Model | 10 | RD.065 | BRSI | EXEC | RD | Business Requirements Definition |  |
| 127 | A.ACT.GR | **Gather Solution Requirements** | 11.86d? | 2006-05-31 | 2006-06-15 |  | 0d | 47.72h |  |  |  |  |  |  |  |  |
| 128 | A.RD.045.1 | Prioritize Requirements (MoSCoW) | 7.29h | 2006-06-09 | 2006-06-12 | 123, 124, 125, 126, 129 | 0d | 12.15h | MoSCoW List | 10 | RD.045 | BRSI | EXEC | RD | Business Requirements Definition | OG |
| 129 | A.RD.055 | Detail Supplemental Requirements | 2.43h | 2006-06-08 | 2006-06-09 | 122 | 0.61d | 6.07h | Supplemental Requirements | 10 | RD.055 | BRSI | EXEC | RD | Business Requirements Definition |  |
| 130 | A.RA.023.1 | Develop Use Case Model | 17.7h | 2006-06-12 | 2006-06-14 | 128 | 0d | 29.5h | Use Case Model | 20 | RA.023.1 | REI | EXEC | RA | Requirements Analysis |  |
| 131 | A.RA.019 | Define SOA Layering Architecture | 1d? | 2006-05-31 | 2006-05-31 |  | 9.86d |  | SOA Reference Architecture |  |  |  |  |  |  |  |
| 132 | A.RA.025.1 | Identify Candidate Services | 1d? | 2006-06-14 | 2006-06-15 | 131, 130 | 0d |  | Service Portfolio - Candidate Services |  |  |  |  |  |  |  |

| ID | WBS | Task | Type | Duration | Start | Finish | Predecessors | Total slack | Work | Text1 | Text2 | Text8 | Text18 | Text6 | Text7 | Text12 |
| --- | --- | --- | --- | --- | --- | --- | --- | --- | --- | --- | --- | --- | --- | --- | --- | --- |
| 133 | A.ACT.GSP | **Gather Supporting Requirements** |  | 1d? | 2006-06-08 | 2006-06-09 |  | 0d |  |  |  |  |  |  |  |  |
| 134 | A.DO.010 | Define Documentation Requirements and Strategy |  | 1d? | 2006-06-08 | 2006-06-09 | 122 | 0d |  | Documentation Requirements and Strategy |  |  |  |  |  |  |
| 135 | A.ACT.CMAHC | **Create and Manage Ad Hoc Communications** |  | 1d? | 2006-06-07 | 2006-06-07 |  | 0d |  |  |  |  |  |  |  |  |
| 136 | A.OCM.010 | Create and Manage Ad Hoc Communications |  | 1d? | 2006-06-07 | 2006-06-07 | 26 | 0d |  | Ad Hoc Communications |  |  |  |  |  |  |
| 137 | A.ACT.CEAW | **Conduct Executive Alignment Workshop** |  | 2d? | 2006-06-08 | 2006-06-12 |  | 0d |  |  |  |  |  |  |  |  |
| 138 | A.OCM.020 | Prepare for Executive Alignment Workshop |  | 1d? | 2006-06-08 | 2006-06-09 | 122 | 0d |  | Executive Alignment Workshop Materials |  |  |  |  |  |  |
| 139 | A.OCM.030 | Conduct Executive Alignment Workshop |  | 1d? | 2006-06-09 | 2006-06-12 | 138 | 0d |  | Executive Execution Plan / Governance Rules |  |  |  |  |  |  |
| 140 | A.ACT.TPT | **Train Project Team** |  | 1d? | 2006-06-07 | 2006-06-07 |  | 0d |  |  |  |  |  |  |  |  |
| 141 | A.TR.010.1 | Define Training Strategy |  | 1d? | 2006-06-07 | 2006-06-07 | 26 | 0d |  | Education and Training Strategy |  |  |  |  |  |  |
| 142 | A.ACT.LCOB | **Lifecycle Objective Milestone** |  | 0d | 2006-06-14 | 2006-06-14 |  | 0d |  |  |  |  |  |  |  |  |
| 143 | A.PMC.LCOB | Lifecycle Objective Milestone | milestone | 0h | 2006-06-14 | 2006-06-14 | 122, 123, 124, 126, 128, 130 | 0d |  | Lifecycle Objective Milestone | PMC.LCOB | null | MGMT |  |  |  |
| 144 | B | **Elaboration** |  | 186.47h? | 2006-05-31 | 2006-07-03 |  | 0d | 653.35h |  |  | null |  |  |  |  |
| 145 | B.ACT.GBRE | **Gather Business Requirements - Elaboration** |  | 1d? | 2006-05-31 | 2006-05-31 |  | 17.88d |  |  |  |  |  |  |  |  |
| 146 | B.RD.011.2 | Develop Future Process Model |  | 1d? | 2006-05-31 | 2006-05-31 |  | 17.88d |  | Future Process Model |  |  |  |  |  |  |
| 147 | B.ACT.DUC | **Develop Use Cases** |  | 6.04d | 2006-06-14 | 2006-06-22 |  | 0d | 100.64h |  |  |  |  |  |  |  |
| 148 | B.RA.023.2 | Develop Use Case Model |  | 24.16h | 2006-06-14 | 2006-06-19 | 143 | 0d | 40.26h | Use Case Model | RA.023.2 | 20 | EXEC | RA | Requirements Analysis |  |
| 149 | B.RA.024.1 | Develop Use Case Details |  | 36.23h | 2006-06-16 | 2006-06-22 | 148FS-5% | 0d | 60.38h | Use Case Specification | RA.024.1 | 20 | EXEC | RA | Requirements Analysis | REI |
| 150 | B.ACT.CS | **Consolidate Specification** |  | 4.02d? | 2006-06-14 | 2006-06-20 |  | 0d |  |  | PMC.BREI | null | MGMT |  |  | REI |
| 151 | B.RD.045.2 | Prioritize Requirements (MoSCoW) |  | 1d? | 2006-06-14 | 2006-06-15 | 143 | 0d |  | MoSCoW List |  |  |  |  |  |  |
| 152 | B.RA.025.2 | Identify Candidate Services |  | 1d? | 2006-06-19 | 2006-06-20 | 148 | 0d |  | Service Portfolio - Candidate Services |  |  |  |  |  |  |
| 153 | B.ACT.DPS | **Define Project Strategy** |  | 6.59d? | 2006-06-14 | 2006-06-23 |  | 0d | 42.67h |  |  |  |  |  |  |  |
| 154 | B.TE.010 | Develop Testing Strategy |  | 22.54h | 2006-06-20 | 2006-06-23 | 149FS-5% | 0d | 22.53h | Testing Strategy | TE.010 | 60 | EXEC | TE | Business System Testing | REI |
| 155 | B.CV.020 | Define Data Acquisition, Conversion and Data Quality Strategy |  | 8.05h | 2006-06-14 | 2006-06-15 | 143 | 0d | 20.13h | Data Acquisition, Conversion and Data Quality Strategy | CV.020 | 90 | EXEC | CV | Data Conversion | REI |
| 156 | B.TR.010.2 | Define Training Strategy |  | 1d? | 2006-06-14 | 2006-06-15 | 143 | 0d |  | Education and Training Strategy |  |  |  |  |  |  |
| 157 | B.TS.020.1 | Define Cutover Strategy |  | 1d? | 2006-06-14 | 2006-06-15 | 143 | 0d |  | Cutover Strategy |  |  |  |  |  |  |

| ID | WBS | Task | Duration | Start | Finish | Predecessors | Total slack | Free slack | Work | Text1 | Text2 | Text6 | Text7 | Text8 | Text18 | Text12 |
| --- | --- | --- | --- | --- | --- | --- | --- | --- | --- | --- | --- | --- | --- | --- | --- | --- |
| 158 | B.ACT.DI | **Define Infrastructure** | 12.45d | 2006-06-14 | 2006-07-03 |  | 0d |  | 150.95h |  |  |  |  |  |  |  |
| 159 | B.TA.020 | Define Architecture Requirements and Strategy | 25.06h | 2006-06-14 | 2006-06-19 | 143 | 2.89d | 0d | 30.18h | Architecture Requirements and Strategy | TA.020 | TA | Application and Technical Architecture | 80 | EXEC |  |
| 160 | B.TA.030 | Define Integration Requirements and Strategy | 36.23h | 2006-06-14 | 2006-06-21 | 143 | 0d |  | 45.28h | Integration Architecture Strategy | TA.030 | TA | Application and Technical Architecture | 80 | EXEC |  |
| 161 | B.TA.070 | Define Initial Architecture and Application Mapping | 27.17h | 2006-06-21 | 2006-06-26 | 160 | 0d |  | 30.18h | Initial Architecture and Application Mapping | TA.070 | TA | Application and Technical Architecture | 80 | EXEC |  |
| 162 | B.TA.090 | Develop Security and Control Strategy | 36.23h | 2006-06-26 | 2006-07-03 | 161 | 0d |  | 45.3h | Security and Control Strategy | TA.090 | TA | Application and Technical Architecture | 80 | EXEC |  |
| 163 | B.ACT.DTP | **Develop Test Plans** | 1.41d | 2006-06-23 | 2006-06-26 |  | 0d |  | 11.27h |  |  |  |  |  |  |  |
| 164 | B.TE.015.1 | Develop Integration Test Plan | 11.27h | 2006-06-23 | 2006-06-26 | 154 | 0d |  | 11.27h | Integration Test Plan | TE.015 | TE | Business System Testing | 60 | EXEC | REI |
| 165 | B.ACT.PEE | **Prepare Environments - Elaboration** | 0.76d | 2006-05-31 | 2006-05-31 |  | 0d |  | 10.07h |  |  |  |  |  |  |  |
| 166 | B.CV.030.1 | Prepare Conversion Environment (Initial Load) | 6.04h | 2006-05-31 | 2006-05-31 |  | 0d |  | 10.07h | Conversion Environment (Initial Load) | CV.030 | CV | Data Conversion | 90 | EXEC | REI |
| 167 | B.ACT.BSA | **Baseline Software Architecture** | 3.17d | 2006-05-31 | 2006-06-05 |  | 15.7d |  | 42.27h |  |  |  |  |  |  |  |
| 168 | B.DS.040.1 | Develop Design Architecture Description | 25.37h | 2006-05-31 | 2006-06-05 |  | 15.7d |  | 42.27h | Architecture Description | DS.010.1 | DS | Design | 40 | EXEC | RADI |
| 169 | B.ACT.AE | **Analyze - Elaboration** | 17.88d? | 2006-05-31 | 2006-06-23 |  | 0d |  | 79.71h |  |  |  |  |  |  |  |
| 170 | B.AN.080.1 | Analyze Services | 1d? | 2006-06-20 | 2006-06-21 | 152 | 0d |  |  | Service Portfolio - Proposed Services |  |  |  |  |  |  |
| 171 | B.AN.085.1 | Define Service | 1d? | 2006-06-21 | 2006-06-22 | 170 | 0d |  |  | Service Definition |  |  |  |  |  |  |
| 172 | B.RA.026.1 | Populate Services Repository | 1d? | 2006-06-22 | 2006-06-23 | 171 | 0d |  |  | Populated Services Repository |  |  |  |  |  |  |
| 173 | B.AN.110.1 | Review Analysis Model | 23.91h | 2006-05-31 | 2006-06-02 |  | 0d |  | 79.71h | Reviewed Analysis Model | AN.050.1 | AN | Analysis | 30 | EXEC | REI |
| 174 | B.ACT.DE | **Design - Elaboration** | 4.89d? | 2006-06-19 | 2006-06-26 |  | 0d |  |  |  |  |  |  |  |  |  |
| 175 | B.DS.070 | Define SOA Implementation Strategy | 1d? | 2006-06-19 | 2006-06-20 | 159 | 2.89d |  |  | SOA Implementation Strategy |  |  |  |  |  |  |
| 176 | B.DS.120.1 | Design Services | 1d? | 2006-06-23 | 2006-06-26 | 170, 175, 172 | 0d |  |  | Service Design |  |  |  |  |  |  |
| 177 | B.ACT.DP | **Develop Prototypes** | 19.88d? | 2006-05-31 | 2006-06-27 |  | 0d |  | 88.97h |  |  |  |  |  |  |  |
| 178 | B.IM.010 | Develop Functional Prototype | 35.59h | 2006-06-14 | 2006-06-21 | 143 | 0d |  | 88.97h | Functional Prototype | IM.010 | IM | Implementation | 50 | EXEC | REI |
| 179 | B.IM.053.1 | Register Services | 1d? | 2006-06-26 | 2006-06-27 | 176 | 0d |  |  | Populated Services Registry |  |  |  |  |  |  |
| 180 | B.IM.060.1 | Perform Component Review | 1d? | 2006-05-31 | 2006-05-31 |  | 0d |  |  | Component Review Results |  |  |  |  |  |  |
| 181 | B.ACT.VP | **Validate Prototypes** | 2.01d | 2006-06-21 | 2006-06-23 |  | 1.56d |  | 40.26h |  |  |  |  |  |  |  |
| 182 | B.RA.085 | Validate Functional Prototype | 16.11h | 2006-06-21 | 2006-06-23 | 178 | 1.56d |  | 40.26h | Validated Functional Prototype | RA.085 | RA | Requirements Analysis | 20 | EXEC | REI |

| ID | WBS | Task | Type | Duration | Start | Finish | Predecessors | Total slack | Work | Text1 | Text2 | Text6 | Text7 | Text8 | Text18 | Text12 |
| --- | --- | --- | --- | --- | --- | --- | --- | --- | --- | --- | --- | --- | --- | --- | --- | --- |
| 183 | B.ACT.PUTE | **Perform Unit Test - Elaboration** |  | 5.45d? | 2006-06-14 | 2006-06-22 |  | 0d |  |  |  |  |  |  |  |  |
| 184 | B.TE.020.1 | Develop Unit Test Scripts |  | 1d? | 2006-06-14 | 2006-06-15 | 178SS | 3.45d |  | Unit Test Scripts |  |  |  |  |  |  |
| 185 | B.TE.030.1 | Perform Unit Test |  | 1d? | 2006-06-21 | 2006-06-22 | 184, 178 | 0d |  | Unit-Tested Components |  |  |  |  |  |  |
| 186 | B.ACT.PITE | **Perform Integration Test - Elaboration** |  | 1d? | 2006-06-21 | 2006-06-22 |  | 0d |  |  |  |  |  |  |  |  |
| 187 | B.TE.040.1 | Perform Integration Test |  | 1d? | 2006-06-21 | 2006-06-22 | 178 | 0d |  | Integration-Tested Components |  |  |  |  |  |  |
| 188 | B.ACT.PPM | **Plan Performance Management** |  | 1.81d | 2006-05-31 | 2006-06-01 |  | 0d | 16.1h |  |  |  |  |  |  |  |
| 189 | B.PT.030 | Define Performance Testing Strategy |  | 14.49h | 2006-05-31 | 2006-06-01 |  | 0d | 16.1h | Performance Testing Strategy | PT.030 | PT | Performance Testing | 70 | EXEC |  |
| 190 | B.ACT.PACDE | **Prepare to Acquire and Convert Data - Elaboration** |  | 6.53d? | 2006-05-31 | 2006-06-08 |  | 0d | 70.45h |  |  |  |  |  |  |  |
| 191 | B.CV.040.1 | Design Conversion Components (Initial Load) |  | 42.27h | 2006-05-31 | 2006-06-07 |  | 0d | 70.45h | Conversion Component Designs (Initial Load) | CV.040 | CV | Data Conversion | 90 | EXEC | RADI |
| 192 | B.CV.055.1 | Implement Conversion Components (Initial Load) |  | 1d? | 2006-06-07 | 2006-06-08 | 191 | 0d |  | Conversion Components (Initial Load) |  |  |  |  |  |  |
| 193 | B.CV.060.1 | Perform Conversion Component Unit Test (Initial Load) |  | 1d? | 2006-06-07 | 2006-06-08 | 192SS+2.5% | 0d |  | Unit-Tested Conversion Components (Initial Load) |  |  |  |  |  |  |
| 194 | B.ACT.LCAR | **Lifecycle Architecture Milestone** |  | 0d | 2006-06-26 | 2006-06-26 |  | 0d |  |  |  |  |  |  |  |  |
| 195 | B.PMC.LCAR | Lifecycle Architecture Milestone | milestone | 0h | 2006-06-26 | 2006-06-26 | 146, 148, 149, 161, 168, 176, 182 | 0d |  | Lifecycle Architecture Milestone | PMC.LCAR |  |  | null | MGMT |  |
| 196 | C | **Construction** |  | 265.03h? | 2006-05-31 | 2006-07-17 |  | 0d | 1604.25h |  |  |  |  | null |  |  |
| 197 | C.ACT.FR | **Finalize Requirements** |  | 11.25d? | 2006-06-26 | 2006-07-12 |  | 0d | 146.92h |  |  |  |  |  |  |  |
| 198 | C.RD.045.3 | Prioritize Requirements (MoSCoW) |  | 1d? | 2006-06-26 | 2006-06-27 | 195 | 12.25d |  | MoSCoW List |  |  |  |  |  |  |
| 199 | C.RA.023.3 | Develop Use Case Model |  | 82.03h | 2006-06-26 | 2006-07-11 | 195 | 0d | 136.72h | Use Case Model | RA.023.3 | RA | Requirements Analysis | 20 | EXEC |  |
| 200 | C.RA.024.2 | Develop Use Case Details |  | 6.12h | 2006-07-04 | 2006-07-04 | 199FS-5% | 7.36d | 10.2h | Use Case Specification | RA.024.2 | RA | Requirements Analysis | 20 | EXEC |  |
| 201 | C.RA.025.3 | Identify Candidate Services |  | 1d? | 2006-07-11 | 2006-07-12 | 199 | 0d |  | Service Portfolio - Candidate Services |  |  |  |  |  |  |
| 202 | C.ACT.AC | **Analyze - Construction** |  | 33.13d? | 2006-05-31 | 2006-07-17 |  | 0d | 16.32h |  |  |  |  |  |  |  |
| 203 | C.AN.080.2 | Analyze Services |  | 1d? | 2006-07-12 | 2006-07-13 | 201 | 0d |  | Service Portfolio - Proposed Services |  |  |  |  |  |  |
| 204 | C.AN.085.2 | Define Service |  | 1d? | 2006-07-13 | 2006-07-14 | 203 | 0d |  | Service Definition |  |  |  |  |  |  |
| 205 | C.RA.026.2 | Populate Services Repository |  | 1d? | 2006-07-14 | 2006-07-17 | 204 | 0d |  | Populated Services Repository |  |  |  |  |  |  |
| 206 | C.AN.110.2 | Review Analysis Model |  | 4.9h | 2006-05-31 | 2006-05-31 |  | 0d | 16.32h | Reviewed Analysis Model | AN.050.2 | AN | Analysis | 30 | EXEC | RADI |

| ID | WBS | Task | Duration | Start | Finish | Predecessors | Total slack | Work | Text1 | Text2 | Text6 | Text7 | Text8 | Text18 | Text12 |
| --- | --- | --- | --- | --- | --- | --- | --- | --- | --- | --- | --- | --- | --- | --- | --- |
| 207 | C.ACT.DC | **Design - Construction** | 32.13d? | 2006-05-31 | 2006-07-14 |  | 0d | 43.73h |  |  |  |  |  |  |  |
| 208 | C.DS.040.2 | Develop Design Architecture Description | 26.23h | 2006-05-31 | 2006-06-05 |  | 28.85d | 43.73h | Architectural Design Description | DS.010.2 | DS | Design | 40 | EXEC |  |
| 209 | C.DS.120.2 | Design Services | 1d? | 2006-07-13 | 2006-07-14 | 203 | 0d |  | Service Design |  |  |  |  |  |  |
| 210 | C.ACT.PTP | **Perform Test Planning** | 1d? | 2006-06-26 | 2006-06-27 |  | 0d |  |  |  |  |  |  |  |  |
| 211 | C.TE.015.2 | Develop Integration Test Plan | 1d? | 2006-06-26 | 2006-06-27 | 195 | 0d |  | Integration Test Plan |  |  |  |  |  |  |
| 212 | C.ACT.PEC | **Prepare Environments - Construction** | 0.76d | 2006-06-26 | 2006-06-27 |  | 0d | 10.07h |  |  |  |  |  |  |  |
| 213 | C.CV.030.2 | Prepare Conversion Environment (Initial Load) | 6.04h | 2006-06-26 | 2006-06-27 | 195 | 0d | 10.07h | Conversion Environment (Initial Load) | CV.030 | CV | Data Conversion | 90 | EXEC | REI |
| 214 | C.ACT.IS | **Implement System** | 33.13d? | 2006-05-31 | 2006-07-17 |  | 0d | 773.09h |  |  |  |  |  |  |  |
| 215 | C.IM.050 | Implement Components | 209.19h | 2006-05-31 | 2006-07-06 |  | 0d | 522.97h | Implemented Components | IM.050 | IM | Implementation | 50 | EXEC |  |
| 216 | C.IM.053.2 | Register Services | 1d? | 2006-07-14 | 2006-07-17 | 209, 215 | 0d |  | Populated Services Registry |  |  |  |  |  |  |
| 217 | C.IM.060.2 | Perform Component Review | 25.02h | 2006-06-19 | 2006-06-22 | 215SS+5% | 0d | 125.06h | Component Review Results | IM.060 | IM | Implementation | 50 | EXEC |  |
| 218 | C.IM.070 | Assemble Components | 50.02h | 2006-06-19 | 2006-06-28 | 217SS+2.5% | 0d | 125.06h | Assembled Components | IM.070 | IM | Implementation | 50 | EXEC |  |
| 219 | C.ACT.PUTC | **Perform Unit Test - Construction** | 8.86d | 2006-06-26 | 2006-07-07 |  | 0d | 105.24h |  |  |  |  |  |  |  |
| 220 | C.TE.020.2 | Develop Unit Test Scripts | 13.3h | 2006-06-26 | 2006-06-28 | 195 | 0d | 16.62h | Unit Test Scripts | TE.020 | TE | Business System Testing | 60 | EXEC |  |
| 221 | C.TE.030.2 | Perform Unit Test | 70.9h | 2006-06-26 | 2006-07-07 | 220SS | 0d | 88.62h | Unit-Tested Components | TE.030 | TE | Business System Testing | 60 | EXEC |  |
| 222 | C.ACT.PITC | **Perform Integration Test - Construction** | 6.65d | 2006-05-31 | 2006-06-08 |  | 0d | 88.62h |  |  |  |  |  |  |  |
| 223 | C.TE.040.2 | Perform Integration Test | 53.17h | 2006-05-31 | 2006-06-08 |  | 0d | 88.62h | Integration-Tested Components | TE.040 | TE | Business System Testing | 60 | EXEC |  |
| 224 | C.ACT.PCO | **Prepare for Cutover** | 6.56d? | 2006-06-26 | 2006-07-05 |  | 0d | 58.3h |  |  |  |  |  |  |  |
| 225 | C.TS.020.2 | Define Cutover Strategy | 52.47h | 2006-06-26 | 2006-07-05 | 195 | 6.7d | 58.3h | Cutover Strategy | TS.010 | TS | Transition | 100 | EXEC |  |
| 226 | C.TS.030 | Develop Installation Plan | 1d? | 2006-06-26 | 2006-06-27 | 195 | 0d |  | Installation Plan |  |  |  |  |  |  |
| 227 | C.ACT.PACDC | **Prepare to Acquire and Convert Data - Construction** | 5.28d | 2006-05-31 | 2006-06-07 |  | 0d | 70.45h |  |  |  |  |  |  |  |
| 228 | C.CV.040.2 | Design Conversion Components (Initial Load) | 42.27h | 2006-05-31 | 2006-06-07 |  | 0d | 70.45h | Designed Data Conversion Components (Initial Load) | CV.040 | CV | Data Conversion | 90 | EXEC | RADI |
| 229 | C.ACT.ACDC | **Acquire and Convert Data - Construction** | 12.75d | 2006-06-07 | 2006-06-26 |  | 0d | 291.51h |  |  |  |  |  |  |  |
| 230 | C.CV.055.2 | Implement Conversion Components (Initial Load) | 102.03h | 2006-06-07 | 2006-06-26 | 228 | 0d | 204.06h | Implemented Conversion Components (Initial Load) | CV.050 | CV | Data Conversion | 90 | EXEC |  |
| 231 | C.CV.060.2 | Perform Conversion Component Unit Test (Initial Load) | 43.73h | 2006-06-12 | 2006-06-19 | 230SS+2.5% | 0d | 87.45h | Unit-Tested Conversion Components (Initial Load) | CV.060 | CV | Data Conversion | 90 | EXEC |  |

| ID | WBS | Task | Type | Duration | Start | Finish | Predecessors | Total slack | Work | Text1 | Text8 | Text2 | Text6 | Text7 | Text18 | Text3 |
| --- | --- | --- | --- | --- | --- | --- | --- | --- | --- | --- | --- | --- | --- | --- | --- | --- |
| 232 | C.ACT.IOCM | **Initial Operational Capability Milestone** |  | 1d? | 2006-07-14 | 2006-07-17 |  | 0d |  |  |  |  |  |  |  |  |
| 233 | C.PMC.IOCM | Initial Operational Capability Milestone | milestone | 1d? | 2006-07-14 | 2006-07-17 | 225, 198, 199, 200, 208, 209, 228 | 0d |  | Initial Operational Capability Milestone |  |  |  |  |  |  |
| 234 | D | **Transition** |  | 319.82h | 2006-07-17 | 2006-09-11 |  | 0d | 399.78h |  | null |  |  |  |  |  |
| 235 | D.ACT.GP | **Go Production** |  | 39.98d | 2006-07-17 | 2006-09-11 |  | 0d | 399.78h |  |  |  |  |  |  |  |
| 236 | D.TS.050 | Prepare Production Environment |  | 53.3h | 2006-07-17 | 2006-07-25 | 233 | 0d | 133.27h | Production Environment | 100 | TS.050 | TS | Transition | EXEC |  |
| 237 | D.TS.060 | Go Production |  | 266.52h | 2006-07-25 | 2006-09-11 | 236 | 0d | 266.52h | System in Production | 100 | TS.060 | TS | Transition | EXEC |  |
| 238 | D.ACT.SIP | **System in Production Milestone** |  | 0d | 2006-09-11 | 2006-09-11 |  | 0d |  |  |  |  |  |  |  |  |
| 239 | D.PMC.SIP | System in Production Milestone | milestone | 0h | 2006-09-11 | 2006-09-11 | 236, 237 | 0d |  | System in Production Milestone | null | PMC.SIP |  |  | MGMT |  |
| 240 | E | **Production** |  | 19.77h? | 2006-05-31 | 2006-06-02 |  | 0d | 24.71h |  | null |  |  |  |  |  |
| 241 | E.ACT.RPP | **Resolve Production Problems** |  | 2.47d | 2006-05-31 | 2006-06-02 |  | 0d | 24.71h |  |  |  |  |  |  |  |
| 242 | E.PS.060 | Monitor and Respond to System Problems |  | 19.77h | 2006-05-31 | 2006-06-02 |  | 0d | 24.71h | Problem Log | 110 | PS.060 | PS | Post System Support | EXEC |  |
| 243 | E.ACT.SO | **Sign-Off Milestone** |  | 1d? | 2006-05-31 | 2006-05-31 |  | 0d |  |  |  |  |  |  |  |  |
| 244 | E.PMC.SO | Sign-Off Milestone | milestone | 1d? | 2006-05-31 | 2006-05-31 |  | 0d |  | Sign-Off Milestone |  |  |  |  |  |  |
| 245 | PC | **Project Closure** |  | 16h? | 2006-06-01 | 2006-06-02 |  | 0d |  |  | null | PC |  |  |  |  |
| 246 | PC.ACT.GA | **Gain Acceptance** |  | 1d? | 2006-06-01 | 2006-06-01 | 244 | 0d |  |  | 190 | PMC.PCSUM1 | PMC | Project Management Control | MGMT | OG |
| 247 | PC.SM.050 | Gain Acceptance |  | 1d? | 2006-06-01 | 2006-06-01 |  | 0d |  | Final Acceptance Certificate |  |  |  |  |  |  |
| 248 | PC.ACT.CPC | **Close Processes and Contract** |  | 1d? | 2006-06-02 | 2006-06-02 | 246 | 0d |  | Closed Processes and Contract |  |  |  |  |  |  |
| 249 | PC.SM.060 | Close Scope Management |  | 1d? | 2006-06-02 | 2006-06-02 |  | 0d |  | Closed Scope Management |  |  |  |  |  |  |
| 250 | PC.SM.070 | Identify Future System Enhancements |  | 1d? | 2006-06-02 | 2006-06-02 |  | 0d |  | Future System Enhancements |  |  |  |  |  |  |
| 251 | PC.FM.050 | Close Project Financials |  | 1d? | 2006-06-02 | 2006-06-02 |  | 0d |  | Closed Project Financials |  |  |  |  |  |  |
| 252 | PC.WM.060 | Close Work Management |  | 1d? | 2006-06-02 | 2006-06-02 |  | 0d |  | Closed Work Management |  |  |  |  |  |  |
| 253 | PC.RKM.060 | Conduct Post-Production Risk Assessment |  | 1d? | 2006-06-02 | 2006-06-02 |  | 0d |  | Post-Production Risk Assessment |  |  |  |  |  |  |
| 254 | PC.IPM.050 | Produce Final Issue and Problem Report and Close Log(s) |  | 1d? | 2006-06-02 | 2006-06-02 |  | 0d |  | Closed Issue and Problem Log |  |  |  |  |  |  |
| 255 | PC.STM.070 | Release Staff |  | 1d? | 2006-06-02 | 2006-06-02 |  | 0d |  | Released Staff |  |  |  |  |  |  |
| 256 | PC.QM.060 | Conduct Post Production Quality Review |  | 1d? | 2006-06-02 | 2006-06-02 |  | 0d |  | Post-Production Quality Review |  |  |  |  |  |  |
| 257 | PC.CM.080 | Close Configuration Management |  | 1d? | 2006-06-02 | 2006-06-02 |  | 0d |  | Closed Configuration Management |  |  |  |  |  |  |
| 258 | PC.IFM.050 | Close Infrastructure |  | 1d? | 2006-06-02 | 2006-06-02 |  | 0d |  | Closed Infrastructure |  |  |  |  |  |  |
| 259 | PC.PCM.040 | Close Contract |  | 1d? | 2006-06-02 | 2006-06-02 |  | 0d |  | Closed Contract |  |  |  |  |  |  |
| 260 | PC.OCHM.040 | Establish Follow-Up Process |  | 1d? | 2006-06-02 | 2006-06-02 |  | 0d |  | Follow-Up Process |  |  |  |  |  |  |

| ID | WBS | Task | Duration | Start | Finish | Predecessors | Total slack | Text1 | Text2 | Text8 | Text3 | Text6 | Text7 | Text18 |
| --- | --- | --- | --- | --- | --- | --- | --- | --- | --- | --- | --- | --- | --- | --- |
| 261 | PC.ACT.DLLAP | **Document Lessons Learned and Archive Project** | 1d? | 2006-06-02 | 2006-06-02 | 246 | 0d |  |  |  |  |  |  |  |
| 262 | PC.CMM.040 | Document Lessons Learned | 1d? | 2006-06-02 | 2006-06-02 |  | 0d | Lessons Learned |  |  |  |  |  |  |
| 263 | PC.CMM.050 | Turn Over Project Documentation (Project Archives) | 1d? | 2006-06-02 | 2006-06-02 |  | 0d | Project Archives |  |  |  |  |  |  |
| 264 | PC.CMM.060 | Submit Final Reports | 1d? | 2006-06-02 | 2006-06-02 |  | 0d | Final Reports |  |  |  |  |  |  |
| 265 | PGM | **Program Management** | 8h? | 2006-05-31 | 2006-05-31 |  | 0d |  | PGM | null |  |  |  |  |
| 266 | PGM.ACT.PGM | **Perform PGM Program Management** | 1d? | 2006-05-31 | 2006-05-31 |  | 0d |  | PMC.PGMSUM | 190 | OG | PMC | Project Management Control | MGMT |
| 267 | PGM.PMC.PGMSUM1 | Perform Program Management Activities | 1d? | 2006-05-31 | 2006-05-31 |  | 0d | Program Management Activities |  |  |  |  |  |  |
