# WebCenter Project Workplan

Schedule from MS Project, 2006-05-31 to 2007-02-01.
Oracle Corp.
Copyright © 2006, 2016, Oracle and/or its affiliates. All rights reserved.

## Calendars

- Standard: Mon-Fri 08:00-12:00, 13:00-17:00; Sat-Sun off.

## Resources

| Resource | Group | Rate |
| --- | --- | --- |
| Offshore Onsite - Database Architect | Any | 10 |
| Offshore Onsite - Developer | Any | 10 |
| Offshore Onsite - J2EE Architect | Any | 10 |
| Offshore Onsite - Project Manager | Any | 10 |
| Offshore Onsite - System Architect | Any | 10 |
| Offshore Onsite - Team Leader | Any | 10 |
| Offshore Remote - Database Architect | Any | 10 |
| Offshore Remote - Database Designer | Any | 10 |
| Offshore Remote - Developer | Any | 10 |
| Offshore Remote - J2EE Architect | Any | 10 |
| Offshore Remote - J2EE Developer | Any | 10 |
| Offshore Remote - Project Manager | Any | 10 |
| Offshore Remote - System Architect | Any | 10 |
| Offshore Remote - Team Leader | Any | 10 |
| Offshore Remote - User Interface Designer | Any | 10 |
| Onsite - Business Analyst | Any | 10 |
| Onsite - Database Administrator | Any | 10 |
| Onsite - Database Architect | Any | 10 |
| Onsite - Database Designer | Any | 10 |
| Onsite - Developer | Any | 10 |
| Onsite - Facilitator | Any | 10 |
| Onsite - J2EE Architect | Any | 10 |
| Onsite - J2EE Developer | Any | 10 |
| Onsite - Lead Application Developer | Oracle | 10 |
| Onsite - Lead Quality Assurance | Any | 10 |
| Onsite - Lead Tester | Any | 10 |
| Onsite - Network Engineer | Oracle | 10 |
| Onsite - Object Designer | Any | 10 |
| Onsite - Oracle Executive Sponsor | Oracle | 10 |
| Onsite - Process Manager | Any | 10 |
| Onsite - Program Manager | Any | 10 |
| Onsite - Project Administrator | Oracle | 10 |
| Onsite - Project Manager | Any | 10 |
| Onsite - Quality Auditor | Any | 10 |
| Onsite - Quality Manager | Any | 10 |
| Onsite - Scribe | Any | 10 |
| Onsite - System Administrator | Any | 10 |
| Onsite - System Analyst | Any | 10 |
| Onsite - System Architect | Any | 10 |
| Onsite - System Integrator Architect | Any | 10 |
| Onsite - Team Leader | Any | 10 |
| Onsite - Tester | Any | 10 |
| Onsite - Tool Specialist | Oracle | 10 |

## Schedule

| ID | WBS | Task | Duration | Start | Finish | Predecessors | Total slack | Work | Text5 | Text8 | Text2 | Text6 | Text7 | Text18 | Text1 |
| --- | --- | --- | --- | --- | --- | --- | --- | --- | --- | --- | --- | --- | --- | --- | --- |
| 1 | OUM | **Oracle Unifed Method** | 176.56d? | 2006-05-31 | 2007-02-01 |  | 0d | 5783.09h | 31/05/2006 | null |  |  |  |  |  |
| 2 | ALL | **OUM - WebCenter Workplan** | 1412.52h? | 2006-05-31 | 2007-02-01 |  | 0d | 5783.09h |  | null |  |  |  |  |  |
| 3 | PS | **Project Start Up** | 5d? | 2006-05-31 | 2006-06-06 |  | 0d |  |  | null | PS |  |  |  |  |
| 4 | PS.ACT.RBC | **Review Bid and Contract** | 1d? | 2006-05-31 | 2006-05-31 |  | 0d |  |  | 190 | PMC.PSSUM1 | PMC | Project Management Control | MGMT |  |
| 5 | PS.BT.010 | Review and Analyze Bid Material | 1d? | 2006-05-31 | 2006-05-31 |  | 0d |  |  |  |  |  |  |  | Reviewed and Analyzed Bid Material |
| 6 | PS.BT.020 | Review and Confirm Business Case | 1d? | 2006-05-31 | 2006-05-31 |  | 0d |  |  |  |  |  |  |  | Confirmed Business Case |
| 7 | PS.BT.030 | Identify Project Stakeholders | 1d? | 2006-05-31 | 2006-05-31 |  | 0d |  |  |  |  |  |  |  | Identified Project Stakeholders |
| 8 | PS.BT.040 | Review and Accept Project Budget | 1d? | 2006-05-31 | 2006-05-31 |  | 0d |  |  |  |  |  |  |  | Accepted Project Budget |
| 9 | PS.RKM .020 | Conduct Baseline Risk Assessment | 1d? | 2006-05-31 | 2006-05-31 |  | 0d |  |  |  |  |  |  |  | Baseline Risk Assessment |
| 10 | PS.ACT.RPAC | **Review Project Assets with Customer** | 1d? | 2006-06-01 | 2006-06-01 | 4 | 0d |  |  |  |  |  |  |  |  |
| 11 | PS.BT.050 | Review Contract with Customer | 1d? | 2006-06-01 | 2006-06-01 |  | 0d |  |  |  |  |  |  |  | Reviewed Contract |
| 12 | PS.BT.060 | Review Project Approach with Customer | 1d? | 2006-06-01 | 2006-06-01 |  | 0d |  |  |  |  |  |  |  | Reviewed Project Approach |
| 13 | PS.BT.070 | Create Project Management Framework | 1d? | 2006-06-01 | 2006-06-01 |  | 0d |  |  |  |  |  |  |  | Project Management Framework |
| 14 | PS.ACT.VSSOS | **Validate Scope, Stakeholders and OCM Strategy** | 1d? | 2006-06-02 | 2006-06-02 | 10 | 0d |  |  |  |  |  |  |  |  |
| 15 | PS.SM.010 | Define and Confirm Scope | 1d? | 2006-06-02 | 2006-06-02 |  | 0d |  |  |  |  |  |  |  | Validated Scope |
| 16 | PS.CMM.010 | Conduct Project Stakeholder Analysis | 1d? | 2006-06-02 | 2006-06-02 |  | 0d |  |  |  |  |  |  |  | Project Stakeholder Analysis |
| 17 | PS.OCHM.010 | Understand Customer's Organizational Change Management Strategy | 1d? | 2006-06-02 | 2006-06-02 |  | 0d |  |  |  |  |  |  |  | Customer's Organizational Change Management Strategy |
| 18 | PS.ACT.DW | **Develop Workplan** | 1d? | 2006-06-05 | 2006-06-05 | 14 | 0d |  |  |  |  |  |  |  |  |
| 19 | PS.WM.010 | Develop Baseline Project Workplan | 1d? | 2006-06-05 | 2006-06-05 |  | 0d |  |  |  |  |  |  |  | Baseline Project Workplan |
| 20 | PS.ACT.DSPB | **Develop Staff Plan and Budget** | 1d? | 2006-06-05 | 2006-06-05 | 14 | 0d |  |  |  |  |  |  |  |  |
| 21 | PS.FM.010 | Refine Project Budget | 1d? | 2006-06-05 | 2006-06-05 |  | 0d |  |  |  |  |  |  |  | Approved Project Budget |
| 22 | PS.STM.010 | Plan Resource Requirements | 1d? | 2006-06-05 | 2006-06-05 |  | 0d |  |  |  |  |  |  |  | Resource Plan |
| 23 | PS.STM.030 | Staff Project | 1d? | 2006-06-05 | 2006-06-05 |  | 0d |  |  |  |  |  |  |  | Staffed Project |
| 24 | PS.STM.040 | Prepare Orientation Guide(s) | 1d? | 2006-06-05 | 2006-06-05 |  | 0d |  |  |  |  |  |  |  | Orientation Guide |

| ID | WBS | Task | Duration | Start | Finish | Predecessors | Total slack | Text1 |
| --- | --- | --- | --- | --- | --- | --- | --- | --- |
| 25 | PS.ACT.CPMP | **Complete Project Management Plan** | 1d? | 2006-06-06 | 2006-06-06 | 18, 20 | 0d |  |
| 26 | PS.SM.020 | Develop Scope Change Management Processes | 1d? | 2006-06-06 | 2006-06-06 |  | 0d | Scope Change Management Procedures |
| 27 | PS.FM.020 | Develop Financial Management Plan | 1d? | 2006-06-06 | 2006-06-06 |  | 0d | Financial Management Plan |
| 28 | PS.WM.020 | Develop Work Management Execution and Control Processes and Policies | 1d? | 2006-06-06 | 2006-06-06 |  | 0d | Work Management Plan |
| 29 | PS.RKM.010 | Develop Risk Management Plan | 1d? | 2006-06-06 | 2006-06-06 |  | 0d | Risk Management Plan |
| 30 | PS.IPM.010 | Develop Issue Management Strategy | 1d? | 2006-06-06 | 2006-06-06 |  | 0d | Issue Management Strategy |
| 31 | PS.IPM.020 | Develop Problem Management Strategy | 1d? | 2006-06-06 | 2006-06-06 |  | 0d | Problem Management Strategy |
| 32 | PS.STM.020 | Develop Staff Management Plan | 1d? | 2006-06-06 | 2006-06-06 |  | 0d | Staff Management Plan |
| 33 | PS.CMM.020 | Develop Project Team Communication Plan | 1d? | 2006-06-06 | 2006-06-06 |  | 0d | Project Team Communication Plan |
| 34 | PS.QM.010 | Develop Quality Management Plan | 1d? | 2006-06-06 | 2006-06-06 |  | 0d | Quality Management Plan |
| 35 | PS.QM.020 | Develop and Document Quality Control and Reporting Process | 1d? | 2006-06-06 | 2006-06-06 |  | 0d | Quality Control and Reporting Process |
| 36 | PS.CM.010 | Develop Configuration Management Strategy and Processes | 1d? | 2006-06-06 | 2006-06-06 |  | 0d | Configuration Management Plan and Processes |
| 37 | PS.CM.030 | Create Project Documentation Management Plan | 1d? | 2006-06-06 | 2006-06-06 |  | 0d | Documentation Management Plan |
| 38 | PS.IFM.010 | Develop Infrastructure Management Plan | 1d? | 2006-06-06 | 2006-06-06 |  | 0d | Infrastructure Management Plan |
| 39 | PS.PCM.010 | Develop Procurement Strategy and Process | 1d? | 2006-06-06 | 2006-06-06 |  | 0d | Procurement Strategy and Process |
| 40 | PS.OCHM.020 | Identify Change Management Warning Signs | 1d? | 2006-06-06 | 2006-06-06 |  | 0d | Change Management Warning Signs |
| 41 | PS.ACT.EPI | **Establish Project Infrastructure** | 1d? | 2006-06-06 | 2006-06-06 | 18, 20 | 0d |  |
| 42 | PS.FM.030 | Set Up Time and Expense Tracking | 1d? | 2006-06-06 | 2006-06-06 |  | 0d | Time and Expense Tracking |
| 43 | PS.RKM.030 | Develop Risk Management System | 1d? | 2006-06-06 | 2006-06-06 |  | 0d | Risk Management System |
| 44 | PS.IPM.030 | Develop Issue and Problem Management System | 1d? | 2006-06-06 | 2006-06-06 |  | 0d | Issue and Problem Management System |
| 45 | PS.CM.020 | Obtain Configuration Management Tools | 1d? | 2006-06-06 | 2006-06-06 |  | 0d | Configuration Management Plan |
| 46 | PS.IFM.020 | Establish Team Work Environment | 1d? | 2006-06-06 | 2006-06-06 |  | 0d | Team Work Environment |
| 47 | PS.IFM.030 | Establish Technical Infrastructure | 1d? | 2006-06-06 | 2006-06-06 |  | 0d | Established Technical Infrastructure |
| 48 | PS.PCM.020 | Procure Goods and Contracted Services | 1d? | 2006-06-06 | 2006-06-06 |  | 0d | Service Orders |

| ID | WBS | Task | Duration | Start | Finish | Predecessors | Total slack | Text2 | Text8 | Text1 |
| --- | --- | --- | --- | --- | --- | --- | --- | --- | --- | --- |
| 49 | PEC | **Project Execution and Control** | 1d? | 2006-06-07 | 2006-06-07 |  | 0d | PEC | null |  |
| 50 | PEC.ACT.MSAA | **Manage Scope, Acceptance and Approvals** | 1d? | 2006-06-07 | 2006-06-07 | 41 | 0d |  |  |  |
| 51 | PEC.SM.030 | Manage Scope | 1d? | 2006-06-07 | 2006-06-07 |  | 0d |  |  | Managed Scope |
| 52 | PEC.SM.040 | Manage Acceptance | 1d? | 2006-06-07 | 2006-06-07 |  | 0d |  |  | Managed Acceptance |
| 53 | PEC.WM.050 | Manage Approvals | 1d? | 2006-06-07 | 2006-06-07 |  | 0d |  |  | Managed Approvals |
| 54 | PEC.ACT.MPF | **Manage Project Finances** | 1d? | 2006-06-07 | 2006-06-07 | 41 | 0d |  |  |  |
| 55 | PEC.FM.040 | Manage Project Financials | 1d? | 2006-06-07 | 2006-06-07 |  | 0d |  |  | Managed Project Finances |
| 56 | PEC.ACT.MPW | **Manage Project Workplan** | 1d? | 2006-06-07 | 2006-06-07 | 41 | 0d |  |  |  |
| 57 | PEC.WM.030 | Manage Project Workplan | 1d? | 2006-06-07 | 2006-06-07 |  | 0d |  |  | Project Workplan |
| 58 | PEC.WM.040 | Track Schedule Performance | 1d? | 2006-06-07 | 2006-06-07 |  | 0d |  |  | Scheduled Performance |
| 59 | PEC.ACT.MRIP | **Manage Risks, Issues and Problems** | 1d? | 2006-06-07 | 2006-06-07 | 41 | 0d |  |  |  |
| 60 | PEC.RKM.040 | Manage Risk | 1d? | 2006-06-07 | 2006-06-07 |  | 0d |  |  | Managed Risk |
| 61 | PEC.RKM.050 | Monitor and Control Risk | 1d? | 2006-06-07 | 2006-06-07 |  | 0d |  |  | Assessed Risk |
| 62 | PEC.IPM.040 | Manage Issues and Problems | 1d? | 2006-06-07 | 2006-06-07 |  | 0d |  |  | Managed Issues and Problems |
| 63 | PEC.ACT.OMT | **Orient and Manage Team** | 1d? | 2006-06-07 | 2006-06-07 | 41 | 0d |  |  |  |
| 64 | PEC.QM.030 | Conduct Project Team Quality Management Orientation | 1d? | 2006-06-07 | 2006-06-07 |  | 0d |  |  | Project Team Quality Management Orientation |
| 65 | PEC.STM.050 | Conduct Team Orientation(s) | 1d? | 2006-06-07 | 2006-06-07 |  | 0d |  |  | Oriented Team |
| 66 | PEC.STM.060 | Manage Project Team | 1d? | 2006-06-07 | 2006-06-07 |  | 0d |  |  | Managed Project Team |
| 67 | PEC.ACT.MCOP | **Manage Communications and OCM Plans** | 1d? | 2006-06-07 | 2006-06-07 | 41 | 0d |  |  |  |
| 68 | PEC.CMM.030 | Manage Project Team Communication | 1d? | 2006-06-07 | 2006-06-07 |  | 0d |  |  | Managed Project Team Communication |
| 69 | PEC.OCHM.030 | Execute Change and Communication Plan | 1d? | 2006-06-07 | 2006-06-07 |  | 0d |  |  | Executed Change and Communication Plan |
| 70 | PEC.ACT.MPQ | **Manage Project Quality** | 1d? | 2006-06-07 | 2006-06-07 | 41 | 0d |  |  |  |
| 71 | PEC.QM.040 | Manage Quality Control | 1d? | 2006-06-07 | 2006-06-07 |  | 0d |  |  | Quality Control |
| 72 | PEC.QM.050 | Perform Quality Assurance | 1d? | 2006-06-07 | 2006-06-07 |  | 0d |  |  | Managed Quality Assurance |

| ID | WBS | Task | Duration | Start | Finish | Predecessors | Total slack | Work | Text1 | Text8 | Text2 | Text12 | Text18 | Text6 | Text7 | Text3 |
| --- | --- | --- | --- | --- | --- | --- | --- | --- | --- | --- | --- | --- | --- | --- | --- | --- |
| 73 | PEC.ACT.CECRM | **Create and Execute Configuration and Release Management** | 1d? | 2006-06-07 | 2006-06-07 | 41 | 0d |  |  |  |  |  |  |  |  |  |
| 74 | PEC.CM.040 | Create and Execute Software Configuration Management Plan | 1d? | 2006-06-07 | 2006-06-07 |  | 0d |  | Software Configuration Management Plan |  |  |  |  |  |  |  |
| 75 | PEC.CM.050 | Create and Execute Software Release Management Plan | 1d? | 2006-06-07 | 2006-06-07 |  | 0d |  | Software Release Management Plan |  |  |  |  |  |  |  |
| 76 | PEC.CM.060 | Create and Execute Environment and Patch Management Plan | 1d? | 2006-06-07 | 2006-06-07 |  | 0d |  | Environment and Patch Management Plan |  |  |  |  |  |  |  |
| 77 | PEC.CM.070 | Create and Execute Configuration Management Control Plan | 1d? | 2006-06-07 | 2006-06-07 |  | 0d |  | Configuration Management Control Plan |  |  |  |  |  |  |  |
| 78 | PEC.ACT.MMI | **Manage and Maintain Infrastructure** | 1d? | 2006-06-07 | 2006-06-07 | 41 | 0d |  |  |  |  |  |  |  |  |  |
| 79 | PEC.IFM.040 | Manage and Maintain Infrastructure | 1d? | 2006-06-07 | 2006-06-07 |  | 0d |  | Maintained Infrastructure |  |  |  |  |  |  |  |
| 80 | PEC.ACT.APGCS | **Administer Procurement of Goods and Contracted Services** | 1d? | 2006-06-07 | 2006-06-07 | 41 | 0d |  |  |  |  |  |  |  |  |  |
| 81 | PEC.PCM.030 | Administer Procurement of Goods and Contracted Services | 1d? | 2006-06-07 | 2006-06-07 |  | 0d |  | Managed Procurement of Goods and Services |  |  |  |  |  |  |  |
| 82 | A | **Inception** | 93.29h? | 2006-06-07 | 2006-06-22 |  | 0d | 332.4h |  | null |  |  |  |  |  |  |
| 83 | A.ACT.GBRI | **Gather Business Requirements - Inception** | 6.19d? | 2006-06-08 | 2006-06-16 | 25, 116 | 0d | 137.21h |  | null | PMC.BBRSI | BRSI | MGMT |  |  |  |
| 84 | A.RD.001 | Detail Business and System Objectives | 14.57h | 2006-06-08 | 2006-06-09 |  | 4.37d | 24.29h | Business and System Objectives | 10 | RD.001 | BRSI | EXEC | RD | Business Requirements Definition |  |
| 85 | A.RD.005 | Create System Context Diagram | 3.64h | 2006-06-08 | 2006-06-08 |  | 5.74d | 6.07h | System Context Diagram | 10 | RD.005 | BRSI | EXEC | RD | Business Requirements Definition |  |
| 86 | A.RD.011.1 | Develop Future Process Model | 3.64h | 2006-06-08 | 2006-06-08 |  | 5.74d | 6.07h | Future Process Model | 10 | RD.011 | BRSI | EXEC | RD | Business Requirements Definition |  |
| 87 | A.RD.020 | Obtain High-Level Business Descriptions | 3.64h | 2006-06-08 | 2006-06-08 |  | 5.74d | 6.07h | High-Level Business Descriptions | 10 | RD.020 | BRSI | EXEC | RD | Business Requirements Definition |  |
| 88 | A.RA.015 | Develop Business Use Case Model | 49.55h | 2006-06-08 | 2006-06-16 |  | 0d | 82.58h | Business Use Case Model | 20 | RA.015 | BSI | EXEC | RA | Requirements Analysis |  |
| 89 | A.RD.065 | Develop Domain Model (Business Entities) | 3.64h | 2006-06-08 | 2006-06-08 |  | 5.74d | 6.07h | Domain Model | 10 | RD.065 | BRSI | EXEC | RD | Business Requirements Definition |  |
| 90 | A.RD.012 | Document Present and Future Organization Structures | 3.64h | 2006-06-08 | 2006-06-08 |  | 5.74d | 6.07h | Present and Future Organization Structures | 10 | RD.012 | BRSI | EXEC | RD | Business Requirements Definition |  |
| 91 | A.RD.015 | Determine KPI Collection and Reporting Strategy | 1d? | 2006-06-08 | 2006-06-08 |  | 5.19d |  | Key Business Strategies and Objectives |  |  |  |  |  |  |  |
| 92 | A.ACT.ECBB | **Establish Current Business Baseline** | 1d? | 2006-06-16 | 2006-06-19 | 83 | 0d |  |  |  |  |  |  |  |  |  |
| 93 | A.RD.030 | Develop Current Business Process Model | 1d? | 2006-06-16 | 2006-06-19 |  | 0d |  | Current Process Model |  |  |  |  |  |  |  |
| 94 | A.RD.034 | Document Current Business Baseline Metrics | 1d? | 2006-06-16 | 2006-06-19 |  | 0d |  | Current Business Baseline Metrics |  |  |  |  |  |  |  |
| 95 | A.ACT.GR | **Gather Solution Requirements** | 2.21d? | 2006-06-16 | 2006-06-20 | 83 | 0d | 65.94h |  |  |  |  |  |  |  |  |
| 96 | A.RD.042.1 | Develop Glossary | 6.07h | 2006-06-16 | 2006-06-16 |  | 1.45d | 6.07h | Glossary | 10 | RD.042.1 | BRSI | EXEC | RD | Business Requirements Definition | OG |
| 97 | A.RD.045.1 | Prioritize Requirements (MoSCoW) | 7.29h | 2006-06-16 | 2006-06-19 |  | 1.3d | 12.15h | MoSCoW List | 10 | RD.045 | BRSI | EXEC | RD | Business Requirements Definition | OG |
| 98 | A.RD.055 | Detail Supplemental Requirements | 2.43h | 2006-06-16 | 2006-06-16 |  | 1.91d | 6.07h | Supplemental Requirements | 10 | RD.055 | BRSI | EXEC | RD | Business Requirements Definition |  |
| 99 | A.RD.130.1 | Develop Baseline Architecture Description | 7.29h | 2006-06-16 | 2006-06-19 |  | 1.3d | 12.15h | Architecture Description | 10 | RD.130.1 | BSI | EXEC | RD | Business Requirements Definition |  |
| 100 | A.RA.019 | Define Project Reference Architecture | 1d? | 2006-06-16 | 2006-06-19 |  | 1.21d |  | Project Reference Architecture |  |  |  |  |  |  |  |
| 101 | A.RA.023.1 | Develop Use Case Model | 17.7h | 2006-06-16 | 2006-06-20 |  | 0d | 29.5h | Use Case Model | 20 | RA.023.1 | REI | EXEC | RA | Requirements Analysis |  |
| 102 | A.RA.027.1 | Identify Candidate Business Rules | 1d? | 2006-06-16 | 2006-06-19 |  | 1.21d |  | Candidate Business Rules |  |  |  |  |  |  |  |

| ID | WBS | Task | Type | Duration | Start | Finish | Predecessors | Total slack | Work | Text1 | Text2 | Text6 | Text7 | Text8 | Text12 | Text18 |
| --- | --- | --- | --- | --- | --- | --- | --- | --- | --- | --- | --- | --- | --- | --- | --- | --- |
| 103 | A.ACT.CR | **Consolidate Solution Requirements** |  | 0.3d | 2006-06-20 | 2006-06-20 | 95 | 1.95d | 15.79h |  |  |  |  |  |  |  |
| 104 | A.RD.140.1 | Create Requirements Specification |  | 1.46h | 2006-06-20 | 2006-06-20 |  | 2.07d | 3.64h | Requirements Specification | RD.140.1 | RD | Business Requirements Definition | 10 | BRSI | EXEC |
| 105 | A.RD.150.1 | Review Requirements Specification |  | 2.43h | 2006-06-20 | 2006-06-20 |  | 1.95d | 12.15h | Reviewed Requirements Specification | RD.150.1 | RD | Business Requirements Definition | 10 |  | EXEC |
| 106 | A.ACT.CCPI | **Create Conceptual Prototype - Inception** |  | 1.56d | 2006-06-20 | 2006-06-21 | 95 | 0d | 37.12h |  |  |  |  |  |  |  |
| 107 | A.IM.005.1 | Develop Conceptual Prototype |  | 12.49h | 2006-06-20 | 2006-06-21 |  | 0d | 31.22h | Conceptual Prototype | IM.005 | IM | Implementation | 50 | BSI | EXEC |
| 108 | A.RA.030.1 | Validate Conceptual Prototype |  | 2.36h | 2006-06-20 | 2006-06-20 |  | 0d | 5.9h | Validated Conceptual Prototype | RA.030 | RA | Requirements Analysis | 20 |  | EXEC |
| 109 | A.ACT.GSP | **Gather Supporting Requirements** |  | 2.25d? | 2006-06-20 | 2006-06-22 | 83, 95 | 0d | 76.34h |  |  |  |  |  |  |  |
| 110 | A.CV.010 | Define Data Acquisition and Conversion Requirements |  | 11.1h | 2006-06-20 | 2006-06-21 |  | 0.87d | 13.88h | Data Acquisition and Conversion Requirements | CV.010 | CV | Data Conversion | 90 | BSI | EXEC |
| 111 | A.TE.005.1 | Determine Testing Requirements |  | 11.1h | 2006-06-20 | 2006-06-21 |  | 0.87d | 13.88h | Testing Requirements | TE.005 | TE | Business System Testing | 60 | BSI | EXEC |
| 112 | A.PT.010 | Conduct Performance Management Workshop |  | 18.04h | 2006-06-20 | 2006-06-22 |  | 0d | 27.76h | Performance Management Workshop Results | PT.010 | PT | Performance Testing | 70 |  | EXEC |
| 113 | A.TA.010 | Conduct Technical Architecture Workshop |  | 12.49h | 2006-06-20 | 2006-06-21 |  | 0.69d | 20.82h | Technical Architecture Workshop Results | TA.010 | TA | Application and Technical Architecture | 80 |  | EXEC |
| 114 | A.DO.010 | Define Documentation Requirements and Strategy |  | 1d? | 2006-06-20 | 2006-06-21 |  | 1.25d |  | Documentation Requirements and Strategy |  |  |  |  |  |  |
| 115 | A.RD.070 | Determine Audit and Control Requirements |  | 1d? | 2006-06-20 | 2006-06-21 |  | 1.25d |  | Audit And Control Requirements |  |  |  |  |  |  |
| 116 | A.ACT.TPT | **Train Project Team** |  | 1d? | 2006-06-07 | 2006-06-07 | 25 | 0d |  |  |  |  |  |  |  |  |
| 117 | A.TR.010.1 | Define Training Strategy |  | 1d? | 2006-06-07 | 2006-06-07 |  | 0d |  | Education and Training Strategy |  |  |  |  |  |  |
| 118 | A.TR.020 | Prepare Project Team Learning Plan |  | 1d? | 2006-06-07 | 2006-06-07 |  | 0d |  | Project Team Learning Plan |  |  |  |  |  |  |
| 119 | A.TR.030 | Prepare Project Team Learning Environment |  | 1d? | 2006-06-07 | 2006-06-07 |  | 0d |  | Project Team Learning Environment |  |  |  |  |  |  |
| 120 | A.TR.040 | Develop Project Team Learningware |  | 1d? | 2006-06-07 | 2006-06-07 |  | 0d |  | Project Team Learningware |  |  |  |  |  |  |
| 121 | A.TR.050 | Conduct Project Team Learning Events |  | 1d? | 2006-06-07 | 2006-06-07 |  | 0d |  | Skilled Project Team |  |  |  |  |  |  |
| 122 | A.ACT.LCOB | **Lifecycle Objective Milestone** |  | 0d | 2006-06-22 | 2006-06-22 | 83, 95, 103, 109, 116 | 0d |  |  |  |  |  |  |  |  |
| 123 | A.PMC.LCOB | Lifecycle Objective Milestone | milestone | 0h | 2006-06-22 | 2006-06-22 |  | 0d |  | Lifecycle Objective Milestone | PMC.LCOB |  |  | null |  | MGMT |
| 124 | B | **Elaboration** |  | 346.02h? | 2006-06-22 | 2006-08-22 |  | 0d | 1756.15h |  |  |  |  | null |  |  |
| 125 | B.ACT.DPS | **Define Project Strategy** |  | 2.82d? | 2006-06-22 | 2006-06-27 | 122 | 0d | 42.67h |  |  |  |  |  |  |  |
| 126 | B.TE.005.2 | Determine Testing Requirements |  | 1d? | 2006-06-22 | 2006-06-23 |  | 1.82d |  | Testing Requirements |  |  |  |  |  |  |
| 127 | B.TE.010 | Develop Testing Strategy |  | 22.54h | 2006-06-22 | 2006-06-27 |  | 0d | 22.53h | Testing Strategy | TE.010 | TE | Business System Testing | 60 | REI | EXEC |
| 128 | B.CV.020 | Define Data Acquisition, Conversion and Data Quality Strategy |  | 8.05h | 2006-06-22 | 2006-06-23 |  | 1.81d | 20.13h | Data Acquisition, Conversion and Data Quality Strategy | CV.020 | CV | Data Conversion | 90 | REI | EXEC |
| 129 | B.DO.020 | Define Documentation Standards and Procedures |  | 1d? | 2006-06-22 | 2006-06-23 |  | 1.82d |  | Documentation Standards and Procedures |  |  |  |  |  |  |
| 130 | B.TR.010.2 | Define Training Strategy |  | 1d? | 2006-06-22 | 2006-06-23 |  | 1.82d |  | Education and Training Strategy |  |  |  |  |  |  |
| 131 | B.TS.020.1 | Define Cutover Strategy |  | 1d? | 2006-06-22 | 2006-06-23 |  | 1.82d |  | Cutover Strategy |  |  |  |  |  |  |

| ID | WBS | Task | Duration | Start | Finish | Predecessors | Total slack | Free slack | Work | Text1 | Text2 | Text6 | Text7 | Text8 | Text18 | Text12 |
| --- | --- | --- | --- | --- | --- | --- | --- | --- | --- | --- | --- | --- | --- | --- | --- | --- |
| 132 | B.ACT.DI | **Define Infrastructure** | 8.49d | 2006-06-22 | 2006-07-05 | 122 | 16.91d | 0d | 301.92h |  |  |  |  |  |  |  |
| 133 | B.TA.020 | Define Technical Architecture Requirements and Strategy | 25.06h | 2006-06-22 | 2006-06-27 |  | 22.27d |  | 30.18h | Technical Architecture Requirements and Strategy | TA.020 | TA | Application and Technical Architecture | 80 | EXEC |  |
| 134 | B.TA.030 | Define Integration Requirements and Strategy | 36.23h | 2006-06-22 | 2006-06-29 |  | 20.88d |  | 45.28h | Integration Architecture Strategy | TA.030 | TA | Application and Technical Architecture | 80 | EXEC |  |
| 135 | B.TA.040 | Define Reporting and Information Access Strategy | 24.15h | 2006-06-22 | 2006-06-27 |  | 22.39d |  | 30.18h | Reporting and Information Access Strategy | TA.040 | TA | Application and Technical Architecture | 80 | EXEC |  |
| 136 | B.TA.050 | Define Disaster Recovery Strategy | 12.08h | 2006-06-22 | 2006-06-26 |  | 23.89d |  | 15.1h | Disaster Recovery Strategy | TA.050 | TA | Application and Technical Architecture | 80 | EXEC |  |
| 137 | B.TA.060 | Define System Operations and Management Strategy | 25.66h | 2006-06-22 | 2006-06-27 |  | 22.2d |  | 30.2h | System Operations and Management Strategy | TA.060 | TA | Application and Technical Architecture | 80 | EXEC |  |
| 138 | B.TA.070 | Define Initial Architecture and Application Mapping | 27.17h | 2006-06-22 | 2006-06-28 |  | 22.01d |  | 30.18h | Initial Architecture and Application Mapping | TA.070 | TA | Application and Technical Architecture | 80 | EXEC |  |
| 139 | B.TA.080 | Define Backup and Recovery Strategy | 67.93h | 2006-06-22 | 2006-07-05 |  | 16.91d |  | 75.48h | Backup and Recovery Strategy | TA.080 | TA | Application and Technical Architecture | 80 | EXEC |  |
| 140 | B.TA.090 | Develop Security and Control Strategy | 36.23h | 2006-06-22 | 2006-06-29 |  | 20.88d |  | 45.3h | Security and Control Strategy | TA.090 | TA | Application and Technical Architecture | 80 | EXEC |  |
| 141 | B.ACT.PEE | **Prepare Environments - Elaboration** | 1.94d? | 2006-07-05 | 2006-07-07 | 122, 132 | 16.91d |  | 41.07h |  |  |  |  |  |  |  |
| 142 | B.IM.007.1 | Prepare Development Environment | 1d? | 2006-07-05 | 2006-07-06 |  | 17.85d |  |  | Development Environment |  |  |  |  |  |  |
| 143 | B.TE.018.1 | Prepare Static Test Data | 15.5h | 2006-07-05 | 2006-07-07 |  | 16.91d |  | 31h | Static Test Data | TE.018 | TE | Business System Testing | 60 | EXEC |  |
| 144 | B.TE.038.1 | Prepare Integration Test Environment | 1d? | 2006-07-05 | 2006-07-06 |  | 17.85d |  |  | Integration Test Environment |  |  |  |  |  |  |
| 145 | B.TE.060.1 | Prepare System Test Environment | 1d? | 2006-07-05 | 2006-07-06 |  | 17.85d |  |  | System Test Environment |  |  |  |  |  |  |
| 146 | B.CV.030.1 | Prepare Conversion Environment (Initial Load) | 6.04h | 2006-07-05 | 2006-07-05 |  | 18.09d |  | 10.07h | Conversion Environment (Initial Load) | CV.030 | CV | Data Conversion | 90 | EXEC | REI |
| 147 | B.ACT.GBRE | **Gather Business Requirements - Elaboration** | 1d? | 2006-06-22 | 2006-06-23 | 122 | 1d |  |  |  |  |  |  |  |  |  |
| 148 | B.RD.011.2 | Develop Future Process Model | 1d? | 2006-06-22 | 2006-06-23 |  | 1d |  |  | Future Process Model |  |  |  |  |  |  |
| 149 | B.RA.055.1 | Document Business Procedures | 1d? | 2006-06-22 | 2006-06-23 |  | 1d |  |  | Business Procedure Documentation |  |  |  |  |  |  |
| 150 | B.MC.030 | Map Business Requirements | 1d? | 2006-06-22 | 2006-06-23 |  | 1d |  |  | Mapped Business Requirements |  |  |  |  |  |  |
| 151 | B.ACT.DTP | **Develop Test Plans** | 1.41d? | 2006-06-27 | 2006-06-28 | 125 | 0d |  | 11.27h |  |  |  |  |  |  |  |
| 152 | B.TE.015.1 | Develop Integration Test Plan | 11.27h | 2006-06-27 | 2006-06-28 |  | 0d |  | 11.27h | Integration Test Plan | TE.015 | TE | Business System Testing | 60 | EXEC | REI |
| 153 | B.TE.050.1 | Develop System Test Plan | 1d? | 2006-06-27 | 2006-06-28 |  | 0d |  |  | System Test Plan |  |  |  |  |  |  |
| 154 | B.TE.080 | Develop Systems Integration Test Plan | 1d? | 2006-06-27 | 2006-06-28 |  | 0d |  |  | Systems Integration Test Plan |  |  |  |  |  |  |
| 155 | B.ACT.SSC | **Specify Software Configuration** | 1d? | 2006-06-22 | 2006-06-23 | 122 | 0d |  |  |  |  |  |  |  |  |  |
| 156 | B.MC.040 | Gather Setup Information | 1d? | 2006-06-22 | 2006-06-23 |  | 0d |  |  | Setup Information |  |  |  |  |  |  |
| 157 | B.MC.050.1 | Define Application Setups | 1d? | 2006-06-22 | 2006-06-23 |  | 0d |  |  | Application Setup Documents |  |  |  |  |  |  |
| 158 | B.MC.060 | Document Functional Security | 1d? | 2006-06-22 | 2006-06-23 |  | 0d |  |  | Functional Security Setup Information |  |  |  |  |  |  |

| ID | WBS | Task | Duration | Start | Finish | Predecessors | Total slack | Work | Text1 | Text2 | Text6 | Text7 | Text8 | Text18 | Text12 | Text3 |
| --- | --- | --- | --- | --- | --- | --- | --- | --- | --- | --- | --- | --- | --- | --- | --- | --- |
| 159 | B.ACT.PVC | **Prototype and Validate Configuration** | 1d? | 2006-06-23 | 2006-06-26 | 155 | 0d |  |  |  |  |  |  |  |  |  |
| 160 | B.TE.025.1 | Create System Test Scenarios | 1d? | 2006-06-23 | 2006-06-26 |  | 0d |  | System Test Scenarios |  |  |  |  |  |  |  |
| 161 | B.MC.070 | Prepare Configuration Prototype Environment | 1d? | 2006-06-23 | 2006-06-26 |  | 0d |  | Configuration Prototype Environment |  |  |  |  |  |  |  |
| 162 | B.MC.080 | Conduct Configuration Prototyping Workshop | 1d? | 2006-06-23 | 2006-06-26 |  | 0d |  | Validated Configuration |  |  |  |  |  |  |  |
| 163 | B.MC.090.2 | Conduct Reporting Fit Analysis | 1d? | 2006-06-23 | 2006-06-26 |  | 0d |  | Reporting Fit Analysis |  |  |  |  |  |  |  |
| 164 | B.ACT.PGA | **Perform Gap Analysis** | 1d? | 2006-06-26 | 2006-06-27 | 147, 159 | 0d |  |  |  |  |  |  |  |  |  |
| 165 | B.MC.100 | Define and Estimate Application Extensions | 1d? | 2006-06-26 | 2006-06-27 |  | 0d |  | Application Extension Definition and Estimates |  |  |  |  |  |  |  |
| 166 | B.MC.110 | Define Gap Resolutions | 1d? | 2006-06-26 | 2006-06-27 |  | 0d |  | Gap Resolutions |  |  |  |  |  |  |  |
| 167 | B.ACT.DUCM | **Develop Use Case Model** | 3.02d | 2006-06-27 | 2006-06-30 | 147, 164 | 0d | 40.26h |  |  |  |  |  |  |  |  |
| 168 | B.RA.023.2 | Develop Use Case Model | 24.16h | 2006-06-27 | 2006-06-30 |  | 0d | 40.26h | Use Case Model | RA.023.2 | RA | Requirements Analysis | 20 | EXEC |  |  |
| 169 | B.ACT.CCPE | **Create Conceptual Prototype - Elaboration** | 1.56d | 2006-06-30 | 2006-07-04 | 167 | 0d | 37.12h |  |  |  |  |  |  |  |  |
| 170 | B.IM.005.2 | Develop Conceptual Prototype | 12.49h | 2006-06-30 | 2006-07-04 |  | 0d | 31.22h | Conceptual Prototype | IM.005 | IM | Implementation | 50 | EXEC | BSI |  |
| 171 | B.RA.030.2 | Validate Conceptual Prototype | 2.36h | 2006-06-30 | 2006-06-30 |  | 0d | 5.9h | Validated Conceptual Prototype | RA.030 | RA | Requirements Analysis | 20 | EXEC |  |  |
| 172 | B.ACT.CS | **Consolidate Specification** | 3.68d? | 2006-06-30 | 2006-07-06 | 147, 167 | 0d | 120.77h |  | PMC.BREI |  |  | null | MGMT | REI |  |
| 173 | B.RD.042.2 | Develop Glossary | 16.91h | 2006-06-30 | 2006-07-04 |  | 1.57d | 16.91h | Glossary | RD.042.2 | RD | Business Requirements Definition | 10 | EXEC |  | OG |
| 174 | B.RD.045.2 | Prioritize Requirements (MoSCoW) | 1d? | 2006-06-30 | 2006-07-03 |  | 2.68d |  | MoSCoW List |  |  |  |  |  |  |  |
| 175 | B.RD.140.2 | Create Requirements Specification | 29.47h | 2006-06-30 | 2006-07-06 |  | 0d | 73.67h | Requirements Specification | RD.140.3 | RD | Business Requirements Definition | 10 | EXEC | REI |  |
| 176 | B.RD.150.2 | Review Requirements Specification | 6.04h | 2006-06-30 | 2006-07-03 |  | 2.93d | 30.19h | Reviewed Requirements Specification | RD.150.3 | RD | Business Requirements Definition | 10 | EXEC | REI |  |
| 177 | B.RA.027.2 | Identify Candidate Business Rules | 1d? | 2006-06-30 | 2006-07-03 |  | 2.68d |  | Candidate Business Rules |  |  |  |  |  |  |  |
| 178 | B.RA.180.1 | Review Use Case Model | 1d? | 2006-06-30 | 2006-07-03 |  | 2.68d |  | Reviewed Use Case Model |  |  |  |  |  |  |  |
| 179 | B.ACT.BSA | **Baseline Software Architecture** | 3.17d? | 2006-07-06 | 2006-07-11 | 172 | 0d | 62.4h |  |  |  |  |  |  |  |  |
| 180 | B.RA.035 | Develop High-Level Software Architecture Description | 12.07h | 2006-07-06 | 2006-07-07 |  | 1.66d | 20.13h | Architecture Description | RA.035 | RA | Requirements Analysis | 20 | EXEC | REI |  |
| 181 | B.AN.040.1 | Develop Analysis Architecture Description | 1d? | 2006-07-06 | 2006-07-07 |  | 2.17d |  | Architecture Description |  |  |  |  |  |  |  |
| 182 | B.DS.040.1 | Develop Design Architecture Description | 25.37h | 2006-07-06 | 2006-07-11 |  | 0d | 42.27h | Architecture Description | DS.010.1 | DS | Design | 40 | EXEC | RADI |  |

| ID | WBS | Task | Duration | Start | Finish | Predecessors | Total slack | Work | Text1 | Text2 | Text6 | Text7 | Text8 | Text12 | Text18 |
| --- | --- | --- | --- | --- | --- | --- | --- | --- | --- | --- | --- | --- | --- | --- | --- |
| 183 | B.ACT.DUCD | **Develop Use Case Details** | 4.53d | 2006-07-11 | 2006-07-18 | 179 | 0d | 60.38h |  |  |  |  |  |  |  |
| 184 | B.RA.024.1 | Develop Use Case Details | 36.23h | 2006-07-11 | 2006-07-18 |  | 0d | 60.38h | Use Case Specification | RA.024.1 | RA | Requirements Analysis | 20 | REI | EXEC |
| 185 | B.ACT.AE | **Analyze - Elaboration** | 3.65d? | 2006-07-18 | 2006-07-21 | 183 | 0d | 128.42h |  |  |  |  |  |  |  |
| 186 | B.AN.050.1 | Analyze Data | 29.23h | 2006-07-18 | 2006-07-21 |  | 0d | 48.71h | Data Analysis | AN.020.1 | AN | Analysis | 30 | REI | EXEC |
| 187 | B.AN.060.1 | Analyze Behavior | 1d? | 2006-07-18 | 2006-07-19 |  | 2.65d |  | Behavior Analysis |  |  |  |  |  |  |
| 188 | B.AN.070.1 | Analyze Business Rules | 1d? | 2006-07-18 | 2006-07-19 |  | 2.65d |  | Business Rules Analysis |  |  |  |  |  |  |
| 189 | B.AN.090.1 | Analyze User Interface | 1d? | 2006-07-18 | 2006-07-19 |  | 2.65d |  | User Interface Analysis |  |  |  |  |  |  |
| 190 | B.AN.100.1 | Prepare Analysis Specification | 1d? | 2006-07-18 | 2006-07-19 |  | 2.65d |  | Analysis Specification |  |  |  |  |  |  |
| 191 | B.AN.110.1 | Review Analysis Model | 23.91h | 2006-07-18 | 2006-07-21 |  | 0.67d | 79.71h | Reviewed Analysis Model | AN.050.1 | AN | Analysis | 30 | REI | EXEC |
| 192 | B.ACT.DE | **Design - Elaboration** | 5.28d? | 2006-07-21 | 2006-07-31 | 185 | 0d | 295.9h |  |  |  |  |  |  |  |
| 193 | B.DS.050 | Determine Design and Build Standards | 1.69h | 2006-07-21 | 2006-07-21 |  | 5.07d | 4.22h | Design and Build Standards | DS.015 | DS | Design | 40 |  | EXEC |
| 194 | B.DS.060 | Define Business Rules Implementation Strategy | 1d? | 2006-07-21 | 2006-07-24 |  | 4.28d |  | Business Rules Implementation Strategy |  |  |  |  |  |  |
| 195 | B.DS.080.1 | Design Software Components | 21.14h | 2006-07-21 | 2006-07-26 |  | 2.64d | 42.27h | Software Component Design | DS.040.1 | DS | Design | 40 | RADI | EXEC |
| 196 | B.DS.090.1 | Design Data | 1d? | 2006-07-21 | 2006-07-24 |  | 4.28d |  | Component Data Design |  |  |  |  |  |  |
| 197 | B.DS.100.1 | Design Behavior | 1d? | 2006-07-21 | 2006-07-24 |  | 4.28d |  | Component Behavior Design |  |  |  |  |  |  |
| 198 | B.DS.110.1 | Design Business Rules | 1d? | 2006-07-21 | 2006-07-24 |  | 4.28d |  | Business Rules Design |  |  |  |  |  |  |
| 199 | B.DS.130.1 | Design User Interface | 42.27h | 2006-07-21 | 2006-07-31 |  | 0d | 84.53h | User Interface Design | DS.020.1 | DS | Design | 40 | RADI | EXEC |
| 200 | B.DS.140.1 | Prepare Design Specification | 42.27h | 2006-07-21 | 2006-07-31 |  | 0d | 84.55h | Design Specification | DS.030.1 | DS | Design | 40 | RADI | EXEC |
| 201 | B.DS.160.1 | Review Design Model | 16.07h | 2006-07-21 | 2006-07-25 |  | 3.27d | 80.33h | Reviewed Design Model | DS.050.1 | DS | Design | 40 | RADI | EXEC |
| 202 | B.ACT.DCCTSE | **Develop Custom Component Test Scripts - Elaboration** | 1d? | 2006-07-31 | 2006-08-01 | 192 | 14.91d |  |  |  |  |  |  |  |  |
| 203 | B.TE.020.1 | Develop Unit Test Scripts | 1d? | 2006-07-31 | 2006-08-01 |  | 14.91d |  | Unit Test Scripts |  |  |  |  |  |  |
| 204 | B.TE.035.1 | Create Integration Test Scenarios | 1d? | 2006-07-31 | 2006-08-01 |  | 14.91d |  | Integration Test Scenarios |  |  |  |  |  |  |
| 205 | B.ACT.DSTSE | **Develop System Test Scenarios - Elaboration** | 1d? | 2006-07-31 | 2006-08-01 | 159, 192 | 0d |  |  |  |  |  |  |  |  |
| 206 | B.TE.025.2 | Create System Test Scenarios | 1d? | 2006-07-31 | 2006-08-01 |  | 0d |  | System Test Scenarios |  |  |  |  |  |  |

| ID | WBS | Task | Duration | Start | Finish | Predecessors | Total slack | Work | Text1 | Text2 | Text6 | Text7 | Text8 | Text12 | Text18 |
| --- | --- | --- | --- | --- | --- | --- | --- | --- | --- | --- | --- | --- | --- | --- | --- |
| 207 | B.ACT.DVCSP | **Develop and Validate Custom Software Prototypes** | 15.91d? | 2006-07-31 | 2006-08-21 | 192 | 0d | 382.52h |  |  |  |  |  |  |  |
| 208 | B.IM.010 | Develop Functional Prototype | 35.59h | 2006-07-31 | 2006-08-04 |  | 11.46d | 88.97h | Functional Prototype | IM.010 | IM | Implementation | 50 | REI | EXEC |
| 209 | B.RA.085 | Validate Functional Prototype | 16.11h | 2006-07-31 | 2006-08-02 |  | 13.9d | 40.27h | Validated Functional Prototype | RA.085 | RA | Requirements Analysis | 20 | REI | EXEC |
| 210 | B.IM.020 | Develop Architectural Foundation | 127.29h | 2006-07-31 | 2006-08-21 |  | 0d | 212.15h | Architectural Foundation | IM.020 | IM | Implementation | 50 | RADI | EXEC |
| 211 | B.IM.085 | Develop User Interface Standards Prototype | 13.69h | 2006-07-31 | 2006-08-01 |  | 14.2d | 34.2h | User Interface Standards Prototype | IM.085 | IM | Implementation | 50 |  | EXEC |
| 212 | B.RA.095 | Validate User Interface Standards Prototype | 2.78h | 2006-07-31 | 2006-07-31 |  | 15.56d | 6.93h | Validated User Interface Standards Prototype | IM.095 | IM | Implementation | 50 |  | EXEC |
| 213 | B.IM.060.1 | Perform Component Review | 1d? | 2006-07-31 | 2006-08-01 |  | 14.91d |  | Component Review Results |  |  |  |  |  |  |
| 214 | B.ACT.PCCTE | **Perform Custom Component Testing - Elaboration** | 1d? | 2006-08-21 | 2006-08-22 | 202, 207 | 0d |  |  |  |  |  |  |  |  |
| 215 | B.TE.030.1 | Perform Unit Test | 1d? | 2006-08-21 | 2006-08-22 |  | 0d |  | Unit-Tested Components |  |  |  |  |  |  |
| 216 | B.TE.040.1 | Perform Integration Test | 1d? | 2006-08-21 | 2006-08-22 |  | 0d |  | Integration-Tested Components |  |  |  |  |  |  |
| 217 | B.ACT.PSTE | **Perform System Test - Elaboration** | 1d? | 2006-08-01 | 2006-08-02 | 141, 205 | 0d |  |  |  |  |  |  |  |  |
| 218 | B.TE.070.1 | Perform System Test | 1d? | 2006-08-01 | 2006-08-02 |  | 0d |  | System-Tested Applications |  |  |  |  |  |  |
| 219 | B.ACT.PPM | **Plan Performance Management** | 4.83d | 2006-06-22 | 2006-06-29 | 122 | 0d | 161.02h |  |  |  |  |  |  |  |
| 220 | B.PT.020 | Define Performance Management Requirements and Strategy | 12.88h | 2006-06-22 | 2006-06-26 |  | 0d | 16.1h | Performance Management Requirements and Strategy | PT.020 | PT | Performance Testing | 70 |  | EXEC |
| 221 | B.PT.030 | Define Performance Testing Strategy | 14.49h | 2006-06-22 | 2006-06-26 |  | 0d | 16.1h | Performance Testing Strategy | PT.030 | PT | Performance Testing | 70 |  | EXEC |
| 222 | B.PT.040 | Identify Performance Testing Models and Scenarios | 25.76h | 2006-06-22 | 2006-06-27 |  | 0d | 32.2h | Performance Testing Models and Scenarios | PT.040 | PT | Performance Testing | 70 |  | EXEC |
| 223 | B.PT.050 | Design Performance Test Scripts and Programs | 38.65h | 2006-06-22 | 2006-06-29 |  | 0d | 48.32h | Performance Test Scripts and Programs Design | PT.050 | PT | Performance Testing | 70 |  | EXEC |
| 224 | B.PT.060 | Design Performance Test Data and Load Programs | 28.99h | 2006-06-22 | 2006-06-28 |  | 0d | 48.3h | Performance Test Data and Load Programs Design | PT.060 | PT | Performance Testing | 70 |  | EXEC |
| 225 | B.ACT.PACDE | **Prepare to Acquire and Convert Data - Elaboration** | 5.28d? | 2006-06-27 | 2006-07-04 | 125 | 34.15d | 70.45h |  |  |  |  |  |  |  |
| 226 | B.CV.025 | Define Data Acquisition and Conversion Standards | 1d? | 2006-06-27 | 2006-06-28 |  | 38.44d |  | Data Acquisition and Conversion Standards |  |  |  |  |  |  |
| 227 | B.RA.160 | Conduct Business Data Source Gap Analysis | 1d? | 2006-06-27 | 2006-06-28 |  | 38.44d |  | Business Data Source Gap Analysis |  |  |  |  |  |  |
| 228 | B.CV.027.1 | Perform Data Mapping | 1d? | 2006-06-27 | 2006-06-28 |  | 38.44d |  | Data Mapping |  |  |  |  |  |  |
| 229 | B.RA.170.1 | Conduct Data Quality Assessment | 1d? | 2006-06-27 | 2006-06-28 |  | 38.44d |  | High-Level Data Quality Assessment |  |  |  |  |  |  |
| 230 | B.CV.035.1 | Define Manual Conversion Procedures (Initial Load) | 1d? | 2006-06-27 | 2006-06-28 |  | 38.44d |  | Manual Conversion Procedures (Initial Load) |  |  |  |  |  |  |
| 231 | B.CV.040.1 | Design Conversion Components (Initial Load) | 42.27h | 2006-06-27 | 2006-07-04 |  | 34.15d | 70.45h | Conversion Component Designs (Initial Load) | CV.040 | CV | Data Conversion | 90 | RADI | EXEC |
| 232 | B.CV.050.1 | Prepare Conversion Test Plans (Initial Load) | 1d? | 2006-06-27 | 2006-06-28 |  | 38.44d |  | Conversion Test Plans (Initial Load) |  |  |  |  |  |  |
| 233 | B.CV.055.1 | Implement Conversion Components (Initial Load) | 1d? | 2006-06-27 | 2006-06-28 |  | 38.44d |  | Conversion Components (Initial Load) |  |  |  |  |  |  |
| 234 | B.CV.060.1 | Perform Conversion Component Unit Test (Initial Load) | 1d? | 2006-06-27 | 2006-06-28 |  | 38.44d |  | Unit-Tested Conversion Components (Initial Load) |  |  |  |  |  |  |
| 235 | B.CV.062.1 | Perform Conversion Component Business Object Test (Initial Load) | 1d? | 2006-06-27 | 2006-06-28 |  | 38.44d |  | Business Object-Tested Conversion Components (Initial Load) |  |  |  |  |  |  |
| 236 | B.CV.063.1 | Perform Conversion Component Validation Test (Initial Load) | 1d? | 2006-06-27 | 2006-06-28 |  | 38.44d |  | Validation-Tested Conversion Components (Initial Load) |  |  |  |  |  |  |

| ID | WBS | Task | Type | Duration | Start | Finish | Predecessors | Total slack | Work | Text1 | Text2 | Text8 | Text18 | Text3 | Text6 | Text7 | Text12 |
| --- | --- | --- | --- | --- | --- | --- | --- | --- | --- | --- | --- | --- | --- | --- | --- | --- | --- |
| 237 | B.ACT.LCAR | **Lifecycle Architecture Milestone** |  | 0d | 2006-08-21 | 2006-08-21 | 132, 147, 155, 159, 172, 179, 192, 207, 225 | 0d |  |  |  |  |  |  |  |  |  |
| 238 | B.PMC.LCAR | Lifecycle Architecture Milestone | milestone | 0h | 2006-08-21 | 2006-08-21 |  | 0d |  | Lifecycle Architecture Milestone | PMC.LCAR | null | MGMT |  |  |  |  |
| 239 | C | **Construction** |  | 512.93h? | 2006-08-21 | 2006-11-20 |  | 0d | 2724.5h |  |  | null |  |  |  |  |  |
| 240 | C.ACT.FR | **Finalize Requirements** |  | 10.25d? | 2006-08-21 | 2006-09-05 | 237 | 0d | 291.52h |  |  |  |  |  |  |  |  |
| 241 | C.RD.042.3 | Develop Glossary |  | 8.75h | 2006-08-21 | 2006-08-23 |  | 9.16d | 8.75h | Glossary | RD.042.3 | 10 | EXEC | OG | RD | Business Requirements Definition |  |
| 242 | C.RD.045.3 | Prioritize Requirements (MoSCoW) |  | 1d? | 2006-08-21 | 2006-08-22 |  | 9.25d |  | MoSCoW List |  |  |  |  |  |  |  |
| 243 | C.RD.130.2 | Develop Baseline Architecture Description |  | 47.23h | 2006-08-21 | 2006-08-29 |  | 4.35d | 78.71h | Architecture Description | RD.130.2 | 10 | EXEC |  | RD | Business Requirements Definition |  |
| 244 | C.RA.023.3 | Develop Use Case Model |  | 82.03h | 2006-08-21 | 2006-09-05 |  | 0d | 136.72h | Use Case Model | RA.023.3 | 20 | EXEC |  | RA | Requirements Analysis |  |
| 245 | C.RA.024.2 | Develop Use Case Details |  | 6.12h | 2006-08-21 | 2006-08-22 |  | 9.49d | 10.2h | Use Case Specification | RA.024.2 | 20 | EXEC |  | RA | Requirements Analysis |  |
| 246 | C.RA.180.2 | Review Use Case Model |  | 11.43h | 2006-08-21 | 2006-08-23 |  | 8.82d | 57.14h | Reviewed Use Case Model | RA.180.2 | 20 | EXEC |  | RA | Requirements Analysis |  |
| 247 | C.ACT.AC | **Analyze - Construction** |  | 1d? | 2006-09-05 | 2006-09-06 | 240 | 0d | 16.32h |  |  |  |  |  |  |  |  |
| 248 | C.AN.040.2 | Develop Analysis Architecture Description |  | 1d? | 2006-09-05 | 2006-09-06 |  | 0d |  | Architecture Description |  |  |  |  |  |  |  |
| 249 | C.AN.070.2 | Analyze Business Rules |  | 1d? | 2006-09-05 | 2006-09-06 |  | 0d |  | Business Rules Analysis |  |  |  |  |  |  |  |
| 250 | C.AN.110.2 | Review Analysis Model |  | 4.9h | 2006-09-05 | 2006-09-05 |  | 0.39d | 16.32h | Reviewed Analysis Model | AN.050.2 | 30 | EXEC |  | AN | Analysis | RADI |
| 251 | C.ACT.DC | **Design - Construction** |  | 5.47d? | 2006-09-06 | 2006-09-13 | 247 | 0d | 437.26h |  |  |  |  |  |  |  |  |
| 252 | C.DS.040.2 | Develop Design Architecture Description |  | 26.23h | 2006-09-06 | 2006-09-11 |  | 2.19d | 43.73h | Architectural Design Description | DS.010.2 | 40 | EXEC |  | DS | Design |  |
| 253 | C.DS.080.2 | Design Software Components |  | 21.86h | 2006-09-06 | 2006-09-08 |  | 2.73d | 43.73h | Software Component Design | DS.040.2 | 40 | EXEC |  | DS | Design |  |
| 254 | C.DS.090.2 | Design Data |  | 1d? | 2006-09-06 | 2006-09-07 |  | 4.47d |  | Component Data Design |  |  |  |  |  |  |  |
| 255 | C.DS.100.2 | Design Behavior |  | 43.72h | 2006-09-06 | 2006-09-13 |  | 0d | 87.45h | Component Behavior Design | DS.020.2 | 40 | EXEC |  | DS | Design |  |
| 256 | C.DS.110.2 | Design Business Rules |  | 1d? | 2006-09-06 | 2006-09-07 |  | 4.47d |  | Business Rules Design |  |  |  |  |  |  |  |
| 257 | C.DS.130.2 | Design User Interface |  | 43.73h | 2006-09-06 | 2006-09-13 |  | 0d | 87.45h | User Interface Design | DS.030.2 | 40 | EXEC |  | DS | Design |  |
| 258 | C.DS.140.2 | Prepare Design Specification |  | 1d? | 2006-09-06 | 2006-09-07 |  | 4.47d |  | Design Specification |  |  |  |  |  |  |  |
| 259 | C.DS.150.2 | Develop Database Design |  | 43.73h | 2006-09-06 | 2006-09-13 |  | 0d | 87.45h | Logical Database Design | DS.060.2 | 40 | EXEC |  | DS | Design |  |
| 260 | C.DS.160.2 | Review Design Model |  | 17.49h | 2006-09-06 | 2006-09-08 |  | 3.28d | 87.45h | Reviewed Design Model | DS.050.2 | 40 | EXEC |  | DS | Design |  |

| ID | WBS | Task | Duration | Start | Finish | Predecessors | Total slack | Free slack | Work | Text1 | Text2 | Text6 | Text7 | Text8 | Text18 |
| --- | --- | --- | --- | --- | --- | --- | --- | --- | --- | --- | --- | --- | --- | --- | --- |
| 261 | C.ACT.PTP | **Perform Test Planning** | 2.77d? | 2006-08-21 | 2006-08-24 | 237 | 0d |  | 22.15h |  |  |  |  |  |  |
| 262 | C.TE.015.2 | Develop Integration Test Plan | 1d? | 2006-08-21 | 2006-08-22 |  | 0d |  |  | Integration Test Plan |  |  |  |  |  |
| 263 | C.TE.050.2 | Develop System Test Plan | 22.15h | 2006-08-21 | 2006-08-24 |  | 0d |  | 22.15h | System Test Plan | TE.050 | TE | Business System Testing | 60 | EXEC |
| 264 | C.ACT.PEC | **Prepare Environments - Construction** | 1d? | 2006-08-21 | 2006-08-22 | 237 | 35.76d | 4.28d |  |  |  |  |  |  |  |
| 265 | C.IM.007.2 | Prepare Development Environment | 1d? | 2006-08-21 | 2006-08-22 |  | 35.76d |  |  | Development Environment |  |  |  |  |  |
| 266 | C.TE.018.2 | Prepare Static Test Data | 1d? | 2006-08-21 | 2006-08-22 |  | 35.76d |  |  | Static Test Data |  |  |  |  |  |
| 267 | C.TE.038.2 | Prepare Integration Test Environment | 1d? | 2006-08-21 | 2006-08-22 |  | 35.76d |  |  | Integration Test Environment |  |  |  |  |  |
| 268 | C.ACT.DCCTSC | **Develop Custom Component Test Scripts - Construction** | 1.66d? | 2006-09-13 | 2006-09-15 | 251 | 24.49d |  | 16.62h |  |  |  |  |  |  |
| 269 | C.TE.020.2 | Develop Unit Test Scripts | 13.3h | 2006-09-13 | 2006-09-15 |  | 24.49d |  | 16.62h | Unit Test Scripts | TE.020 | TE | Business System Testing | 60 | EXEC |
| 270 | C.TE.035.2 | Create Integration Test Scenarios | 1d? | 2006-09-13 | 2006-09-14 |  | 25.15d |  |  | Integration Test Scenarios |  |  |  |  |  |
| 271 | C.ACT.DSTSC | **Develop System Test Scenarios - Construction** | 1d? | 2006-09-13 | 2006-09-14 | 237, 251 | 0d |  |  |  |  |  |  |  |  |
| 272 | C.TE.025.3 | Create System Test Scenarios | 1d? | 2006-09-13 | 2006-09-14 |  | 0d |  |  | System Test Scenarios |  |  |  |  |  |
| 273 | C.ACT.DSITS | **Develop Systems Integrations Test Scenarios** | 1d? | 2006-09-13 | 2006-09-14 | 251 | 0d |  |  |  |  |  |  |  |  |
| 274 | C.TE.090 | Develop Systems Integration Test Scenarios | 1d? | 2006-09-13 | 2006-09-14 |  | 0d |  |  | Systems Integration Test Scenarios |  |  |  |  |  |
| 275 | C.ACT.ICC | **Implement Custom Components** | 26.15d? | 2006-09-13 | 2006-10-19 | 251 | 0d |  | 1011.84h |  |  |  |  |  |  |
| 276 | C.IM.040.2 | Implement Database | 95.5h | 2006-09-13 | 2006-09-29 |  | 14.21d |  | 238.75h | Implemented Database | IM.040 | IM | Implementation | 50 | EXEC |
| 277 | C.IM.050 | Implement Components | 209.19h | 2006-09-13 | 2006-10-19 |  | 0d |  | 522.97h | Implemented Components | IM.050 | IM | Implementation | 50 | EXEC |
| 278 | C.IM.053.2 | Register Services | 1d? | 2006-09-13 | 2006-09-14 |  | 25.15d |  |  | Populated Services Registry |  |  |  |  |  |
| 279 | C.IM.055.2 | Perform Business Rules Implementation (Rules Engine) | 1d? | 2006-09-13 | 2006-09-14 |  | 25.15d |  |  | Implemented Business Rules (Rules Engine) |  |  |  |  |  |
| 280 | C.IM.060.2 | Perform Component Review | 25.02h | 2006-09-13 | 2006-09-18 |  | 23.02d |  | 125.06h | Component Review Results | IM.060 | IM | Implementation | 50 | EXEC |
| 281 | C.IM.070 | Assemble Components | 50.02h | 2006-09-13 | 2006-09-21 |  | 19.9d |  | 125.06h | Assembled Components | IM.070 | IM | Implementation | 50 | EXEC |
| 282 | C.ACT.PCCTC | **Perform Custom Component Testing - Construction** | 8.86d | 2006-10-19 | 2006-11-01 | 268, 275 | 0d |  | 177.24h |  |  |  |  |  |  |
| 283 | C.TE.030.2 | Perform Unit Test | 70.9h | 2006-10-19 | 2006-11-01 |  | 0d |  | 88.62h | Unit-Tested Components | TE.030 | TE | Business System Testing | 60 | EXEC |
| 284 | C.TE.040.2 | Perform Integration Test | 53.17h | 2006-10-19 | 2006-10-30 |  | 2.22d |  | 88.62h | Integration-Tested Components | TE.040 | TE | Business System Testing | 60 | EXEC |

| ID | WBS | Task | Duration | Start | Finish | Predecessors | Total slack | Work | Text1 | Text2 | Text6 | Text7 | Text8 | Text18 |
| --- | --- | --- | --- | --- | --- | --- | --- | --- | --- | --- | --- | --- | --- | --- |
| 285 | C.ACT.PST | **Prepare for System Test** | 2.21d? | 2006-09-14 | 2006-09-19 | 264, 317 | 31.48d | 44.32h |  |  |  |  |  |  |
| 286 | C.MC.050.2 | Define Application Setups | 1d? | 2006-09-14 | 2006-09-15 |  | 32.69d |  | Application Setup Documents |  |  |  |  |  |
| 287 | C.TE.060.2 | Prepare System Test Environment | 17.72h | 2006-09-14 | 2006-09-19 |  | 31.48d | 44.32h | System Test Environment | TE.060 | TE | Business System Testing | 60 | EXEC |
| 288 | C.ACT.PSTC | **Perform System Test - Construction** | 10.38d? | 2006-11-01 | 2006-11-16 | 282, 285 | 0d | 138.47h |  |  |  |  |  |  |
| 289 | C.TE.070.2 | Perform System Test | 83.08h | 2006-11-01 | 2006-11-16 |  | 0d | 138.47h | System-Tested Applications | TE.070 | TE | Business System Testing | 60 | EXEC |
| 290 | C.RA.055.2 | Document Business Procedures | 1d? | 2006-11-01 | 2006-11-02 |  | 9.38d |  | Business Procedure Documentation |  |  |  |  |  |
| 291 | C.TE.019.1 | Collect, Assess and Refine KPI Measurements | 1d? | 2006-11-01 | 2006-11-02 |  | 9.38d |  | Key Business Strategies and Objectives |  |  |  |  |  |
| 292 | C.ACT.PSIT | **Perform Systems Integration Test** | 1d? | 2006-11-16 | 2006-11-17 | 288 | 0d |  |  |  |  |  |  |  |
| 293 | C.TE.085 | Prepare Systems Integration Test Environment | 1d? | 2006-11-16 | 2006-11-17 |  | 0d |  | Systems Integration Test Environment |  |  |  |  |  |
| 294 | C.TE.100 | Perform Systems Integration Test | 1d? | 2006-11-16 | 2006-11-17 |  | 0d |  | Integration-Tested System |  |  |  |  |  |
| 295 | C.ACT.PPT | **Prepare for Performance Testing** | 1.82d | 2006-08-21 | 2006-08-23 | 237 | 0d | 51.03h |  |  |  |  |  |  |
| 296 | C.PT.080 | Construct Performance Test Environment and Database | 14.58h | 2006-08-21 | 2006-08-23 |  | 0d | 36.45h | Performance Test Environment and Database | PT.080 | PT | Performance Testing | 70 | EXEC |
| 297 | C.PT.090 | Conduct Performance Test Dress Rehearsal | 8.75h | 2006-08-21 | 2006-08-23 |  | 0d | 14.58h | Validated Performance Test and Environment | PT.090 | PT | Performance Testing | 70 | EXEC |
| 298 | C.ACT.PT | **Prepare for Transition** | 1.91d | 2006-08-21 | 2006-08-23 | 237 | 0d | 41.08h |  |  |  |  |  |  |
| 299 | C.TA.100 | Define System Management Procedures | 6.12h | 2006-08-21 | 2006-08-22 |  | 1.15d | 6.12h | System Management Guide | TA.100 | TA | Application and Technical Architecture | 80 | EXEC |
| 300 | C.TA.110 | Define Operational Testing Plan | 5.6h | 2006-08-21 | 2006-08-22 |  | 1.21d | 7h | Operational Testing Plan | TA.110 | TA | Application and Technical Architecture | 80 | EXEC |
| 301 | C.TA.150 | Define Final Platform and Network Architecture | 4.28h | 2006-08-21 | 2006-08-22 |  | 1.38d | 6.12h | Final Platform and Network Architecture | TA.150 | TA | Application and Technical Architecture | 80 | EXEC |
| 302 | C.TA.160 | Define System Capacity Plan | 15.3h | 2006-08-21 | 2006-08-23 |  | 0d | 21.85h | System Capacity Plan | TA.160 | TA | Application and Technical Architecture | 80 | EXEC |
| 303 | C.ACT.PCO | **Prepare for Cutover** | 6.56d? | 2006-08-21 | 2006-08-30 | 237 | 56.56d | 58.3h |  |  |  |  |  |  |
| 304 | C.TS.020.2 | Define Cutover Strategy | 52.47h | 2006-08-21 | 2006-08-30 |  | 56.56d | 58.3h | Cutover Strategy | TS.010 | TS | Transition | 100 | EXEC |
| 305 | C.TS.030 | Develop Installation Plan | 1d? | 2006-08-21 | 2006-08-22 |  | 62.12d |  | Installation Plan |  |  |  |  |  |
| 306 | C.TS.040 | Design Production Support Infrastructure | 1d? | 2006-08-21 | 2006-08-22 |  | 62.12d |  | Production Support Infrastructure Design |  |  |  |  |  |
| 307 | C.ACT.TI | **Test Infrastructure** | 1.91d | 2006-08-23 | 2006-08-25 | 298 | 0d | 46.32h |  |  |  |  |  |  |
| 308 | C.TA.120 | Conduct Operational Testing | 15.3h | 2006-08-23 | 2006-08-25 |  | 0d | 21.85h | Operational Test Results | TA.120 | TA | Application and Technical Architecture | 80 | EXEC |
| 309 | C.TA.130 | Conduct Backup and Recovery Test | 8.57h | 2006-08-23 | 2006-08-24 |  | 0d | 12.23h | Backup and Recovery Test Results | TA.130 | TA | Application and Technical Architecture | 80 | EXEC |
| 310 | C.TA.140 | Conduct Disaster Recovery Test | 8.57h | 2006-08-23 | 2006-08-24 |  | 0d | 12.23h | Disaster Recovery Test Results | TA.140 | TA | Application and Technical Architecture | 80 | EXEC |

| ID | WBS | Task | Duration | Start | Finish | Predecessors | Total slack | Free slack | Work | Text1 | Text2 | Text6 | Text7 | Text8 | Text12 | Text18 |
| --- | --- | --- | --- | --- | --- | --- | --- | --- | --- | --- | --- | --- | --- | --- | --- | --- |
| 311 | C.ACT.PACDC | **Prepare to Acquire and Convert Data - Construction** | 5.28d? | 2006-08-21 | 2006-08-29 | 237 | 31.48d | 0d | 70.45h |  |  |  |  |  |  |  |
| 312 | C.CV.027.2 | Perform Data Mapping | 1d? | 2006-08-21 | 2006-08-22 |  | 35.76d |  |  | Data Mapping |  |  |  |  |  |  |
| 313 | C.RA.170.2 | Conduct Data Quality Assessment | 1d? | 2006-08-21 | 2006-08-22 |  | 35.76d |  |  | High-Level Data Quality Assessment |  |  |  |  |  |  |
| 314 | C.CV.035.2 | Define Manual Conversion Procedures (Initial Load) | 1d? | 2006-08-21 | 2006-08-22 |  | 35.76d |  |  | Manual Conversion Procedures (Initial Load) |  |  |  |  |  |  |
| 315 | C.CV.040.2 | Design Conversion Components (Initial Load) | 42.27h | 2006-08-21 | 2006-08-29 |  | 31.48d |  | 70.45h | Designed Data Conversion Components (Initial Load) | CV.040 | CV | Data Conversion | 90 | RADI | EXEC |
| 316 | C.CV.050.2 | Prepare Conversion Test Plans (Initial Load) | 1d? | 2006-08-21 | 2006-08-22 |  | 35.76d |  |  | Conversion Test Plans (initial Load) |  |  |  |  |  |  |
| 317 | C.ACT.ACDC | **Acquire and Convert Data - Construction** | 12.75d? | 2006-08-29 | 2006-09-14 | 264, 311 | 31.48d | 0d | 301.58h |  |  |  |  |  |  |  |
| 318 | C.CV.030.2 | Prepare Conversion Environment (Initial Load) | 6.04h | 2006-08-29 | 2006-08-29 |  | 43.48d |  | 10.07h | Conversion Environment (Initial Load) | CV.030 | CV | Data Conversion | 90 | REI | EXEC |
| 319 | C.CV.055.2 | Implement Conversion Components (Initial Load) | 102.03h | 2006-08-29 | 2006-09-14 |  | 31.48d |  | 204.06h | Implemented Conversion Components (Initial Load) | CV.050 | CV | Data Conversion | 90 |  | EXEC |
| 320 | C.CV.060.2 | Perform Conversion Component Unit Test (Initial Load) | 43.73h | 2006-08-29 | 2006-09-05 |  | 38.77d |  | 87.45h | Unit-Tested Conversion Components (Initial Load) | CV.060 | CV | Data Conversion | 90 |  | EXEC |
| 321 | C.CV.063.2 | Perform Conversion Component Validation Test (Initial Load) | 1d? | 2006-08-29 | 2006-08-30 |  | 43.23d |  |  | Validation-Tested Conversion Components (Initial Load) |  |  |  |  |  |  |
| 322 | C.CV.064.1 | Install Conversion Components (Initial Load) | 1d? | 2006-08-29 | 2006-08-30 |  | 43.23d |  |  | Installed Conversion Components (Initial Load) |  |  |  |  |  |  |
| 323 | C.CV.065.1 | Convert and Verify Data (Initial Load) | 1d? | 2006-08-29 | 2006-08-30 |  | 43.23d |  |  | Converted and Verified Data (Initial Load) |  |  |  |  |  |  |
| 324 | C.CV.068.1 | Clean Data | 1d? | 2006-08-29 | 2006-08-30 |  | 43.23d |  |  | Clean Legacy Data |  |  |  |  |  |  |
| 325 | C.ACT.PD | **Produce Documentation** | 1d? | 2006-08-21 | 2006-08-22 | 237 | 0d |  |  |  |  |  |  |  |  |  |
| 326 | C.DO.060 | Publish User Reference Manual | 1d? | 2006-08-21 | 2006-08-22 |  | 0d |  |  | User Reference Manual |  |  |  |  |  |  |
| 327 | C.ACT.DEUT | **Design End-User Training** | 1d? | 2006-08-21 | 2006-08-22 | 237 | 0d |  |  |  |  |  |  |  |  |  |
| 328 | C.TR.060 | Conduct User Learning Needs Analysis | 1d? | 2006-08-21 | 2006-08-22 |  | 0d |  |  | User Learning Needs Analysis |  |  |  |  |  |  |
| 329 | C.TR.070 | Develop User Learning Plan | 1d? | 2006-08-21 | 2006-08-22 |  | 0d |  |  | User Learning Plan |  |  |  |  |  |  |
| 330 | C.ACT.BEUT | **Build End-User Training** | 1d? | 2006-08-22 | 2006-08-23 | 327 | 0d |  |  |  |  |  |  |  |  |  |
| 331 | C.TR.080 | Develop User Learningware | 1d? | 2006-08-22 | 2006-08-23 |  | 0d |  |  | User Learningware |  |  |  |  |  |  |
| 332 | C.TR.090 | Prepare User Learning Environment | 1d? | 2006-08-22 | 2006-08-23 |  | 0d |  |  | Configured User Learning Environment |  |  |  |  |  |  |
| 333 | C.ACT.TEUC | **Train End Users - Construction** | 1d? | 2006-08-23 | 2006-08-24 | 330 | 0d |  |  |  |  |  |  |  |  |  |
| 334 | C.TR.100.1 | Conduct User Learning Events | 1d? | 2006-08-23 | 2006-08-24 |  | 0d |  |  | Skilled Users |  |  |  |  |  |  |

| ID | WBS | Task | Type | Duration | Start | Finish | Predecessors | Total slack | Free slack | Work | Text1 | Text8 | Text2 | Text6 | Text7 | Text18 |
| --- | --- | --- | --- | --- | --- | --- | --- | --- | --- | --- | --- | --- | --- | --- | --- | --- |
| 335 | C.ACT.IOCM | **Initial Operational Capability Milestone** |  | 1d? | 2006-11-17 | 2006-11-20 | 240, 251, 288, 292, 298, 303, 317 | 0d |  |  |  |  |  |  |  |  |
| 336 | C.PMC.IOCM | Initial Operational Capability Milestone | milestone | 1d? | 2006-11-17 | 2006-11-20 |  | 0d |  |  | Initial Operational Capability Milestone |  |  |  |  |  |
| 337 | D | **Transition** |  | 359.8h? | 2006-11-20 | 2007-01-22 |  | 0d |  | 760.7h |  | null |  |  |  |  |
| 338 | D.ACT.SUAT | **Support User Acceptance Test** |  | 2.19d? | 2006-11-20 | 2006-11-22 | 335 | 9.47d |  | 55.53h |  |  |  |  |  |  |
| 339 | D.TE.105 | Prepare Users for Testing |  | 1d? | 2006-11-20 | 2006-11-21 |  | 10.66d |  |  | Prepared Users for Testing |  |  |  |  |  |
| 340 | D.TE.110 | Prepare Acceptance Test Environment |  | 17.49h | 2006-11-20 | 2006-11-22 |  | 9.47d |  | 38.87h | Acceptance Test Environment | 60 | TE.110 | TE | Business System Testing | EXEC |
| 341 | D.TE.120 | Support Acceptance Test |  | 5h | 2006-11-20 | 2006-11-20 |  | 11.04d |  | 16.66h | Acceptance Test Results | 60 | TE.120 | TE | Business System Testing | EXEC |
| 342 | D.ACT.CPTST | **Conduct Performance Test** |  | 11.66d | 2006-11-20 | 2006-12-05 | 335 | 0d |  | 222.1h |  |  |  |  |  |  |
| 343 | D.PT.100 | Execute Performance Test |  | 62.19h | 2006-11-20 | 2006-11-29 |  | 3.89d |  | 88.84h | Performance Test Results | 70 | PT.100 | PT | Performance Testing | EXEC |
| 344 | D.PT.110 | Create Performance Test Report |  | 93.28h | 2006-11-20 | 2006-12-05 |  | 0d |  | 133.26h | Performance Test Report | 70 | PT.110 | PT | Performance Testing | EXEC |
| 345 | D.ACT.PPE | **Prepare Production Environment** |  | 6.66d | 2006-11-20 | 2006-11-28 | 335 | 1.25d | 0d | 133.27h |  |  |  |  |  |  |
| 346 | D.TS.050 | Prepare Production Environment |  | 53.3h | 2006-11-20 | 2006-11-28 |  | 1.25d |  | 133.27h | Production Environment | 100 | TS.050 | TS | Transition | EXEC |
| 347 | D.ACT.CDT | **Convert Data - Transition** |  | 3.75d? | 2006-11-28 | 2006-12-04 | 345 | 1.25d |  | 83.29h |  |  |  |  |  |  |
| 348 | D.CV.064.2 | Install Conversion Components (Initial Load) |  | 1d? | 2006-11-28 | 2006-11-29 |  | 4d |  |  | Installed Conversion Components (Initial Load) |  |  |  |  |  |
| 349 | D.CV.065.2 | Convert and Verify Data (Initial Load) |  | 29.98h | 2006-11-28 | 2006-12-04 |  | 1.25d |  | 49.97h | Converted and Verified Data (Initial Load) | 90 | CV.065 | CV | Data Conversion | EXEC |
| 350 | D.CV.068.2 | Clean Data |  | 26.66h | 2006-11-28 | 2006-12-04 |  | 1.67d |  | 33.32h | Clean Legacy Data | 90 | CV.068 | CV | Data Conversion | EXEC |
| 351 | D.ACT.TEUT | **Train End Users - Transition** |  | 1d? | 2006-11-20 | 2006-11-21 | 335 | 10.66d |  |  |  |  |  |  |  |  |
| 352 | D.TR.100.2 | Conduct User Learning Events |  | 1d? | 2006-11-20 | 2006-11-21 |  | 10.66d |  |  | Skilled Users |  |  |  |  |  |
| 353 | D.ACT.FD | **Finalize Documentation** |  | 1d? | 2006-11-20 | 2006-11-21 | 335 | 0d |  |  |  |  |  |  |  |  |
| 354 | D.DO.110 | Finalize Documentation |  | 1d? | 2006-11-20 | 2006-11-21 |  | 0d |  |  | Finalized Documentation |  |  |  |  |  |
| 355 | D.ACT.GP | **Go Production** |  | 33.31d? | 2006-12-05 | 2007-01-22 | 338, 342, 345, 347, 351 | 0d |  | 266.52h |  |  |  |  |  |  |
| 356 | D.TS.052 | Implement Production Support Infrastructure |  | 1d? | 2006-12-05 | 2006-12-06 |  | 32.31d |  |  | Production Support Infrastructure |  |  |  |  |  |
| 357 | D.TS.058 | Verify Production Readiness |  | 1d? | 2006-12-05 | 2006-12-06 |  | 32.31d |  |  | Production-Ready System |  |  |  |  |  |
| 358 | D.TS.060 | Go Production |  | 266.52h | 2006-12-05 | 2007-01-22 |  | 0d |  | 266.52h | System in Production | 100 | TS.060 | TS | Transition | EXEC |

| ID | WBS | Task | Type | Duration | Start | Finish | Predecessors | Total slack | Work | Text1 | Text2 | Text8 | Text18 | Text6 | Text7 | Text3 |
| --- | --- | --- | --- | --- | --- | --- | --- | --- | --- | --- | --- | --- | --- | --- | --- | --- |
| 359 | D.ACT.SIP | **System in Production Milestone** |  | 0d | 2007-01-22 | 2007-01-22 | 338, 342, 345, 347, 351, 355 | 0d |  |  |  |  |  |  |  |  |
| 360 | D.PMC.SIP | System in Production Milestone | milestone | 0h | 2007-01-22 | 2007-01-22 |  | 0d |  | System in Production Milestone | PMC.SIP | null | MGMT |  |  |  |
| 361 | E | **Production** |  | 52.48h? | 2007-01-22 | 2007-01-30 |  | 0d | 209.34h |  |  | null |  |  |  |  |
| 362 | E.ACT.MPSP | **Manage Production System Performance** |  | 6.11d | 2007-01-22 | 2007-01-30 | 359 | 0d | 61.08h |  |  |  |  |  |  |  |
| 363 | E.PT.120 | Conduct Production Performance Management |  | 48.86h | 2007-01-22 | 2007-01-30 |  | 0d | 61.08h | Managed Production Environment | PT.120 | 70 | EXEC | PT | Performance Testing |  |
| 364 | E.ACT.EPS | **Evaluate Production System** |  | 5.56d? | 2007-01-22 | 2007-01-29 | 359 | 0d | 49.42h |  |  |  |  |  |  |  |
| 365 | E.TE.019.2 | Collect, Assess and Refine KPI Measurements |  | 1d? | 2007-01-22 | 2007-01-23 |  | 4.56d |  | Key Business Strategies and Objectives |  |  |  |  |  |  |
| 366 | E.PS.010 | Audit System |  | 44.48h | 2007-01-22 | 2007-01-29 |  | 0d | 49.42h | System Evaluation | PS.010 | 110 | EXEC | PS | Post System Support |  |
| 367 | E.ACT.RPP | **Resolve Production Problems** |  | 5.56d | 2007-01-22 | 2007-01-29 | 359 | 0d | 74.13h |  |  |  |  |  |  |  |
| 368 | E.PS.050 | Analyze Problems |  | 44.48h | 2007-01-22 | 2007-01-29 |  | 0d | 49.42h | Fault Corrections | PS.050 | 110 | EXEC | PS | Post System Support |  |
| 369 | E.PS.060 | Monitor and Respond to System Problems |  | 19.77h | 2007-01-22 | 2007-01-24 |  | 0d | 24.71h | Problem Log | PS.060 | 110 | EXEC | PS | Post System Support |  |
| 370 | E.ACT.PF | **Plan for Future** |  | 3.09d | 2007-01-22 | 2007-01-25 | 359 | 2.47d | 24.71h |  |  |  |  |  |  |  |
| 371 | E.PS.135 | Determine Future Functional Enhancements |  | 24.71h | 2007-01-22 | 2007-01-25 |  | 2.47d | 24.71h | Future Functional Enhancements | PS.135 | 110 | EXEC | PS | Post System Support |  |
| 372 | E.ACT.SO | **Sign-Off Milestone** |  | 1d? | 2007-01-29 | 2007-01-30 | 364, 370 | 0d |  |  |  |  |  |  |  |  |
| 373 | E.PMC.SO | Sign-Off Milestone | milestone | 1d? | 2007-01-29 | 2007-01-30 |  | 0d |  | Sign-Off Milestone |  |  |  |  |  |  |
| 374 | PC | **Project Closure** |  | 16h? | 2007-01-30 | 2007-02-01 |  | 0d |  |  | PC | null |  |  |  |  |
| 375 | PC.ACT.GA | **Gain Acceptance** |  | 1d? | 2007-01-30 | 2007-01-31 | 372 | 0d |  |  | PMC.PCSUM1 | 190 | MGMT | PMC | Project Management Control | OG |
| 376 | PC.SM.050 | Gain Acceptance |  | 1d? | 2007-01-30 | 2007-01-31 |  | 0d |  | Final Acceptance Certificate |  |  |  |  |  |  |
| 377 | PC.ACT.CPC | **Close Processes and Contract** |  | 1d? | 2007-01-31 | 2007-02-01 | 375 | 0d |  | Closed Processes and Contract |  |  |  |  |  |  |
| 378 | PC.SM.060 | Close Scope Management |  | 1d? | 2007-01-31 | 2007-02-01 |  | 0d |  | Closed Scope Management |  |  |  |  |  |  |
| 379 | PC.SM.070 | Identify Future System Enhancements |  | 1d? | 2007-01-31 | 2007-02-01 |  | 0d |  | Future System Enhancements |  |  |  |  |  |  |
| 380 | PC.FM.050 | Close Project Financials |  | 1d? | 2007-01-31 | 2007-02-01 |  | 0d |  | Closed Project Financials |  |  |  |  |  |  |
| 381 | PC.WM.060 | Close Work Management |  | 1d? | 2007-01-31 | 2007-02-01 |  | 0d |  | Closed Work Management |  |  |  |  |  |  |
| 382 | PC.RKM.060 | Conduct Post-Production Risk Assessment |  | 1d? | 2007-01-31 | 2007-02-01 |  | 0d |  | Post-Production Risk Assessment |  |  |  |  |  |  |
| 383 | PC.IPM.050 | Produce Final Issue and Problem Report and Close Log(s) |  | 1d? | 2007-01-31 | 2007-02-01 |  | 0d |  | Closed Issue and Problem Log |  |  |  |  |  |  |
| 384 | PC.STM.070 | Release Staff |  | 1d? | 2007-01-31 | 2007-02-01 |  | 0d |  | Released Staff |  |  |  |  |  |  |
| 385 | PC.CMM.060 | Submit Final Reports |  | 1d? | 2007-01-31 | 2007-02-01 |  | 0d |  | Final Reports |  |  |  |  |  |  |
| 386 | PC.QM.060 | Conduct Post Production Quality Review |  | 1d? | 2007-01-31 | 2007-02-01 |  | 0d |  | Post-Production Quality Review |  |  |  |  |  |  |
| 387 | PC.CM.080 | Close Configuration Management |  | 1d? | 2007-01-31 | 2007-02-01 |  | 0d |  | Closed Configuration Management |  |  |  |  |  |  |
| 388 | PC.IFM.050 | Close Infrastructure |  | 1d? | 2007-01-31 | 2007-02-01 |  | 0d |  | Closed Infrastructure |  |  |  |  |  |  |
| 389 | PC.PCM.040 | Close Contract |  | 1d? | 2007-01-31 | 2007-02-01 |  | 0d |  | Closed Contract |  |  |  |  |  |  |
| 390 | PC.OCHM.040 | Establish Follow-Up Process |  | 1d? | 2007-01-31 | 2007-02-01 |  | 0d |  | Follow-Up Process |  |  |  |  |  |  |

| ID | WBS | Task | Duration | Start | Finish | Predecessors | Total slack | Text1 | Text2 | Text8 | Text3 | Text6 | Text7 | Text18 |
| --- | --- | --- | --- | --- | --- | --- | --- | --- | --- | --- | --- | --- | --- | --- |
| 391 | PC.ACT.DLLAP | **Document Lessons Learned and Archive Project** | 1d? | 2007-01-31 | 2007-02-01 | 375 | 0d |  |  |  |  |  |  |  |
| 392 | PC.CMM.040 | Document Lessons Learned | 1d? | 2007-01-31 | 2007-02-01 |  | 0d | Lessons Learned |  |  |  |  |  |  |
| 393 | PC.CMM.050 | Turn Over Project Documentation (Project Archives) | 1d? | 2007-01-31 | 2007-02-01 |  | 0d | Project Archives |  |  |  |  |  |  |
| 394 | PGM | **Program Management** | 8h? | 2006-05-31 | 2006-05-31 |  | 0d |  | PGM | null |  |  |  |  |
| 395 | PGM.ACT.PGM | **Perform PGM Program Management** | 1d? | 2006-05-31 | 2006-05-31 |  | 0d |  | PMC.PGMSUM | 190 | OG | PMC | Project Management Control | MGMT |
| 396 | PGM.PMC.PGMSUM1 | Perform Program Management Activities | 1d? | 2006-05-31 | 2006-05-31 |  | 0d | Program Management Activities |  |  |  |  |  |  |
