# Technology Full Lifecycle Project Workplan

Schedule from MS Project, 2006-05-31 to 2007-01-30.
Oracle Corp.
Copyright © 2006, 2016, Oracle and/or its affiliates. All rights reserved.

## Calendars

- Standard: Mon-Fri 08:00-12:00, 13:00-17:00; Sat-Sun off.

## Resources

| Resource | Group | Rate |
| --- | --- | --- |
| Offshore Onsite - Database Architect | Any | 10 |
| Offshore Onsite - Developer | Any | 10 |
| Offshore Onsite - J2EE Architect | Any | 10 |
| Offshore Onsite - Project Manager | Any | 10 |
| Offshore Onsite - System Architect | Any | 10 |
| Offshore Onsite - Team Leader | Any | 10 |
| Offshore Remote - Database Architect | Any | 10 |
| Offshore Remote - Database Designer | Any | 10 |
| Offshore Remote - Developer | Any | 10 |
| Offshore Remote - J2EE Architect | Any | 10 |
| Offshore Remote - J2EE Developer | Any | 10 |
| Offshore Remote - Project Manager | Any | 10 |
| Offshore Remote - System Architect | Any | 10 |
| Offshore Remote - Team Leader | Any | 10 |
| Offshore Remote - User Interface Designer | Any | 10 |
| Onsite - Business Analyst | Any | 10 |
| Onsite - Database Administrator | Any | 10 |
| Onsite - Database Architect | Any | 10 |
| Onsite - Database Designer | Any | 10 |
| Onsite - Developer | Any | 10 |
| Onsite - Facilitator | Any | 10 |
| Onsite - J2EE Architect | Any | 10 |
| Onsite - J2EE Developer | Any | 10 |
| Onsite - Lead Application Developer | Oracle | 10 |
| Onsite - Lead Quality Assurance | Any | 10 |
| Onsite - Lead Tester | Any | 10 |
| Onsite - Network Engineer | Oracle | 10 |
| Onsite - Object Designer | Any | 10 |
| Onsite - Oracle Executive Sponsor | Oracle | 10 |
| Onsite - Process Manager | Any | 10 |
| Onsite - Program Manager | Any | 10 |
| Onsite - Project Administrator | Oracle | 10 |
| Onsite - Project Manager | Any | 10 |
| Onsite - Quality Auditor | Any | 10 |
| Onsite - Quality Manager | Any | 10 |
| Onsite - Scribe | Any | 10 |
| Onsite - System Administrator | Any | 10 |
| Onsite - System Analyst | Any | 10 |
| Onsite - System Architect | Any | 10 |
| Onsite - System Integrator Architect | Any | 10 |
| Onsite - Team Leader | Any | 10 |
| Onsite - Tester | Any | 10 |
| Onsite - Tool Specialist | Oracle | 10 |

## Schedule

| ID | WBS | Task | Duration | Start | Finish | Predecessors | Total slack | Work | Text5 | Text8 | Text2 | Text6 | Text7 | Text18 | Text1 |
| --- | --- | --- | --- | --- | --- | --- | --- | --- | --- | --- | --- | --- | --- | --- | --- |
| 1 | OUM | **Oracle Unifed Method** | 174.79d? | 2006-05-31 | 2007-01-30 |  | 0d | 6195.09h | 31/05/2006 | null |  |  |  |  |  |
| 2 | ALL | **OUM - Technology Full Lifecycle Project Workplan** | 1398.32h? | 2006-05-31 | 2007-01-30 |  | 0d | 6195.09h |  | null |  |  |  |  |  |
| 3 | PS | **Project Start Up** | 5d? | 2006-05-31 | 2006-06-06 |  | 0d |  |  | null | PS |  |  |  |  |
| 4 | PS.ACT.RBC | **Review Bid and Contract** | 1d? | 2006-05-31 | 2006-05-31 |  | 0d |  |  | 190 | PMC.PSSUM1 | PMC | Project Management Control | MGMT |  |
| 5 | PS.BT.010 | Review and Analyze Bid Material | 1d? | 2006-05-31 | 2006-05-31 |  | 0d |  |  |  |  |  |  |  | Reviewed and Analyzed Bid Material |
| 6 | PS.BT.020 | Review and Confirm Business Case | 1d? | 2006-05-31 | 2006-05-31 |  | 0d |  |  |  |  |  |  |  | Confirmed Business Case |
| 7 | PS.BT.030 | Identify Project Stakeholders | 1d? | 2006-05-31 | 2006-05-31 |  | 0d |  |  |  |  |  |  |  | Identified Project Stakeholders |
| 8 | PS.BT.040 | Review and Accept Project Budget | 1d? | 2006-05-31 | 2006-05-31 |  | 0d |  |  |  |  |  |  |  | Accepted Project Budget |
| 9 | PS.RKM .020 | Conduct Baseline Risk Assessment | 1d? | 2006-05-31 | 2006-05-31 |  | 0d |  |  |  |  |  |  |  | Baseline Risk Assessment |
| 10 | PS.ACT.RPAC | **Review Project Assets with Customer** | 1d? | 2006-06-01 | 2006-06-01 | 4 | 0d |  |  |  |  |  |  |  |  |
| 11 | PS.BT.050 | Review Contract with Customer | 1d? | 2006-06-01 | 2006-06-01 |  | 0d |  |  |  |  |  |  |  | Reviewed Contract |
| 12 | PS.BT.060 | Review Project Approach with Customer | 1d? | 2006-06-01 | 2006-06-01 |  | 0d |  |  |  |  |  |  |  | Reviewed Project Approach |
| 13 | PS.BT.070 | Create Project Management Framework | 1d? | 2006-06-01 | 2006-06-01 |  | 0d |  |  |  |  |  |  |  | Project Management Framework |
| 14 | PS.ACT.VSSOS | **Validate Scope, Stakeholders and OCM Strategy** | 1d? | 2006-06-02 | 2006-06-02 | 10 | 0d |  |  |  |  |  |  |  |  |
| 15 | PS.SM.010 | Define and Confirm Scope | 1d? | 2006-06-02 | 2006-06-02 |  | 0d |  |  |  |  |  |  |  | Validated Scope |
| 16 | PS.CMM.010 | Conduct Project Stakeholder Analysis | 1d? | 2006-06-02 | 2006-06-02 |  | 0d |  |  |  |  |  |  |  | Project Stakeholder Analysis |
| 17 | PS.OCHM.010 | Understand Customer's Organizational Change Management Strategy | 1d? | 2006-06-02 | 2006-06-02 |  | 0d |  |  |  |  |  |  |  | Customer's Organizational Change Management Strategy |
| 18 | PS.ACT.DW | **Develop Workplan** | 1d? | 2006-06-05 | 2006-06-05 | 14 | 0d |  |  |  |  |  |  |  |  |
| 19 | PS.WM.010 | Develop Baseline Project Workplan | 1d? | 2006-06-05 | 2006-06-05 |  | 0d |  |  |  |  |  |  |  | Baseline Project Workplan |
| 20 | PS.ACT.DSPB | **Develop Staff Plan and Budget** | 1d? | 2006-06-05 | 2006-06-05 | 14 | 0d |  |  |  |  |  |  |  |  |
| 21 | PS.FM.010 | Refine Project Budget | 1d? | 2006-06-05 | 2006-06-05 |  | 0d |  |  |  |  |  |  |  | Approved Project Budget |
| 22 | PS.STM.010 | Plan Resource Requirements | 1d? | 2006-06-05 | 2006-06-05 |  | 0d |  |  |  |  |  |  |  | Resource Plan |
| 23 | PS.STM.030 | Staff Project | 1d? | 2006-06-05 | 2006-06-05 |  | 0d |  |  |  |  |  |  |  | Staffed Project |
| 24 | PS.STM.040 | Prepare Orientation Guide(s) | 1d? | 2006-06-05 | 2006-06-05 |  | 0d |  |  |  |  |  |  |  | Orientation Guide |

| ID | WBS | Task | Duration | Start | Finish | Predecessors | Total slack | Text1 |
| --- | --- | --- | --- | --- | --- | --- | --- | --- |
| 25 | PS.ACT.CPMP | **Complete Project Management Plan** | 1d? | 2006-06-06 | 2006-06-06 | 18, 20 | 0d |  |
| 26 | PS.SM.020 | Develop Scope Change Management Processes | 1d? | 2006-06-06 | 2006-06-06 |  | 0d | Scope Change Management Procedures |
| 27 | PS.FM.020 | Develop Financial Management Plan | 1d? | 2006-06-06 | 2006-06-06 |  | 0d | Financial Management Plan |
| 28 | PS.WM.020 | Develop Work Management Execution and Control Processes and Policies | 1d? | 2006-06-06 | 2006-06-06 |  | 0d | Work Management Plan |
| 29 | PS.RKM.010 | Develop Risk Management Plan | 1d? | 2006-06-06 | 2006-06-06 |  | 0d | Risk Management Plan |
| 30 | PS.IPM.010 | Develop Issue Management Strategy | 1d? | 2006-06-06 | 2006-06-06 |  | 0d | Issue Management Strategy |
| 31 | PS.IPM.020 | Develop Problem Management Strategy | 1d? | 2006-06-06 | 2006-06-06 |  | 0d | Problem Management Strategy |
| 32 | PS.STM.020 | Develop Staff Management Plan | 1d? | 2006-06-06 | 2006-06-06 |  | 0d | Staff Management Plan |
| 33 | PS.CMM.020 | Develop Project Team Communication Plan | 1d? | 2006-06-06 | 2006-06-06 |  | 0d | Project Team Communication Plan |
| 34 | PS.QM.010 | Develop Quality Management Plan | 1d? | 2006-06-06 | 2006-06-06 |  | 0d | Quality Management Plan |
| 35 | PS.QM.020 | Develop and Document Quality Control and Reporting Process | 1d? | 2006-06-06 | 2006-06-06 |  | 0d | Quality Control and Reporting Process |
| 36 | PS.CM.010 | Develop Configuration Management Strategy and Processes | 1d? | 2006-06-06 | 2006-06-06 |  | 0d | Configuration Management Plan and Processes |
| 37 | PS.CM.030 | Create Project Documentation Management Plan | 1d? | 2006-06-06 | 2006-06-06 |  | 0d | Documentation Management Plan |
| 38 | PS.IFM.010 | Develop Infrastructure Management Plan | 1d? | 2006-06-06 | 2006-06-06 |  | 0d | Infrastructure Management Plan |
| 39 | PS.PCM.010 | Develop Procurement Strategy and Process | 1d? | 2006-06-06 | 2006-06-06 |  | 0d | Procurement Strategy and Process |
| 40 | PS.OCHM.020 | Identify Change Management Warning Signs | 1d? | 2006-06-06 | 2006-06-06 |  | 0d | Change Management Warning Signs |
| 41 | PS.ACT.EPI | **Establish Project Infrastructure** | 1d? | 2006-06-06 | 2006-06-06 | 18, 20 | 0d |  |
| 42 | PS.FM.030 | Set Up Time and Expense Tracking | 1d? | 2006-06-06 | 2006-06-06 |  | 0d | Time and Expense Tracking |
| 43 | PS.RKM.030 | Develop Risk Management System | 1d? | 2006-06-06 | 2006-06-06 |  | 0d | Risk Management System |
| 44 | PS.IPM.030 | Develop Issue and Problem Management System | 1d? | 2006-06-06 | 2006-06-06 |  | 0d | Issue and Problem Management System |
| 45 | PS.CM.020 | Obtain Configuration Management Tools | 1d? | 2006-06-06 | 2006-06-06 |  | 0d | Configuration Management Plan |
| 46 | PS.IFM.020 | Establish Team Work Environment | 1d? | 2006-06-06 | 2006-06-06 |  | 0d | Team Work Environment |
| 47 | PS.IFM.030 | Establish Technical Infrastructure | 1d? | 2006-06-06 | 2006-06-06 |  | 0d | Established Technical Infrastructure |
| 48 | PS.PCM.020 | Procure Goods and Contracted Services | 1d? | 2006-06-06 | 2006-06-06 |  | 0d | Service Orders |

| ID | WBS | Task | Duration | Start | Finish | Predecessors | Total slack | Text2 | Text8 | Text1 |
| --- | --- | --- | --- | --- | --- | --- | --- | --- | --- | --- |
| 49 | PEC | **Project Execution and Control** | 1d? | 2006-06-07 | 2006-06-07 |  | 0d | PEC | null |  |
| 50 | PEC.ACT.MSAA | **Manage Scope, Acceptance and Approvals** | 1d? | 2006-06-07 | 2006-06-07 | 41 | 0d |  |  |  |
| 51 | PEC.SM.030 | Manage Scope | 1d? | 2006-06-07 | 2006-06-07 |  | 0d |  |  | Managed Scope |
| 52 | PEC.SM.040 | Manage Acceptance | 1d? | 2006-06-07 | 2006-06-07 |  | 0d |  |  | Managed Acceptance |
| 53 | PEC.WM.050 | Manage Approvals | 1d? | 2006-06-07 | 2006-06-07 |  | 0d |  |  | Managed Approvals |
| 54 | PEC.ACT.MPF | **Manage Project Finances** | 1d? | 2006-06-07 | 2006-06-07 | 41 | 0d |  |  |  |
| 55 | PEC.FM.040 | Manage Project Financials | 1d? | 2006-06-07 | 2006-06-07 |  | 0d |  |  | Managed Project Finances |
| 56 | PEC.ACT.MPW | **Manage Project Workplan** | 1d? | 2006-06-07 | 2006-06-07 | 41 | 0d |  |  |  |
| 57 | PEC.WM.030 | Manage Project Workplan | 1d? | 2006-06-07 | 2006-06-07 |  | 0d |  |  | Project Workplan |
| 58 | PEC.WM.040 | Track Schedule Performance | 1d? | 2006-06-07 | 2006-06-07 |  | 0d |  |  | Scheduled Performance |
| 59 | PEC.ACT.MRIP | **Manage Risks, Issues and Problems** | 1d? | 2006-06-07 | 2006-06-07 | 41 | 0d |  |  |  |
| 60 | PEC.RKM.040 | Manage Risk | 1d? | 2006-06-07 | 2006-06-07 |  | 0d |  |  | Managed Risk |
| 61 | PEC.RKM.050 | Monitor and Control Risk | 1d? | 2006-06-07 | 2006-06-07 |  | 0d |  |  | Assessed Risk |
| 62 | PEC.IPM.040 | Manage Issues and Problems | 1d? | 2006-06-07 | 2006-06-07 |  | 0d |  |  | Managed Issues and Problems |
| 63 | PEC.ACT.OMT | **Orient and Manage Team** | 1d? | 2006-06-07 | 2006-06-07 | 41 | 0d |  |  |  |
| 64 | PEC.QM.030 | Conduct Project Team Quality Management Orientation | 1d? | 2006-06-07 | 2006-06-07 |  | 0d |  |  | Project Team Quality Management Orientation |
| 65 | PEC.STM.050 | Conduct Team Orientation(s) | 1d? | 2006-06-07 | 2006-06-07 |  | 0d |  |  | Oriented Team |
| 66 | PEC.STM.060 | Manage Project Team | 1d? | 2006-06-07 | 2006-06-07 |  | 0d |  |  | Managed Project Team |
| 67 | PEC.ACT.MCOP | **Manage Communications and OCM Plans** | 1d? | 2006-06-07 | 2006-06-07 | 41 | 0d |  |  |  |
| 68 | PEC.CMM.030 | Manage Project Team Communication | 1d? | 2006-06-07 | 2006-06-07 |  | 0d |  |  | Managed Project Team Communication |
| 69 | PEC.OCHM.030 | Execute Change and Communication Plan | 1d? | 2006-06-07 | 2006-06-07 |  | 0d |  |  | Executed Change and Communication Plan |
| 70 | PEC.ACT.MPQ | **Manage Project Quality** | 1d? | 2006-06-07 | 2006-06-07 | 41 | 0d |  |  |  |
| 71 | PEC.QM.040 | Manage Quality Control | 1d? | 2006-06-07 | 2006-06-07 |  | 0d |  |  | Quality Control |
| 72 | PEC.QM.050 | Perform Quality Assurance | 1d? | 2006-06-07 | 2006-06-07 |  | 0d |  |  | Managed Quality Assurance |

| ID | WBS | Task | Duration | Start | Finish | Predecessors | Total slack | Work | Text1 | Text8 | Text2 | Text12 | Text18 | Text6 | Text7 | Text3 |
| --- | --- | --- | --- | --- | --- | --- | --- | --- | --- | --- | --- | --- | --- | --- | --- | --- |
| 73 | PEC.ACT.CECRM | **Create and Execute Configuration and Release Management** | 1d? | 2006-06-07 | 2006-06-07 | 41 | 0d |  |  |  |  |  |  |  |  |  |
| 74 | PEC.CM.040 | Create and Execute Software Configuration Management Plan | 1d? | 2006-06-07 | 2006-06-07 |  | 0d |  | Software Configuration Management Plan |  |  |  |  |  |  |  |
| 75 | PEC.CM.050 | Create and Execute Software Release Management Plan | 1d? | 2006-06-07 | 2006-06-07 |  | 0d |  | Software Release Management Plan |  |  |  |  |  |  |  |
| 76 | PEC.CM.060 | Create and Execute Environment and Patch Management Plan | 1d? | 2006-06-07 | 2006-06-07 |  | 0d |  | Environment and Patch Management Plan |  |  |  |  |  |  |  |
| 77 | PEC.CM.070 | Create and Execute Configuration Management Control Plan | 1d? | 2006-06-07 | 2006-06-07 |  | 0d |  | Configuration Management Control Plan |  |  |  |  |  |  |  |
| 78 | PEC.ACT.MMI | **Manage and Maintain Infrastructure** | 1d? | 2006-06-07 | 2006-06-07 | 41 | 0d |  |  |  |  |  |  |  |  |  |
| 79 | PEC.IFM.040 | Manage and Maintain Infrastructure | 1d? | 2006-06-07 | 2006-06-07 |  | 0d |  | Maintained Infrastructure |  |  |  |  |  |  |  |
| 80 | PEC.ACT.APGCS | **Administer Procurement of Goods and Contracted Services** | 1d? | 2006-06-07 | 2006-06-07 | 41 | 0d |  |  |  |  |  |  |  |  |  |
| 81 | PEC.PCM.030 | Administer Procurement of Goods and Contracted Services | 1d? | 2006-06-07 | 2006-06-07 |  | 0d |  | Managed Procurement of Goods and Services |  |  |  |  |  |  |  |
| 82 | A | **Inception** | 93.29h? | 2006-06-07 | 2006-06-22 |  | 0d | 332.4h |  | null |  |  |  |  |  |  |
| 83 | A.ACT.GBRI | **Gather Business Requirements - Inception** | 6.19d? | 2006-06-08 | 2006-06-16 | 25, 125 | 0d | 137.21h |  | null | PMC.BBRSI | BRSI | MGMT |  |  |  |
| 84 | A.RD.001 | Detail Business and System Objectives | 14.57h | 2006-06-08 | 2006-06-09 |  | 4.37d | 24.29h | Business and System Objectives | 10 | RD.001 | BRSI | EXEC | RD | Business Requirements Definition |  |
| 85 | A.RD.003 | Identify Viewpoints | 1d? | 2006-06-08 | 2006-06-08 |  | 5.19d |  | Viewpoints List |  |  |  |  |  |  |  |
| 86 | A.RD.005 | Create System Context Diagram | 3.64h | 2006-06-08 | 2006-06-08 |  | 5.74d | 6.07h | System Context Diagram | 10 | RD.005 | BRSI | EXEC | RD | Business Requirements Definition |  |
| 87 | A.RD.011.1 | Develop Future Process Model | 3.64h | 2006-06-08 | 2006-06-08 |  | 5.74d | 6.07h | Future Process Model | 10 | RD.011 | BRSI | EXEC | RD | Business Requirements Definition |  |
| 88 | A.RD.020 | Obtain High-Level Business Descriptions | 3.64h | 2006-06-08 | 2006-06-08 |  | 5.74d | 6.07h | High-Level Business Descriptions | 10 | RD.020 | BRSI | EXEC | RD | Business Requirements Definition |  |
| 89 | A.RA.015 | Develop Business Use Case Model | 49.55h | 2006-06-08 | 2006-06-16 |  | 0d | 82.58h | Business Use Case Model | 20 | RA.015 | BSI | EXEC | RA | Requirements Analysis |  |
| 90 | A.RD.065 | Develop Domain Model (Business Entities) | 3.64h | 2006-06-08 | 2006-06-08 |  | 5.74d | 6.07h | Domain Model | 10 | RD.065 | BRSI | EXEC | RD | Business Requirements Definition |  |
| 91 | A.RD.012 | Document Present and Future Organization Structures | 3.64h | 2006-06-08 | 2006-06-08 |  | 5.74d | 6.07h | Present and Future Organization Structures | 10 | RD.012 | BRSI | EXEC | RD | Business Requirements Definition |  |
| 92 | A.RD.015 | Determine KPI Collection and Reporting Strategy | 1d? | 2006-06-08 | 2006-06-08 |  | 5.19d |  | Key Business Strategies and Objectives |  |  |  |  |  |  |  |
| 93 | A.ACT.ECBB | **Establish Current Business Baseline** | 1d? | 2006-06-16 | 2006-06-19 | 83 | 0d |  |  |  |  |  |  |  |  |  |
| 94 | A.RD.034 | Document Current Business Baseline Metrics | 1d? | 2006-06-16 | 2006-06-19 |  | 0d |  | Current Business Baseline Metrics |  |  |  |  |  |  |  |
| 95 | A.ACT.GR | **Gather Solution Requirements** | 2.21d? | 2006-06-16 | 2006-06-20 | 83 | 0d | 65.94h |  |  |  |  |  |  |  |  |
| 96 | A.RD.042.1 | Develop Glossary | 6.07h | 2006-06-16 | 2006-06-16 |  | 1.45d | 6.07h | Glossary | 10 | RD.042.1 | BRSI | EXEC | RD | Business Requirements Definition | OG |
| 97 | A.RD.045.1 | Prioritize Requirements (MoSCoW) | 7.29h | 2006-06-16 | 2006-06-19 |  | 1.3d | 12.15h | MoSCoW List | 10 | RD.045 | BRSI | EXEC | RD | Business Requirements Definition | OG |
| 98 | A.RD.055 | Detail Supplemental Requirements | 2.43h | 2006-06-16 | 2006-06-16 |  | 1.91d | 6.07h | Supplemental Requirements | 10 | RD.055 | BRSI | EXEC | RD | Business Requirements Definition |  |
| 99 | A.RD.130.1 | Develop Baseline Architecture Description | 7.29h | 2006-06-16 | 2006-06-19 |  | 1.3d | 12.15h | Architecture Description | 10 | RD.130.1 | BSI | EXEC | RD | Business Requirements Definition |  |
| 100 | A.RA.019 | Define Project Reference Architecture | 1d? | 2006-06-16 | 2006-06-19 |  | 1.21d |  | Project Reference Architecture |  |  |  |  |  |  |  |
| 101 | A.RA.021.1 | Capture User Stories | 1d? | 2006-06-16 | 2006-06-19 |  | 1.21d |  | User Story |  |  |  |  |  |  |  |
| 102 | A.RA.023.1 | Develop Use Case Model | 17.7h | 2006-06-16 | 2006-06-20 |  | 0d | 29.5h | Use Case Model | 20 | RA.023.1 | REI | EXEC | RA | Requirements Analysis |  |
| 103 | A.RA.025.1 | Identify Candidate Services | 1d? | 2006-06-16 | 2006-06-19 |  | 1.21d |  | Service Portfolio - Candidate Services |  |  |  |  |  |  |  |
| 104 | A.RA.027.1 | Identify Candidate Business Rules | 1d? | 2006-06-16 | 2006-06-19 |  | 1.21d |  | Candidate Business Rules |  |  |  |  |  |  |  |
| 105 | A.RA.028.1 | Populate Business Rules Repository | 1d? | 2006-06-16 | 2006-06-19 |  | 1.21d |  | Populated Business Rules Repository |  |  |  |  |  |  |  |

| ID | WBS | Task | Duration | Start | Finish | Predecessors | Total slack | Work | Text1 | Text2 | Text6 | Text7 | Text8 | Text12 | Text18 |
| --- | --- | --- | --- | --- | --- | --- | --- | --- | --- | --- | --- | --- | --- | --- | --- |
| 106 | A.ACT.CR | **Consolidate Solution Requirements** | 0.3d | 2006-06-20 | 2006-06-20 | 95 | 1.95d | 15.79h |  |  |  |  |  |  |  |
| 107 | A.RD.140.1 | Create Requirements Specification | 1.46h | 2006-06-20 | 2006-06-20 |  | 2.07d | 3.64h | Requirements Specification | RD.140.1 | RD | Business Requirements Definition | 10 | BRSI | EXEC |
| 108 | A.RD.150.1 | Review Requirements Specification | 2.43h | 2006-06-20 | 2006-06-20 |  | 1.95d | 12.15h | Reviewed Requirements Specification | RD.150.1 | RD | Business Requirements Definition | 10 |  | EXEC |
| 109 | A.ACT.CCPI | **Create Conceptual Prototype - Inception** | 1.56d | 2006-06-20 | 2006-06-21 | 95 | 0d | 37.12h |  |  |  |  |  |  |  |
| 110 | A.IM.005.1 | Develop Conceptual Prototype | 12.49h | 2006-06-20 | 2006-06-21 |  | 0d | 31.22h | Conceptual Prototype | IM.005 | IM | Implementation | 50 | BSI | EXEC |
| 111 | A.RA.030.1 | Validate Conceptual Prototype | 2.36h | 2006-06-20 | 2006-06-20 |  | 0d | 5.9h | Validated Conceptual Prototype | RA.030 | RA | Requirements Analysis | 20 |  | EXEC |
| 112 | A.ACT.GSP | **Gather Supporting Requirements** | 2.25d? | 2006-06-20 | 2006-06-22 | 83, 95 | 0d | 76.34h |  |  |  |  |  |  |  |
| 113 | A.CV.010 | Define Data Acquisition and Conversion Requirements | 11.1h | 2006-06-20 | 2006-06-21 |  | 0.87d | 13.88h | Data Acquisition and Conversion Requirements | CV.010 | CV | Data Conversion | 90 | BSI | EXEC |
| 114 | A.TE.005.1 | Determine Testing Requirements | 11.1h | 2006-06-20 | 2006-06-21 |  | 0.87d | 13.88h | Testing Requirements | TE.005 | TE | Business System Testing | 60 | BSI | EXEC |
| 115 | A.PT.010 | Conduct Performance Management Workshop | 18.04h | 2006-06-20 | 2006-06-22 |  | 0d | 27.76h | Performance Management Workshop Results | PT.010 | PT | Performance Testing | 70 |  | EXEC |
| 116 | A.TA.010 | Conduct Technical Architecture Workshop | 12.49h | 2006-06-20 | 2006-06-21 |  | 0.69d | 20.82h | Technical Architecture Workshop Results | TA.010 | TA | Application and Technical Architecture | 80 |  | EXEC |
| 117 | A.DO.010 | Define Documentation Requirements and Strategy | 1d? | 2006-06-20 | 2006-06-21 |  | 1.25d |  | Documentation Requirements and Strategy |  |  |  |  |  |  |
| 118 | A.RD.070 | Determine Audit and Control Requirements | 1d? | 2006-06-20 | 2006-06-21 |  | 1.25d |  | Audit And Control Requirements |  |  |  |  |  |  |
| 119 | A.ACT.CMAHC | **Create and Manage Ad Hoc Communications** | 1d? | 2006-06-07 | 2006-06-07 | 25 | 0d |  |  |  |  |  |  |  |  |
| 120 | A.OCM.010 | Create and Manage Ad Hoc Communications | 1d? | 2006-06-07 | 2006-06-07 |  | 0d |  | Ad Hoc Communications |  |  |  |  |  |  |
| 121 | A.ACT.CEAW | **Conduct Executive Alignment Workshop** | 1d? | 2006-06-16 | 2006-06-19 | 83 | 0d |  |  |  |  |  |  |  |  |
| 122 | A.OCM.020 | Prepare for Executive Alignment Workshop | 1d? | 2006-06-16 | 2006-06-19 |  | 0d |  | Executive Alignment Workshop Materials |  |  |  |  |  |  |
| 123 | A.OCM.030 | Conduct Executive Alignment Workshop | 1d? | 2006-06-16 | 2006-06-19 |  | 0d |  | Executive Business Objectives and Governance Rules |  |  |  |  |  |  |
| 124 | A.OCM.040 | Build and Deploy Sponsorship Program | 1d? | 2006-06-16 | 2006-06-19 |  | 0d |  | Sponsorship Program |  |  |  |  |  |  |
| 125 | A.ACT.TPT | **Train Project Team** | 1d? | 2006-06-07 | 2006-06-07 | 25 | 0d |  |  |  |  |  |  |  |  |
| 126 | A.TR.010.1 | Define Training Strategy | 1d? | 2006-06-07 | 2006-06-07 |  | 0d |  | Education and Training Strategy |  |  |  |  |  |  |
| 127 | A.TR.020 | Prepare Project Team Learning Plan | 1d? | 2006-06-07 | 2006-06-07 |  | 0d |  | Project Team Learning Plan |  |  |  |  |  |  |
| 128 | A.TR.030 | Prepare Project Team Learning Environment | 1d? | 2006-06-07 | 2006-06-07 |  | 0d |  | Project Team Learning Environment |  |  |  |  |  |  |
| 129 | A.TR.040 | Develop Project Team Learningware | 1d? | 2006-06-07 | 2006-06-07 |  | 0d |  | Project Team Learningware |  |  |  |  |  |  |
| 130 | A.TR.050 | Conduct Project Team Learning Events | 1d? | 2006-06-07 | 2006-06-07 |  | 0d |  | Skilled Project Team |  |  |  |  |  |  |

| ID | WBS | Task | Type | Duration | Start | Finish | Predecessors | Total slack | Work | Text1 | Text2 | Text8 | Text18 | Text6 | Text7 | Text12 |
| --- | --- | --- | --- | --- | --- | --- | --- | --- | --- | --- | --- | --- | --- | --- | --- | --- |
| 131 | A.ACT.CAWI | **Conduct Alignment Workshops - Inception** |  | 1d? | 2006-06-19 | 2006-06-20 | 121 | 0d |  |  |  |  |  |  |  |  |
| 132 | A.OCM.050 | Prepare for Team-Building Workshop |  | 1d? | 2006-06-19 | 2006-06-20 |  | 0d |  | Team-Building Workshop Materials |  |  |  |  |  |  |
| 133 | A.OCM.060 | Conduct Team-Building Workshop |  | 1d? | 2006-06-19 | 2006-06-20 |  | 0d |  | Cohesive Project Team |  |  |  |  |  |  |
| 134 | A.OCM.070 | Design Managers Project Alignment Workshop |  | 1d? | 2006-06-19 | 2006-06-20 |  | 0d |  | Managers Project Alignment Workshop Materials |  |  |  |  |  |  |
| 135 | A.OCM.080 | Conduct Managers Project Alignment Workshop |  | 1d? | 2006-06-19 | 2006-06-20 |  | 0d |  | Aligned Managers |  |  |  |  |  |  |
| 136 | A.OCM.090 | Design Change Agent Workshop |  | 1d? | 2006-06-19 | 2006-06-20 |  | 0d |  | Change Agent Workshop Materials |  |  |  |  |  |  |
| 137 | A.OCM.100 | Conduct Change Agent Workshop |  | 1d? | 2006-06-19 | 2006-06-20 |  | 0d |  | Enabled Change Agents |  |  |  |  |  |  |
| 138 | A.ACT.CCRA | **Conduct Change Readiness Assessment** |  | 1d? | 2006-06-19 | 2006-06-20 | 121 | 0d |  |  |  |  |  |  |  |  |
| 139 | A.OCM.110 | Develop Change Readiness Assessment Strategy and Tools |  | 1d? | 2006-06-19 | 2006-06-20 |  | 0d |  | Change Readiness Assessment Strategy and Tools |  |  |  |  |  |  |
| 140 | A.OCM.120 | Conduct Change Readiness Assessment and Analyze Data |  | 1d? | 2006-06-19 | 2006-06-20 |  | 0d |  | Readiness Assessment Analysis and Recommendations |  |  |  |  |  |  |
| 141 | A.OCM.130 | Build Communication Strategy and Change Management Roadmap |  | 1d? | 2006-06-19 | 2006-06-20 |  | 0d |  | Communication Strategy and Change Management Roadmap |  |  |  |  |  |  |
| 142 | A.ACT.DCMRCCI | **Deploy Change Management Roadmap and Communication Campaign - Inception** |  | 1d? | 2006-06-20 | 2006-06-21 | 138 | 0d |  |  |  |  |  |  |  |  |
| 143 | A.OCM.140 | Develop Communication Campaign |  | 1d? | 2006-06-20 | 2006-06-21 |  | 0d |  | Communication Campaign |  |  |  |  |  |  |
| 144 | A.OCM.150.1 | Conduct Change Management Roadmap and Communication Campaign |  | 1d? | 2006-06-20 | 2006-06-21 |  | 0d |  | Change Management Roadmap and Communication Events |  |  |  |  |  |  |
| 145 | A.ACT.LCOB | **Lifecycle Objective Milestone** |  | 0d | 2006-06-22 | 2006-06-22 | 83, 95, 106, 112, 125 | 0d |  |  |  |  |  |  |  |  |
| 146 | A.PMC.LCOB | Lifecycle Objective Milestone | milestone | 0h | 2006-06-22 | 2006-06-22 |  | 0d |  | Lifecycle Objective Milestone | PMC.LCOB | null | MGMT |  |  |  |
| 147 | B | **Elaboration** |  | 330.02h? | 2006-06-22 | 2006-08-18 |  | 0d | 1840.7h |  |  | null |  |  |  |  |
| 148 | B.ACT.DPS | **Define Project Strategy** |  | 2.82d? | 2006-06-22 | 2006-06-27 | 145 | 0d | 42.67h |  |  |  |  |  |  |  |
| 149 | B.TE.005.2 | Determine Testing Requirements |  | 1d? | 2006-06-22 | 2006-06-23 |  | 1.82d |  | Testing Requirements |  |  |  |  |  |  |
| 150 | B.TE.010 | Develop Testing Strategy |  | 22.54h | 2006-06-22 | 2006-06-27 |  | 0d | 22.53h | Testing Strategy | TE.010 | 60 | EXEC | TE | Business System Testing | REI |
| 151 | B.CV.020 | Define Data Acquisition, Conversion and Data Quality Strategy |  | 8.05h | 2006-06-22 | 2006-06-23 |  | 1.81d | 20.13h | Data Acquisition, Conversion and Data Quality Strategy | CV.020 | 90 | EXEC | CV | Data Conversion | REI |
| 152 | B.DO.020 | Define Documentation Standards and Procedures |  | 1d? | 2006-06-22 | 2006-06-23 |  | 1.82d |  | Documentation Standards and Procedures |  |  |  |  |  |  |
| 153 | B.TR.010.2 | Define Training Strategy |  | 1d? | 2006-06-22 | 2006-06-23 |  | 1.82d |  | Education and Training Strategy |  |  |  |  |  |  |
| 154 | B.TS.020.1 | Define Cutover Strategy |  | 1d? | 2006-06-22 | 2006-06-23 |  | 1.82d |  | Cutover Strategy |  |  |  |  |  |  |

| ID | WBS | Task | Duration | Start | Finish | Predecessors | Total slack | Free slack | Work | Text1 | Text2 | Text6 | Text7 | Text8 | Text18 | Text12 |
| --- | --- | --- | --- | --- | --- | --- | --- | --- | --- | --- | --- | --- | --- | --- | --- | --- |
| 155 | B.ACT.DI | **Define Infrastructure** | 8.49d | 2006-06-22 | 2006-07-05 | 145 | 14.91d | 0d | 301.92h |  |  |  |  |  |  |  |
| 156 | B.TA.020 | Define Technical Architecture Requirements and Strategy | 25.06h | 2006-06-22 | 2006-06-27 |  | 20.27d |  | 30.18h | Technical Architecture Requirements and Strategy | TA.020 | TA | Application and Technical Architecture | 80 | EXEC |  |
| 157 | B.TA.030 | Define Integration Requirements and Strategy | 36.23h | 2006-06-22 | 2006-06-29 |  | 18.88d |  | 45.28h | Integration Architecture Strategy | TA.030 | TA | Application and Technical Architecture | 80 | EXEC |  |
| 158 | B.TA.040 | Define Reporting and Information Access Strategy | 24.15h | 2006-06-22 | 2006-06-27 |  | 20.39d |  | 30.18h | Reporting and Information Access Strategy | TA.040 | TA | Application and Technical Architecture | 80 | EXEC |  |
| 159 | B.TA.050 | Define Disaster Recovery Strategy | 12.08h | 2006-06-22 | 2006-06-26 |  | 21.89d |  | 15.1h | Disaster Recovery Strategy | TA.050 | TA | Application and Technical Architecture | 80 | EXEC |  |
| 160 | B.TA.060 | Define System Operations and Management Strategy | 25.66h | 2006-06-22 | 2006-06-27 |  | 20.2d |  | 30.2h | System Operations and Management Strategy | TA.060 | TA | Application and Technical Architecture | 80 | EXEC |  |
| 161 | B.TA.070 | Define Initial Architecture and Application Mapping | 27.17h | 2006-06-22 | 2006-06-28 |  | 20.01d |  | 30.18h | Initial Architecture and Application Mapping | TA.070 | TA | Application and Technical Architecture | 80 | EXEC |  |
| 162 | B.TA.080 | Define Backup and Recovery Strategy | 67.93h | 2006-06-22 | 2006-07-05 |  | 14.91d |  | 75.48h | Backup and Recovery Strategy | TA.080 | TA | Application and Technical Architecture | 80 | EXEC |  |
| 163 | B.TA.090 | Develop Security and Control Strategy | 36.23h | 2006-06-22 | 2006-06-29 |  | 18.88d |  | 45.3h | Security and Control Strategy | TA.090 | TA | Application and Technical Architecture | 80 | EXEC |  |
| 164 | B.ACT.PEE | **Prepare Environments - Elaboration** | 1.94d? | 2006-07-05 | 2006-07-07 | 145, 155 | 14.91d |  | 41.07h |  |  |  |  |  |  |  |
| 165 | B.IM.007.1 | Prepare Development Environment | 1d? | 2006-07-05 | 2006-07-06 |  | 15.85d |  |  | Development Environment |  |  |  |  |  |  |
| 166 | B.TE.018.1 | Prepare Static Test Data | 15.5h | 2006-07-05 | 2006-07-07 |  | 14.91d |  | 31h | Static Test Data | TE.018 | TE | Business System Testing | 60 | EXEC |  |
| 167 | B.TE.038.1 | Prepare Integration Test Environment | 1d? | 2006-07-05 | 2006-07-06 |  | 15.85d |  |  | Integration Test Environment |  |  |  |  |  |  |
| 168 | B.TE.060.1 | Prepare System Test Environment | 1d? | 2006-07-05 | 2006-07-06 |  | 15.85d |  |  | System Test Environment |  |  |  |  |  |  |
| 169 | B.CV.030.1 | Prepare Conversion Environment (Initial Load) | 6.04h | 2006-07-05 | 2006-07-05 |  | 16.09d |  | 10.07h | Conversion Environment (Initial Load) | CV.030 | CV | Data Conversion | 90 | EXEC | REI |
| 170 | B.DO.040 | Prepare Documentation Environment | 1d? | 2006-07-05 | 2006-07-06 |  | 15.85d |  |  | Documentation Environment |  |  |  |  |  |  |
| 171 | B.ACT.GBRE | **Gather Business Requirements - Elaboration** | 1d? | 2006-06-22 | 2006-06-23 | 145 | 0d |  |  |  |  |  |  |  |  |  |
| 172 | B.RD.011.2 | Develop Future Process Model | 1d? | 2006-06-22 | 2006-06-23 |  | 0d |  |  | Future Process Model |  |  |  |  |  |  |
| 173 | B.ACT.DTP | **Develop Test Plans** | 1.41d? | 2006-06-27 | 2006-06-28 | 148 | 0d |  | 11.27h |  |  |  |  |  |  |  |
| 174 | B.TE.015.1 | Develop Integration Test Plan | 11.27h | 2006-06-27 | 2006-06-28 |  | 0d |  | 11.27h | Integration Test Plan | TE.015 | TE | Business System Testing | 60 | EXEC | REI |
| 175 | B.TE.050.1 | Develop System Test Plan | 1d? | 2006-06-27 | 2006-06-28 |  | 0d |  |  | System Test Plan |  |  |  |  |  |  |
| 176 | B.TE.080 | Develop Systems Integration Test Plan | 1d? | 2006-06-27 | 2006-06-28 |  | 0d |  |  | Systems Integration Test Plan |  |  |  |  |  |  |
| 177 | B.TE.082 | Develop Acceptance Test Plan | 1d? | 2006-06-27 | 2006-06-28 |  | 0d |  |  | Acceptance Test Plan |  |  |  |  |  |  |
| 178 | B.ACT.DUCM | **Develop Use Case Model** | 3.02d? | 2006-06-23 | 2006-06-28 | 171 | 0d |  | 40.26h |  |  |  |  |  |  |  |
| 179 | B.RA.021.2 | Capture User Stories | 1d? | 2006-06-23 | 2006-06-26 |  | 2.02d |  |  | User Story |  |  |  |  |  |  |
| 180 | B.RA.023.2 | Develop Use Case Model | 24.16h | 2006-06-23 | 2006-06-28 |  | 0d |  | 40.26h | Use Case Model | RA.023.2 | RA | Requirements Analysis | 20 | EXEC |  |

| ID | WBS | Task | Duration | Start | Finish | Predecessors | Total slack | Work | Text1 | Text2 | Text6 | Text7 | Text8 | Text12 | Text18 | Text3 |
| --- | --- | --- | --- | --- | --- | --- | --- | --- | --- | --- | --- | --- | --- | --- | --- | --- |
| 181 | B.ACT.CCPE | **Create Conceptual Prototype - Elaboration** | 1.56d | 2006-06-28 | 2006-06-30 | 178 | 0d | 37.12h |  |  |  |  |  |  |  |  |
| 182 | B.IM.005.2 | Develop Conceptual Prototype | 12.49h | 2006-06-28 | 2006-06-30 |  | 0d | 31.22h | Conceptual Prototype | IM.005 | IM | Implementation | 50 | BSI | EXEC |  |
| 183 | B.RA.030.2 | Validate Conceptual Prototype | 2.36h | 2006-06-28 | 2006-06-28 |  | 0d | 5.9h | Validated Conceptual Prototype | RA.030 | RA | Requirements Analysis | 20 |  | EXEC |  |
| 184 | B.ACT.CS | **Consolidate Specification** | 3.68d? | 2006-06-28 | 2006-07-04 | 171, 178 | 0d | 120.77h |  | PMC.BREI |  |  | null | REI | MGMT |  |
| 185 | B.RD.042.2 | Develop Glossary | 16.91h | 2006-06-28 | 2006-06-30 |  | 1.57d | 16.91h | Glossary | RD.042.2 | RD | Business Requirements Definition | 10 |  | EXEC | OG |
| 186 | B.RD.045.2 | Prioritize Requirements (MoSCoW) | 1d? | 2006-06-28 | 2006-06-29 |  | 2.68d |  | MoSCoW List |  |  |  |  |  |  |  |
| 187 | B.RD.140.2 | Create Requirements Specification | 29.47h | 2006-06-28 | 2006-07-04 |  | 0d | 73.67h | Requirements Specification | RD.140.3 | RD | Business Requirements Definition | 10 | REI | EXEC |  |
| 188 | B.RD.150.2 | Review Requirements Specification | 6.04h | 2006-06-28 | 2006-06-29 |  | 2.93d | 30.19h | Reviewed Requirements Specification | RD.150.3 | RD | Business Requirements Definition | 10 | REI | EXEC |  |
| 189 | B.RA.025.2 | Identify Candidate Services | 1d? | 2006-06-28 | 2006-06-29 |  | 2.68d |  | Service Portfolio - Candidate Services |  |  |  |  |  |  |  |
| 190 | B.RA.027.2 | Identify Candidate Business Rules | 1d? | 2006-06-28 | 2006-06-29 |  | 2.68d |  | Candidate Business Rules |  |  |  |  |  |  |  |
| 191 | B.RA.028.2 | Populate Business Rules Repository | 1d? | 2006-06-28 | 2006-06-29 |  | 2.68d |  | Populated Business Rules Repository |  |  |  |  |  |  |  |
| 192 | B.RA.180.1 | Review Use Case Model | 1d? | 2006-06-28 | 2006-06-29 |  | 2.68d |  | Reviewed Use Case Model |  |  |  |  |  |  |  |
| 193 | B.ACT.BSA | **Baseline Software Architecture** | 3.17d? | 2006-07-04 | 2006-07-07 | 184 | 0d | 62.4h |  |  |  |  |  |  |  |  |
| 194 | B.RA.035 | Develop High-Level Software Architecture Description | 12.07h | 2006-07-04 | 2006-07-05 |  | 1.66d | 20.13h | Architecture Description | RA.035 | RA | Requirements Analysis | 20 | REI | EXEC |  |
| 195 | B.AN.040.1 | Develop Analysis Architecture Description | 1d? | 2006-07-04 | 2006-07-05 |  | 2.17d |  | Architecture Description |  |  |  |  |  |  |  |
| 196 | B.DS.040.1 | Develop Design Architecture Description | 25.37h | 2006-07-04 | 2006-07-07 |  | 0d | 42.27h | Architecture Description | DS.010.1 | DS | Design | 40 | RADI | EXEC |  |
| 197 | B.ACT.DUCD | **Develop Use Case Details** | 4.53d | 2006-07-07 | 2006-07-14 | 193 | 0d | 60.38h |  |  |  |  |  |  |  |  |
| 198 | B.RA.024.1 | Develop Use Case Details | 36.23h | 2006-07-07 | 2006-07-14 |  | 0d | 60.38h | Use Case Specification | RA.024.1 | RA | Requirements Analysis | 20 | REI | EXEC |  |
| 199 | B.ACT.AE | **Analyze - Elaboration** | 3.65d? | 2006-07-14 | 2006-07-19 | 197 | 0d | 128.42h |  |  |  |  |  |  |  |  |
| 200 | B.AN.050.1 | Analyze Data | 29.23h | 2006-07-14 | 2006-07-19 |  | 0d | 48.71h | Data Analysis | AN.020.1 | AN | Analysis | 30 | REI | EXEC |  |
| 201 | B.AN.060.1 | Analyze Behavior | 1d? | 2006-07-14 | 2006-07-17 |  | 2.65d |  | Behavior Analysis |  |  |  |  |  |  |  |
| 202 | B.AN.070.1 | Analyze Business Rules | 1d? | 2006-07-14 | 2006-07-17 |  | 2.65d |  | Business Rules Analysis |  |  |  |  |  |  |  |
| 203 | B.AN.080.1 | Analyze Services | 1d? | 2006-07-14 | 2006-07-17 |  | 2.65d |  | Service Portfolio - Proposed Services |  |  |  |  |  |  |  |
| 204 | B.AN.085.1 | Define Service | 1d? | 2006-07-14 | 2006-07-17 |  | 2.65d |  | Service Definition |  |  |  |  |  |  |  |
| 205 | B.RA.026.1 | Populate Services Repository | 1d? | 2006-07-14 | 2006-07-17 |  | 2.65d |  | Populated Services Repository |  |  |  |  |  |  |  |
| 206 | B.AN.090.1 | Analyze User Interface | 1d? | 2006-07-14 | 2006-07-17 |  | 2.65d |  | User Interface Analysis |  |  |  |  |  |  |  |
| 207 | B.AN.100.1 | Prepare Analysis Specification | 1d? | 2006-07-14 | 2006-07-17 |  | 2.65d |  | Analysis Specification |  |  |  |  |  |  |  |
| 208 | B.AN.110.1 | Review Analysis Model | 23.91h | 2006-07-14 | 2006-07-19 |  | 0.67d | 79.71h | Reviewed Analysis Model | AN.050.1 | AN | Analysis | 30 | REI | EXEC |  |

| ID | WBS | Task | Duration | Start | Finish | Predecessors | Total slack | Work | Text1 | Text2 | Text6 | Text7 | Text8 | Text18 | Text12 |
| --- | --- | --- | --- | --- | --- | --- | --- | --- | --- | --- | --- | --- | --- | --- | --- |
| 209 | B.ACT.DE | **Design - Elaboration** | 5.28d? | 2006-07-19 | 2006-07-27 | 199 | 0d | 380.45h |  |  |  |  |  |  |  |
| 210 | B.DS.050 | Determine Design and Build Standards | 1.69h | 2006-07-19 | 2006-07-19 |  | 5.07d | 4.22h | Design and Build Standards | DS.015 | DS | Design | 40 | EXEC |  |
| 211 | B.DS.060 | Define Business Rules Implementation Strategy | 1d? | 2006-07-19 | 2006-07-20 |  | 4.28d |  | Business Rules Implementation Strategy |  |  |  |  |  |  |
| 212 | B.DS.070 | Define SOA Implementation Strategy | 1d? | 2006-07-19 | 2006-07-20 |  | 4.28d |  | SOA Implementation Strategy |  |  |  |  |  |  |
| 213 | B.DS.080.1 | Design Software Components | 21.14h | 2006-07-19 | 2006-07-24 |  | 2.64d | 42.27h | Software Component Design | DS.040.1 | DS | Design | 40 | EXEC | RADI |
| 214 | B.DS.090.1 | Design Data | 1d? | 2006-07-19 | 2006-07-20 |  | 4.28d |  | Component Data Design |  |  |  |  |  |  |
| 215 | B.DS.100.1 | Design Behavior | 1d? | 2006-07-19 | 2006-07-20 |  | 4.28d |  | Component Behavior Design |  |  |  |  |  |  |
| 216 | B.DS.110.1 | Design Business Rules | 1d? | 2006-07-19 | 2006-07-20 |  | 4.28d |  | Business Rules Design |  |  |  |  |  |  |
| 217 | B.DS.120.1 | Design Services | 1d? | 2006-07-19 | 2006-07-20 |  | 4.28d |  | Service Design |  |  |  |  |  |  |
| 218 | B.DS.130.1 | Design User Interface | 42.27h | 2006-07-19 | 2006-07-27 |  | 0d | 84.53h | User Interface Design | DS.020.1 | DS | Design | 40 | EXEC | RADI |
| 219 | B.DS.140.1 | Prepare Design Specification | 42.27h | 2006-07-19 | 2006-07-27 |  | 0d | 84.55h | Design Specification | DS.030.1 | DS | Design | 40 | EXEC | RADI |
| 220 | B.DS.150.1 | Develop Database Design | 42.27h | 2006-07-19 | 2006-07-27 |  | 0d | 84.55h | Logical Database Design | DS.060.1 | DS | Design | 40 | EXEC | RADI |
| 221 | B.DS.160.1 | Review Design Model | 16.07h | 2006-07-19 | 2006-07-21 |  | 3.27d | 80.33h | Reviewed Design Model | DS.050.1 | DS | Design | 40 | EXEC | RADI |
| 222 | B.ACT.DCCTSE | **Develop Custom Component Test Scripts - Elaboration** | 1d? | 2006-07-27 | 2006-07-28 | 209 | 14.91d |  |  |  |  |  |  |  |  |
| 223 | B.TE.020.1 | Develop Unit Test Scripts | 1d? | 2006-07-27 | 2006-07-28 |  | 14.91d |  | Unit Test Scripts |  |  |  |  |  |  |
| 224 | B.TE.035.1 | Create Integration Test Scenarios | 1d? | 2006-07-27 | 2006-07-28 |  | 14.91d |  | Integration Test Scenarios |  |  |  |  |  |  |
| 225 | B.ACT.DSTSE | **Develop System Test Scenarios - Elaboration** | 1d? | 2006-07-27 | 2006-07-28 | 209 | 0d |  |  |  |  |  |  |  |  |
| 226 | B.TE.025.2 | Create System Test Scenarios | 1d? | 2006-07-27 | 2006-07-28 |  | 0d |  | System Test Scenarios |  |  |  |  |  |  |
| 227 | B.ACT.DVCSP | **Develop and Validate Custom Software Prototypes** | 15.91d? | 2006-07-27 | 2006-08-17 | 209 | 0d | 382.52h |  |  |  |  |  |  |  |
| 228 | B.IM.010 | Develop Functional Prototype | 35.59h | 2006-07-27 | 2006-08-02 |  | 11.46d | 88.97h | Functional Prototype | IM.010 | IM | Implementation | 50 | EXEC | REI |
| 229 | B.RA.085 | Validate Functional Prototype | 16.11h | 2006-07-27 | 2006-07-31 |  | 13.9d | 40.27h | Validated Functional Prototype | RA.085 | RA | Requirements Analysis | 20 | EXEC | REI |
| 230 | B.IM.020 | Develop Architectural Foundation | 127.29h | 2006-07-27 | 2006-08-17 |  | 0d | 212.15h | Architectural Foundation | IM.020 | IM | Implementation | 50 | EXEC | RADI |
| 231 | B.IM.085 | Develop User Interface Standards Prototype | 13.69h | 2006-07-27 | 2006-07-28 |  | 14.2d | 34.2h | User Interface Standards Prototype | IM.085 | IM | Implementation | 50 | EXEC |  |
| 232 | B.RA.095 | Validate User Interface Standards Prototype | 2.78h | 2006-07-27 | 2006-07-27 |  | 15.56d | 6.93h | Validated User Interface Standards Prototype | IM.095 | IM | Implementation | 50 | EXEC |  |
| 233 | B.IM.040.1 | Implement Database | 1d? | 2006-07-27 | 2006-07-28 |  | 14.91d |  | Implemented Database |  |  |  |  |  |  |
| 234 | B.IM.053.1 | Register Services | 1d? | 2006-07-27 | 2006-07-28 |  | 14.91d |  | Populated Services Registry |  |  |  |  |  |  |
| 235 | B.IM.055.1 | Perform Business Rules Implementation (Rules Engine) | 1d? | 2006-07-27 | 2006-07-28 |  | 14.91d |  | Implemented Business Rules (Rules Engine) |  |  |  |  |  |  |
| 236 | B.IM.060.1 | Perform Component Review | 1d? | 2006-07-27 | 2006-07-28 |  | 14.91d |  | Component Review Results |  |  |  |  |  |  |

| ID | WBS | Task | Duration | Start | Finish | Predecessors | Total slack | Work | Text2 | Text6 | Text7 | Text8 | Text18 | Text12 |
| --- | --- | --- | --- | --- | --- | --- | --- | --- | --- | --- | --- | --- | --- | --- |
| 237 | B.ACT.PCCTE | **Perform Custom Component Testing - Elaboration** | 1d? | 2006-08-17 | 2006-08-18 | 222, 227 | 0d |  |  |  |  |  |  |  |
| 238 | B.TE.030.1 | Perform Unit Test | 1d? | 2006-08-17 | 2006-08-18 |  | 0d |  |  |  |  |  |  |  |
| 239 | B.TE.040.1 | Perform Integration Test | 1d? | 2006-08-17 | 2006-08-18 |  | 0d |  |  |  |  |  |  |  |
| 240 | B.ACT.PSTE | **Perform System Test - Elaboration** | 1d? | 2006-07-28 | 2006-07-31 | 164, 225 | 0d |  |  |  |  |  |  |  |
| 241 | B.TE.070.1 | Perform System Test | 1d? | 2006-07-28 | 2006-07-31 |  | 0d |  |  |  |  |  |  |  |
| 242 | B.ACT.PPM | **Plan Performance Management** | 4.83d | 2006-06-22 | 2006-06-29 | 145 | 0d | 161.02h |  |  |  |  |  |  |
| 243 | B.PT.020 | Define Performance Management Requirements and Strategy | 12.88h | 2006-06-22 | 2006-06-26 |  | 0d | 16.1h | PT.020 | PT | Performance Testing | 70 | EXEC |  |
| 244 | B.PT.030 | Define Performance Testing Strategy | 14.49h | 2006-06-22 | 2006-06-26 |  | 0d | 16.1h | PT.030 | PT | Performance Testing | 70 | EXEC |  |
| 245 | B.PT.040 | Identify Performance Testing Models and Scenarios | 25.76h | 2006-06-22 | 2006-06-27 |  | 0d | 32.2h | PT.040 | PT | Performance Testing | 70 | EXEC |  |
| 246 | B.PT.050 | Design Performance Test Scripts and Programs | 38.65h | 2006-06-22 | 2006-06-29 |  | 0d | 48.32h | PT.050 | PT | Performance Testing | 70 | EXEC |  |
| 247 | B.PT.060 | Design Performance Test Data and Load Programs | 28.99h | 2006-06-22 | 2006-06-28 |  | 0d | 48.3h | PT.060 | PT | Performance Testing | 70 | EXEC |  |
| 248 | B.ACT.PACDE | **Prepare to Acquire and Convert Data - Elaboration** | 5.28d? | 2006-06-27 | 2006-07-04 | 148 | 32.15d | 70.45h |  |  |  |  |  |  |
| 249 | B.CV.025 | Define Data Acquisition and Conversion Standards | 1d? | 2006-06-27 | 2006-06-28 |  | 36.44d |  |  |  |  |  |  |  |
| 250 | B.RA.160 | Conduct Business Data Source Gap Analysis | 1d? | 2006-06-27 | 2006-06-28 |  | 36.44d |  |  |  |  |  |  |  |
| 251 | B.CV.027.1 | Perform Data Mapping | 1d? | 2006-06-27 | 2006-06-28 |  | 36.44d |  |  |  |  |  |  |  |
| 252 | B.RA.170.1 | Conduct Data Quality Assessment | 1d? | 2006-06-27 | 2006-06-28 |  | 36.44d |  |  |  |  |  |  |  |
| 253 | B.CV.035.1 | Define Manual Conversion Procedures (Initial Load) | 1d? | 2006-06-27 | 2006-06-28 |  | 36.44d |  |  |  |  |  |  |  |
| 254 | B.CV.040.1 | Design Conversion Components (Initial Load) | 42.27h | 2006-06-27 | 2006-07-04 |  | 32.15d | 70.45h | CV.040 | CV | Data Conversion | 90 | EXEC | RADI |
| 255 | B.CV.050.1 | Prepare Conversion Test Plans (Initial Load) | 1d? | 2006-06-27 | 2006-06-28 |  | 36.44d |  |  |  |  |  |  |  |
| 256 | B.CV.055.1 | Implement Conversion Components (Initial Load) | 1d? | 2006-06-27 | 2006-06-28 |  | 36.44d |  |  |  |  |  |  |  |
| 257 | B.CV.060.1 | Perform Conversion Component Unit Test (Initial Load) | 1d? | 2006-06-27 | 2006-06-28 |  | 36.44d |  |  |  |  |  |  |  |
| 258 | B.ACT.PBPII | **Prepare Business Process Impact Inventory** | 1d? | 2006-06-23 | 2006-06-26 | 171 | 0d |  |  |  |  |  |  |  |
| 259 | B.OCM.160 | Prepare Business Process Impact Inventory | 1d? | 2006-06-23 | 2006-06-26 |  | 0d |  |  |  |  |  |  |  |
| 260 | B.ACT.DCMRCCE | **Deploy Change Management Roadmap and Communication Campaign - Elaboration** | 1d? | 2006-06-22 | 2006-06-23 | 145 | 0d |  |  |  |  |  |  |  |
| 261 | B.OCM.150.2 | Conduct Change Management Roadmap and Communication Campaign | 1d? | 2006-06-22 | 2006-06-23 |  | 0d |  |  |  |  |  |  |  |
| 262 | B.OCM.155.1 | Monitor Change Management Roadmap and Communication Campaign Effectiveness | 1d? | 2006-06-22 | 2006-06-23 |  | 0d |  |  |  |  |  |  |  |

Notes:
- 238: Text1: Unit-Tested Components
- 239: Text1: Integration-Tested Components
- 241: Text1: System-Tested Applications
- 243: Text1: Performance Management Requirements and Strategy
- 244: Text1: Performance Testing Strategy
- 245: Text1: Performance Testing Models and Scenarios
- 246: Text1: Performance Test Scripts and Programs Design
- 247: Text1: Performance Test Data and Load Programs Design
- 249: Text1: Data Acquisition and Conversion Standards
- 250: Text1: Business Data Source Gap Analysis
- 251: Text1: Data Mapping
- 252: Text1: High-Level Data Quality Assessment
- 253: Text1: Manual Conversion Procedures (Initial Load)
- 254: Text1: Conversion Component Designs (Initial Load)
- 255: Text1: Conversion Test Plans (Initial Load)
- 256: Text1: Conversion Components (Initial Load)
- 257: Text1: Unit-Tested Conversion Components (Initial Load)
- 259: Text1: Business Process Impact Inventory
- 261: Text1: Change Management Roadmap and Communication Events
- 262: Text1: Change Management Roadmap and Communication Campaign Effectiveness Assessment

| ID | WBS | Task | Type | Duration | Start | Finish | Predecessors | Total slack | Work | Text1 | Text2 | Text8 | Text18 | Text3 | Text6 | Text7 | Text12 |
| --- | --- | --- | --- | --- | --- | --- | --- | --- | --- | --- | --- | --- | --- | --- | --- | --- | --- |
| 263 | B.ACT.LCAR | **Lifecycle Architecture Milestone** |  | 0d | 2006-08-17 | 2006-08-17 | 155, 171, 184, 193, 209, 227, 248 | 0d |  |  |  |  |  |  |  |  |  |
| 264 | B.PMC.LCAR | Lifecycle Architecture Milestone | milestone | 0h | 2006-08-17 | 2006-08-17 |  | 0d |  | Lifecycle Architecture Milestone | PMC.LCAR | null | MGMT |  |  |  |  |
| 265 | C | **Construction** |  | 514.73h? | 2006-08-17 | 2006-11-16 |  | 0d | 2960.61h |  |  | null |  |  |  |  |  |
| 266 | C.ACT.FR | **Finalize Requirements** |  | 10.25d? | 2006-08-17 | 2006-09-01 | 263 | 0d | 291.52h |  |  |  |  |  |  |  |  |
| 267 | C.RD.042.3 | Develop Glossary |  | 8.75h | 2006-08-17 | 2006-08-21 |  | 9.16d | 8.75h | Glossary | RD.042.3 | 10 | EXEC | OG | RD | Business Requirements Definition |  |
| 268 | C.RD.045.3 | Prioritize Requirements (MoSCoW) |  | 1d? | 2006-08-17 | 2006-08-18 |  | 9.25d |  | MoSCoW List |  |  |  |  |  |  |  |
| 269 | C.RD.130.2 | Develop Baseline Architecture Description |  | 47.23h | 2006-08-17 | 2006-08-25 |  | 4.35d | 78.71h | Architecture Description | RD.130.2 | 10 | EXEC |  | RD | Business Requirements Definition |  |
| 270 | C.RA.021.3 | Capture User Stories |  | 1d? | 2006-08-17 | 2006-08-18 |  | 9.25d |  | User Story |  |  |  |  |  |  |  |
| 271 | C.RA.023.3 | Develop Use Case Model |  | 82.03h | 2006-08-17 | 2006-09-01 |  | 0d | 136.72h | Use Case Model | RA.023.3 | 20 | EXEC |  | RA | Requirements Analysis |  |
| 272 | C.RA.024.2 | Develop Use Case Details |  | 6.12h | 2006-08-17 | 2006-08-18 |  | 9.49d | 10.2h | Use Case Specification | RA.024.2 | 20 | EXEC |  | RA | Requirements Analysis |  |
| 273 | C.RA.025.3 | Identify Candidate Services |  | 1d? | 2006-08-17 | 2006-08-18 |  | 9.25d |  | Service Portfolio - Candidate Services |  |  |  |  |  |  |  |
| 274 | C.RA.027.3 | Identify Candidate Business Rules |  | 1d? | 2006-08-17 | 2006-08-18 |  | 9.25d |  | Candidate Business Rules |  |  |  |  |  |  |  |
| 275 | C.RA.028.3 | Populate Business Rules Repository |  | 1d? | 2006-08-17 | 2006-08-18 |  | 9.25d |  | Populated Business Rules Repository |  |  |  |  |  |  |  |
| 276 | C.RA.180.2 | Review Use Case Model |  | 11.43h | 2006-08-17 | 2006-08-21 |  | 8.82d | 57.14h | Reviewed Use Case Model | RA.180.2 | 20 | EXEC |  | RA | Requirements Analysis |  |
| 277 | C.ACT.AC | **Analyze - Construction** |  | 1.23d? | 2006-09-01 | 2006-09-04 | 266 | 0d | 32.64h |  |  |  |  |  |  |  |  |
| 278 | C.AN.040.2 | Develop Analysis Architecture Description |  | 1d? | 2006-09-01 | 2006-09-04 |  | 0.23d |  | Architecture Description |  |  |  |  |  |  |  |
| 279 | C.AN.050.2 | Analyze Data |  | 9.8h | 2006-09-01 | 2006-09-04 |  | 0d | 16.32h | Data Analysis | AN.020.2 | 30 | EXEC |  | AN | Analysis | RADI |
| 280 | C.AN.060.2 | Analyze Behavior |  | 1d? | 2006-09-01 | 2006-09-04 |  | 0.23d |  | Behavior Analysis |  |  |  |  |  |  |  |
| 281 | C.AN.070.2 | Analyze Business Rules |  | 1d? | 2006-09-01 | 2006-09-04 |  | 0.23d |  | Business Rules Analysis |  |  |  |  |  |  |  |
| 282 | C.AN.080.2 | Analyze Services |  | 1d? | 2006-09-01 | 2006-09-04 |  | 0.23d |  | Service Portfolio - Proposed Services |  |  |  |  |  |  |  |
| 283 | C.AN.085.2 | Define Service |  | 1d? | 2006-09-01 | 2006-09-04 |  | 0.23d |  | Service Definition |  |  |  |  |  |  |  |
| 284 | C.RA.026.2 | Populate Services Repository |  | 1d? | 2006-09-01 | 2006-09-04 |  | 0.23d |  | Populated Services Repository |  |  |  |  |  |  |  |
| 285 | C.AN.090.2 | Analyze User Interface |  | 1d? | 2006-09-01 | 2006-09-04 |  | 0.23d |  | User Interface Analysis |  |  |  |  |  |  |  |
| 286 | C.AN.100.2 | Prepare Analysis Specification |  | 1d? | 2006-09-01 | 2006-09-04 |  | 0.23d |  | Analysis Specification |  |  |  |  |  |  |  |
| 287 | C.AN.110.2 | Review Analysis Model |  | 4.9h | 2006-09-01 | 2006-09-01 |  | 0.61d | 16.32h | Reviewed Analysis Model | AN.050.2 | 30 | EXEC |  | AN | Analysis | RADI |

| ID | WBS | Task | Duration | Start | Finish | Predecessors | Total slack | Free slack | Work | Text1 | Text2 | Text6 | Text7 | Text8 | Text18 |
| --- | --- | --- | --- | --- | --- | --- | --- | --- | --- | --- | --- | --- | --- | --- | --- |
| 288 | C.ACT.DC | **Design - Construction** | 5.47d? | 2006-09-04 | 2006-09-11 | 277 | 0d |  | 437.26h |  |  |  |  |  |  |
| 289 | C.DS.040.2 | Develop Design Architecture Description | 26.23h | 2006-09-04 | 2006-09-07 |  | 2.19d |  | 43.73h | Architectural Design Description | DS.010.2 | DS | Design | 40 | EXEC |
| 290 | C.DS.080.2 | Design Software Components | 21.86h | 2006-09-04 | 2006-09-07 |  | 2.73d |  | 43.73h | Software Component Design | DS.040.2 | DS | Design | 40 | EXEC |
| 291 | C.DS.090.2 | Design Data | 1d? | 2006-09-04 | 2006-09-05 |  | 4.47d |  |  | Component Data Design |  |  |  |  |  |
| 292 | C.DS.100.2 | Design Behavior | 43.72h | 2006-09-04 | 2006-09-11 |  | 0d |  | 87.45h | Component Behavior Design | DS.020.2 | DS | Design | 40 | EXEC |
| 293 | C.DS.110.2 | Design Business Rules | 1d? | 2006-09-04 | 2006-09-05 |  | 4.47d |  |  | Business Rules Design |  |  |  |  |  |
| 294 | C.DS.120.2 | Design Services | 1d? | 2006-09-04 | 2006-09-05 |  | 4.47d |  |  | Service Design |  |  |  |  |  |
| 295 | C.DS.130.2 | Design User Interface | 43.73h | 2006-09-04 | 2006-09-11 |  | 0d |  | 87.45h | User Interface Design | DS.030.2 | DS | Design | 40 | EXEC |
| 296 | C.DS.140.2 | Prepare Design Specification | 1d? | 2006-09-04 | 2006-09-05 |  | 4.47d |  |  | Design Specification |  |  |  |  |  |
| 297 | C.DS.150.2 | Develop Database Design | 43.73h | 2006-09-04 | 2006-09-11 |  | 0d |  | 87.45h | Logical Database Design | DS.060.2 | DS | Design | 40 | EXEC |
| 298 | C.DS.160.2 | Review Design Model | 17.49h | 2006-09-04 | 2006-09-06 |  | 3.28d |  | 87.45h | Reviewed Design Model | DS.050.2 | DS | Design | 40 | EXEC |
| 299 | C.ACT.PTP | **Perform Test Planning** | 2.77d? | 2006-08-17 | 2006-08-22 | 263 | 0d |  | 22.15h |  |  |  |  |  |  |
| 300 | C.TE.015.2 | Develop Integration Test Plan | 1d? | 2006-08-17 | 2006-08-18 |  | 0d |  |  | Integration Test Plan |  |  |  |  |  |
| 301 | C.TE.050.2 | Develop System Test Plan | 22.15h | 2006-08-17 | 2006-08-22 |  | 0d |  | 22.15h | System Test Plan | TE.050 | TE | Business System Testing | 60 | EXEC |
| 302 | C.ACT.PEC | **Prepare Environments - Construction** | 1d? | 2006-08-17 | 2006-08-18 | 263 | 35.99d | 4.28d |  |  |  |  |  |  |  |
| 303 | C.IM.007.2 | Prepare Development Environment | 1d? | 2006-08-17 | 2006-08-18 |  | 35.99d |  |  | Development Environment |  |  |  |  |  |
| 304 | C.TE.018.2 | Prepare Static Test Data | 1d? | 2006-08-17 | 2006-08-18 |  | 35.99d |  |  | Static Test Data |  |  |  |  |  |
| 305 | C.TE.038.2 | Prepare Integration Test Environment | 1d? | 2006-08-17 | 2006-08-18 |  | 35.99d |  |  | Integration Test Environment |  |  |  |  |  |
| 306 | C.ACT.DCCTSC | **Develop Custom Component Test Scripts - Construction** | 1.66d? | 2006-09-11 | 2006-09-13 | 288 | 24.49d |  | 16.62h |  |  |  |  |  |  |
| 307 | C.TE.020.2 | Develop Unit Test Scripts | 13.3h | 2006-09-11 | 2006-09-13 |  | 24.49d |  | 16.62h | Unit Test Scripts | TE.020 | TE | Business System Testing | 60 | EXEC |
| 308 | C.TE.035.2 | Create Integration Test Scenarios | 1d? | 2006-09-11 | 2006-09-12 |  | 25.15d |  |  | Integration Test Scenarios |  |  |  |  |  |
| 309 | C.ACT.DSTSC | **Develop System Test Scenarios - Construction** | 1d? | 2006-09-11 | 2006-09-12 | 263, 288 | 0d |  |  |  |  |  |  |  |  |
| 310 | C.TE.025.3 | Create System Test Scenarios | 1d? | 2006-09-11 | 2006-09-12 |  | 0d |  |  | System Test Scenarios |  |  |  |  |  |
| 311 | C.ACT.DSITS | **Develop Systems Integrations Test Scenarios** | 1d? | 2006-09-11 | 2006-09-12 | 288 | 0d |  |  |  |  |  |  |  |  |
| 312 | C.TE.090 | Develop Systems Integration Test Scenarios | 1d? | 2006-09-11 | 2006-09-12 |  | 0d |  |  | Systems Integration Test Scenarios |  |  |  |  |  |

| ID | WBS | Task | Duration | Start | Finish | Predecessors | Total slack | Work | Text1 | Text2 | Text6 | Text7 | Text8 | Text18 |
| --- | --- | --- | --- | --- | --- | --- | --- | --- | --- | --- | --- | --- | --- | --- |
| 313 | C.ACT.ICC | **Implement Custom Components** | 26.15d? | 2006-09-11 | 2006-10-18 | 288 | 0d | 1136.9h |  |  |  |  |  |  |
| 314 | C.IM.040.2 | Implement Database | 95.5h | 2006-09-11 | 2006-09-27 |  | 14.21d | 238.75h | Implemented Database | IM.040 | IM | Implementation | 50 | EXEC |
| 315 | C.IM.050 | Implement Components | 209.19h | 2006-09-11 | 2006-10-18 |  | 0d | 522.97h | Implemented Components | IM.050 | IM | Implementation | 50 | EXEC |
| 316 | C.IM.053.2 | Register Services | 1d? | 2006-09-11 | 2006-09-12 |  | 25.15d |  | Populated Services Registry |  |  |  |  |  |
| 317 | C.IM.055.2 | Perform Business Rules Implementation (Rules Engine) | 1d? | 2006-09-11 | 2006-09-12 |  | 25.15d |  | Implemented Business Rules (Rules Engine) |  |  |  |  |  |
| 318 | C.IM.060.2 | Perform Component Review | 25.02h | 2006-09-11 | 2006-09-14 |  | 23.02d | 125.06h | Component Review Results | IM.060 | IM | Implementation | 50 | EXEC |
| 319 | C.IM.070 | Assemble Components | 50.02h | 2006-09-11 | 2006-09-20 |  | 19.9d | 125.06h | Assembled Components | IM.070 | IM | Implementation | 50 | EXEC |
| 320 | C.IM.080 | Integrate Services | 100.05h | 2006-09-11 | 2006-09-28 |  | 13.64d | 125.06h | Integrated Services | IM.080 | IM | Implementation | 50 | EXEC |
| 321 | C.IM.090 | Create Installation Routines | 1d? | 2006-09-11 | 2006-09-12 |  | 25.15d |  | Installation Routines |  |  |  |  |  |
| 322 | C.TE.065 | Perform Installation Test | 1d? | 2006-09-11 | 2006-09-12 |  | 25.15d |  | Tested Installation Routines |  |  |  |  |  |
| 323 | C.ACT.PCCTC | **Perform Custom Component Testing - Construction** | 8.86d | 2006-10-18 | 2006-10-30 | 306, 313 | 0d | 177.24h |  |  |  |  |  |  |
| 324 | C.TE.030.2 | Perform Unit Test | 70.9h | 2006-10-18 | 2006-10-30 |  | 0d | 88.62h | Unit-Tested Components | TE.030 | TE | Business System Testing | 60 | EXEC |
| 325 | C.TE.040.2 | Perform Integration Test | 53.17h | 2006-10-18 | 2006-10-26 |  | 2.22d | 88.62h | Integration-Tested Components | TE.040 | TE | Business System Testing | 60 | EXEC |
| 326 | C.ACT.PST | **Prepare for System Test** | 2.21d | 2006-09-12 | 2006-09-15 | 302, 357 | 31.7d | 44.32h |  |  |  |  |  |  |
| 327 | C.TE.060.2 | Prepare System Test Environment | 17.72h | 2006-09-12 | 2006-09-15 |  | 31.7d | 44.32h | System Test Environment | TE.060 | TE | Business System Testing | 60 | EXEC |
| 328 | C.ACT.PSTC | **Perform System Test - Construction** | 10.38d? | 2006-10-30 | 2006-11-14 | 323, 326 | 0d | 138.47h |  |  |  |  |  |  |
| 329 | C.TE.070.2 | Perform System Test | 83.08h | 2006-10-30 | 2006-11-14 |  | 0d | 138.47h | System-Tested Applications | TE.070 | TE | Business System Testing | 60 | EXEC |
| 330 | C.TE.019.1 | Collect, Assess and Refine KPI Measurements | 1d? | 2006-10-30 | 2006-10-31 |  | 9.38d |  | Key Business Strategies and Objectives |  |  |  |  |  |
| 331 | C.ACT.PSIT | **Perform Systems Integration Test** | 1d? | 2006-11-14 | 2006-11-15 | 328 | 0d |  |  |  |  |  |  |  |
| 332 | C.TE.085 | Prepare Systems Integration Test Environment | 1d? | 2006-11-14 | 2006-11-15 |  | 0d |  | Systems Integration Test Environment |  |  |  |  |  |
| 333 | C.TE.100 | Perform Systems Integration Test | 1d? | 2006-11-14 | 2006-11-15 |  | 0d |  | Integration-Tested System |  |  |  |  |  |
| 334 | C.ACT.PPT | **Prepare for Performance Testing** | 9.47d | 2006-08-17 | 2006-08-31 | 263 | 0d | 145.77h |  |  |  |  |  |  |
| 335 | C.PT.070 | Build Performance Test Scripts and Programs | 75.79h | 2006-08-17 | 2006-08-31 |  | 0d | 94.73h | Performance Test Scripts and Programs | PT.070 | PT | Performance Testing | 70 | EXEC |
| 336 | C.PT.080 | Construct Performance Test Environment and Database | 14.58h | 2006-08-17 | 2006-08-21 |  | 0d | 36.45h | Performance Test Environment and Database | PT.080 | PT | Performance Testing | 70 | EXEC |
| 337 | C.PT.090 | Conduct Performance Test Dress Rehearsal | 8.75h | 2006-08-17 | 2006-08-21 |  | 0d | 14.58h | Validated Performance Test and Environment | PT.090 | PT | Performance Testing | 70 | EXEC |

| ID | WBS | Task | Duration | Start | Finish | Predecessors | Total slack | Free slack | Work | Text1 | Text2 | Text6 | Text7 | Text8 | Text18 | Text12 |
| --- | --- | --- | --- | --- | --- | --- | --- | --- | --- | --- | --- | --- | --- | --- | --- | --- |
| 338 | C.ACT.PT | **Prepare for Transition** | 1.91d | 2006-08-17 | 2006-08-21 | 263 | 0d |  | 41.08h |  |  |  |  |  |  |  |
| 339 | C.TA.100 | Define System Management Procedures | 6.12h | 2006-08-17 | 2006-08-18 |  | 1.15d |  | 6.12h | System Management Guide | TA.100 | TA | Application and Technical Architecture | 80 | EXEC |  |
| 340 | C.TA.110 | Define Operational Testing Plan | 5.6h | 2006-08-17 | 2006-08-18 |  | 1.21d |  | 7h | Operational Testing Plan | TA.110 | TA | Application and Technical Architecture | 80 | EXEC |  |
| 341 | C.TA.150 | Define Final Platform and Network Architecture | 4.28h | 2006-08-17 | 2006-08-18 |  | 1.38d |  | 6.12h | Final Platform and Network Architecture | TA.150 | TA | Application and Technical Architecture | 80 | EXEC |  |
| 342 | C.TA.160 | Define System Capacity Plan | 15.3h | 2006-08-17 | 2006-08-21 |  | 0d |  | 21.85h | System Capacity Plan | TA.160 | TA | Application and Technical Architecture | 80 | EXEC |  |
| 343 | C.ACT.PCO | **Prepare for Cutover** | 6.56d? | 2006-08-17 | 2006-08-28 | 263 | 56.78d |  | 58.3h |  |  |  |  |  |  |  |
| 344 | C.TS.020.2 | Define Cutover Strategy | 52.47h | 2006-08-17 | 2006-08-28 |  | 56.78d |  | 58.3h | Cutover Strategy | TS.010 | TS | Transition | 100 | EXEC |  |
| 345 | C.TS.030 | Develop Installation Plan | 1d? | 2006-08-17 | 2006-08-18 |  | 62.34d |  |  | Installation Plan |  |  |  |  |  |  |
| 346 | C.TS.040 | Design Production Support Infrastructure | 1d? | 2006-08-17 | 2006-08-18 |  | 62.34d |  |  | Production Support Infrastructure Design |  |  |  |  |  |  |
| 347 | C.ACT.TI | **Test Infrastructure** | 1.91d | 2006-08-21 | 2006-08-23 | 338 | 0d |  | 46.32h |  |  |  |  |  |  |  |
| 348 | C.TA.120 | Conduct Operational Testing | 15.3h | 2006-08-21 | 2006-08-23 |  | 0d |  | 21.85h | Operational Test Results | TA.120 | TA | Application and Technical Architecture | 80 | EXEC |  |
| 349 | C.TA.130 | Conduct Backup and Recovery Test | 8.57h | 2006-08-21 | 2006-08-22 |  | 0d |  | 12.23h | Backup and Recovery Test Results | TA.130 | TA | Application and Technical Architecture | 80 | EXEC |  |
| 350 | C.TA.140 | Conduct Disaster Recovery Test | 8.57h | 2006-08-21 | 2006-08-22 |  | 0d |  | 12.23h | Disaster Recovery Test Results | TA.140 | TA | Application and Technical Architecture | 80 | EXEC |  |
| 351 | C.ACT.PACDC | **Prepare to Acquire and Convert Data - Construction** | 5.28d? | 2006-08-17 | 2006-08-25 | 263 | 31.7d | 0d | 70.45h |  |  |  |  |  |  |  |
| 352 | C.CV.027.2 | Perform Data Mapping | 1d? | 2006-08-17 | 2006-08-18 |  | 35.99d |  |  | Data Mapping |  |  |  |  |  |  |
| 353 | C.RA.170.2 | Conduct Data Quality Assessment | 1d? | 2006-08-17 | 2006-08-18 |  | 35.99d |  |  | High-Level Data Quality Assessment |  |  |  |  |  |  |
| 354 | C.CV.035.2 | Define Manual Conversion Procedures (Initial Load) | 1d? | 2006-08-17 | 2006-08-18 |  | 35.99d |  |  | Manual Conversion Procedures (Initial Load) |  |  |  |  |  |  |
| 355 | C.CV.040.2 | Design Conversion Components (Initial Load) | 42.27h | 2006-08-17 | 2006-08-25 |  | 31.7d |  | 70.45h | Designed Data Conversion Components (Initial Load) | CV.040 | CV | Data Conversion | 90 | EXEC | RADI |
| 356 | C.CV.050.2 | Prepare Conversion Test Plans (Initial Load) | 1d? | 2006-08-17 | 2006-08-18 |  | 35.99d |  |  | Conversion Test Plans (initial Load) |  |  |  |  |  |  |
| 357 | C.ACT.ACDC | **Acquire and Convert Data - Construction** | 12.75d? | 2006-08-25 | 2006-09-12 | 302, 351 | 31.7d | 0d | 301.58h |  |  |  |  |  |  |  |
| 358 | C.CV.030.2 | Prepare Conversion Environment (Initial Load) | 6.04h | 2006-08-25 | 2006-08-25 |  | 43.7d |  | 10.07h | Conversion Environment (Initial Load) | CV.030 | CV | Data Conversion | 90 | EXEC | REI |
| 359 | C.CV.055.2 | Implement Conversion Components (Initial Load) | 102.03h | 2006-08-25 | 2006-09-12 |  | 31.7d |  | 204.06h | Implemented Conversion Components (Initial Load) | CV.050 | CV | Data Conversion | 90 | EXEC |  |
| 360 | C.CV.060.2 | Perform Conversion Component Unit Test (Initial Load) | 43.73h | 2006-08-25 | 2006-09-01 |  | 38.99d |  | 87.45h | Unit-Tested Conversion Components (Initial Load) | CV.060 | CV | Data Conversion | 90 | EXEC |  |
| 361 | C.CV.065.1 | Convert and Verify Data (Initial Load) | 1d? | 2006-08-25 | 2006-08-28 |  | 43.46d |  |  | Converted and Verified Data (Initial Load) |  |  |  |  |  |  |
| 362 | C.CV.068.1 | Clean Data | 1d? | 2006-08-25 | 2006-08-28 |  | 43.46d |  |  | Clean Legacy Data |  |  |  |  |  |  |

| ID | WBS | Task | Type | Duration | Start | Finish | Predecessors | Total slack |
| --- | --- | --- | --- | --- | --- | --- | --- | --- |
| 363 | C.ACT.PD | **Produce Documentation** |  | 1d? | 2006-08-17 | 2006-08-18 | 263 | 0d |
| 364 | C.DO.060 | Publish User Reference Manual |  | 1d? | 2006-08-17 | 2006-08-18 |  | 0d |
| 365 | C.DO.070 | Publish User Guide |  | 1d? | 2006-08-17 | 2006-08-18 |  | 0d |
| 366 | C.DO.080 | Publish Technical Reference Material |  | 1d? | 2006-08-17 | 2006-08-18 |  | 0d |
| 367 | C.DO.100 | Produce Online Help |  | 1d? | 2006-08-17 | 2006-08-18 |  | 0d |
| 368 | C.ACT.DCMRCCC | **Deploy Change Management Roadmap and Communication Campaign - Construction** |  | 1d? | 2006-08-17 | 2006-08-18 | 263 | 0d |
| 369 | C.OCM.150.3 | Conduct Change Management Roadmap and Communication Campaign |  | 1d? | 2006-08-17 | 2006-08-18 |  | 0d |
| 370 | C.OCM.155.2 | Monitor Change Management Roadmap and Communication Campaign Effectiveness |  | 1d? | 2006-08-17 | 2006-08-18 |  | 0d |
| 371 | C.ACT.CJIA | **Conduct Job Impact Analysis** |  | 1d? | 2006-08-17 | 2006-08-18 | 263 | 0d |
| 372 | C.OCM.170 | Collect and Analyze Job Change Data |  | 1d? | 2006-08-17 | 2006-08-18 |  | 0d |
| 373 | C.OCM.180 | Determine Impact of Job Changes |  | 1d? | 2006-08-17 | 2006-08-18 |  | 0d |
| 374 | C.OCM.190 | Prepare HR Transition Plan |  | 1d? | 2006-08-17 | 2006-08-18 |  | 0d |
| 375 | C.ACT.CMAWC | **Conduct Managers Alignment Workshop - Construction** |  | 1d? | 2006-08-18 | 2006-08-21 | 371 | 0d |
| 376 | C.OCM.200 | Design Managers Unit and Department Impact Workshop |  | 1d? | 2006-08-18 | 2006-08-21 |  | 0d |
| 377 | C.OCM.210 | Conduct Managers Unit and Department Impact Workshop |  | 1d? | 2006-08-18 | 2006-08-21 |  | 0d |
| 378 | C.ACT.DEUT | **Design End-User Training** |  | 1d? | 2006-08-17 | 2006-08-18 | 263 | 0d |
| 379 | C.TR.060 | Conduct User Learning Needs Analysis |  | 1d? | 2006-08-17 | 2006-08-18 |  | 0d |
| 380 | C.TR.070 | Develop User Learning Plan |  | 1d? | 2006-08-17 | 2006-08-18 |  | 0d |
| 381 | C.ACT.BEUT | **Build End-User Training** |  | 1d? | 2006-08-18 | 2006-08-21 | 378 | 0d |
| 382 | C.TR.080 | Develop User Learningware |  | 1d? | 2006-08-18 | 2006-08-21 |  | 0d |
| 383 | C.TR.090 | Prepare User Learning Environment |  | 1d? | 2006-08-18 | 2006-08-21 |  | 0d |
| 384 | C.ACT.TEUC | **Train End Users - Construction** |  | 1d? | 2006-08-21 | 2006-08-22 | 381 | 0d |
| 385 | C.TR.100.1 | Conduct User Learning Events |  | 1d? | 2006-08-21 | 2006-08-22 |  | 0d |
| 386 | C.ACT.IOCM | **Initial Operational Capability Milestone** |  | 1d? | 2006-11-15 | 2006-11-16 | 266, 288, 328, 331, 338, 343, 357 | 0d |
| 387 | C.PMC.IOCM | Initial Operational Capability Milestone | milestone | 1d? | 2006-11-15 | 2006-11-16 |  | 0d |

Notes:
- 364: Text1: User Reference Manual
- 365: Text1: User Guide
- 366: Text1: Technical Reference Material
- 367: Text1: Online Help
- 369: Text1: Change Management Roadmap and Communication Events
- 370: Text1: Change Management Roadmap and Communication Campaign Effectiveness Assessment
- 372: Text1: Job Impact Analysis
- 373: Text1: Job Impact Diagnosis
- 374: Text1: HR Transition Plan
- 376: Text1: Managers Unit and Department Impact Workshop Materials
- 377: Text1: Enabled Managers
- 379: Text1: User Learning Needs Analysis
- 380: Text1: User Learning Plan
- 382: Text1: User Learningware
- 383: Text1: Configured User Learning Environment
- 385: Text1: Skilled Users
- 387: Text1: Initial Operational Capability Milestone

| ID | WBS | Task | Duration | Start | Finish | Predecessors | Total slack | Free slack | Work | Text8 | Text2 | Text6 | Text7 | Text18 |
| --- | --- | --- | --- | --- | --- | --- | --- | --- | --- | --- | --- | --- | --- | --- |
| 388 | D | **Transition** | 359.8h? | 2006-11-16 | 2007-01-18 |  | 0d |  | 827.34h | null |  |  |  |  |
| 389 | D.ACT.SUAT | **Support User Acceptance Test** | 2.19d? | 2006-11-16 | 2006-11-20 | 386 | 9.47d |  | 55.53h |  |  |  |  |  |
| 390 | D.TE.105 | Prepare Users for Testing | 1d? | 2006-11-16 | 2006-11-17 |  | 10.66d |  |  |  |  |  |  |  |
| 391 | D.TE.110 | Prepare Acceptance Test Environment | 17.49h | 2006-11-16 | 2006-11-20 |  | 9.47d |  | 38.87h | 60 | TE.110 | TE | Business System Testing | EXEC |
| 392 | D.TE.120 | Support Acceptance Test | 5h | 2006-11-16 | 2006-11-16 |  | 11.04d |  | 16.66h | 60 | TE.120 | TE | Business System Testing | EXEC |
| 393 | D.ACT.CPTST | **Conduct Performance Test** | 11.66d | 2006-11-16 | 2006-12-01 | 386 | 0d |  | 222.1h |  |  |  |  |  |
| 394 | D.PT.100 | Execute Performance Test | 62.19h | 2006-11-16 | 2006-11-28 |  | 3.89d |  | 88.84h | 70 | PT.100 | PT | Performance Testing | EXEC |
| 395 | D.PT.110 | Create Performance Test Report | 93.28h | 2006-11-16 | 2006-12-01 |  | 0d |  | 133.26h | 70 | PT.110 | PT | Performance Testing | EXEC |
| 396 | D.ACT.PPE | **Prepare Production Environment** | 6.66d | 2006-11-16 | 2006-11-24 | 386 | 1.25d | 0d | 133.27h |  |  |  |  |  |
| 397 | D.TS.050 | Prepare Production Environment | 53.3h | 2006-11-16 | 2006-11-24 |  | 1.25d |  | 133.27h | 100 | TS.050 | TS | Transition | EXEC |
| 398 | D.ACT.CDT | **Convert Data - Transition** | 3.75d | 2006-11-24 | 2006-11-30 | 396 | 1.25d |  | 83.29h |  |  |  |  |  |
| 399 | D.CV.065.2 | Convert and Verify Data (Initial Load) | 29.98h | 2006-11-24 | 2006-11-30 |  | 1.25d |  | 49.97h | 90 | CV.065 | CV | Data Conversion | EXEC |
| 400 | D.CV.068.2 | Clean Data | 26.66h | 2006-11-24 | 2006-11-30 |  | 1.67d |  | 33.32h | 90 | CV.068 | CV | Data Conversion | EXEC |
| 401 | D.ACT.DCMRCCT | **Deploy Change Management Roadmap and Communication Campaign - Transition** | 1d? | 2006-11-16 | 2006-11-17 | 386 | 0d |  |  |  |  |  |  |  |
| 402 | D.OCM.150.4 | Conduct Change Management Roadmap and Communication Campaign | 1d? | 2006-11-16 | 2006-11-17 |  | 0d |  |  |  |  |  |  |  |
| 403 | D.OCM.155.3 | Monitor Change Management Roadmap and Communication Campaign Effectiveness | 1d? | 2006-11-16 | 2006-11-17 |  | 0d |  |  |  |  |  |  |  |
| 404 | D.ACT.CITA | **Conduct IT Alignment** | 1d? | 2006-11-16 | 2006-11-17 | 386 | 0d |  |  |  |  |  |  |  |
| 405 | D.OCM.220 | Prepare Assessment of Impact on IT Groups | 1d? | 2006-11-16 | 2006-11-17 |  | 0d |  |  |  |  |  |  |  |
| 406 | D.OCM.230 | Prepare IT Transition Plan | 1d? | 2006-11-16 | 2006-11-17 |  | 0d |  |  |  |  |  |  |  |
| 407 | D.ACT.TEUT | **Train End Users - Transition** | 1d? | 2006-11-16 | 2006-11-17 | 386 | 10.66d |  |  |  |  |  |  |  |
| 408 | D.TR.100.2 | Conduct User Learning Events | 1d? | 2006-11-16 | 2006-11-17 |  | 10.66d |  |  |  |  |  |  |  |
| 409 | D.ACT.FD | **Finalize Documentation** | 1d? | 2006-11-16 | 2006-11-17 | 386 | 0d |  |  |  |  |  |  |  |
| 410 | D.DO.110 | Finalize Documentation | 1d? | 2006-11-16 | 2006-11-17 |  | 0d |  |  |  |  |  |  |  |
| 411 | D.ACT.GP | **Go Production** | 33.31d? | 2006-12-01 | 2007-01-18 | 389, 393, 396, 398, 407 | 0d |  | 333.15h |  |  |  |  |  |
| 412 | D.TS.052 | Implement Production Support Infrastructure | 1d? | 2006-12-01 | 2006-12-04 |  | 32.31d |  |  |  |  |  |  |  |
| 413 | D.TS.058 | Verify Production Readiness | 1d? | 2006-12-01 | 2006-12-04 |  | 32.31d |  |  |  |  |  |  |  |
| 414 | D.TS.060 | Go Production | 266.52h | 2006-12-01 | 2007-01-18 |  | 0d |  | 266.52h | 100 | TS.060 | TS | Transition | EXEC |
| 415 | D.TS.070 | Shut Down Legacy System | 66.63h | 2006-12-01 | 2006-12-14 |  | 24.99d |  | 66.63h | 100 | TS.070 | TS | Transition | EXEC |

Notes:
- 390: Text1: Prepared Users for Testing
- 391: Text1: Acceptance Test Environment
- 392: Text1: Acceptance Test Results
- 394: Text1: Performance Test Results
- 395: Text1: Performance Test Report
- 397: Text1: Production Environment
- 399: Text1: Converted and Verified Data (Initial Load)
- 400: Text1: Clean Legacy Data
- 402: Text1: Change Management Roadmap and Communication Events
- 403: Text1: Change Management Roadmap and Communication Campaign Effectiveness Assessment
- 405: Text1: IT Alignment Diagnosis Grid
- 406: Text1: IT Transition Plan
- 408: Text1: Skilled Users
- 410: Text1: Finalized Documentation
- 412: Text1: Production Support Infrastructure
- 413: Text1: Production-Ready System
- 414: Text1: System in Production
- 415: Text1: Legacy System Shut Down

| ID | WBS | Task | Type | Duration | Start | Finish | Predecessors | Total slack | Work | Text2 | Text8 | Text18 | Text6 | Text7 | Text3 |
| --- | --- | --- | --- | --- | --- | --- | --- | --- | --- | --- | --- | --- | --- | --- | --- |
| 416 | D.ACT.SIP | **System in Production Milestone** |  | 0d | 2007-01-18 | 2007-01-18 | 389, 393, 396, 398, 407, 411 | 0d |  |  |  |  |  |  |  |
| 417 | D.PMC.SIP | System in Production Milestone | milestone | 0h | 2007-01-18 | 2007-01-18 |  | 0d |  | PMC.SIP | null | MGMT |  |  |  |
| 418 | E | **Production** |  | 52.48h? | 2007-01-18 | 2007-01-26 |  | 0d | 234.05h |  | null |  |  |  |  |
| 419 | E.ACT.MPSP | **Manage Production System Performance** |  | 6.11d | 2007-01-18 | 2007-01-26 | 416 | 0d | 61.08h |  |  |  |  |  |  |
| 420 | E.PT.120 | Conduct Production Performance Management |  | 48.86h | 2007-01-18 | 2007-01-26 |  | 0d | 61.08h | PT.120 | 70 | EXEC | PT | Performance Testing |  |
| 421 | E.ACT.EPS | **Evaluate Production System** |  | 5.56d? | 2007-01-18 | 2007-01-25 | 416 | 0d | 49.42h |  |  |  |  |  |  |
| 422 | E.TE.019.2 | Collect, Assess and Refine KPI Measurements |  | 1d? | 2007-01-18 | 2007-01-19 |  | 4.56d |  |  |  |  |  |  |  |
| 423 | E.PS.010 | Audit System |  | 44.48h | 2007-01-18 | 2007-01-25 |  | 0d | 49.42h | PS.010 | 110 | EXEC | PS | Post System Support |  |
| 424 | E.ACT.RPP | **Resolve Production Problems** |  | 5.56d | 2007-01-18 | 2007-01-25 | 416 | 0d | 74.13h |  |  |  |  |  |  |
| 425 | E.PS.050 | Analyze Problems |  | 44.48h | 2007-01-18 | 2007-01-25 |  | 0d | 49.42h | PS.050 | 110 | EXEC | PS | Post System Support |  |
| 426 | E.PS.060 | Monitor and Respond to System Problems |  | 19.77h | 2007-01-18 | 2007-01-22 |  | 0d | 24.71h | PS.060 | 110 | EXEC | PS | Post System Support |  |
| 427 | E.ACT.DCMRCCP | **Deploy Change Management Roadmap and Communication Campaign - Production** |  | 1d? | 2007-01-18 | 2007-01-19 | 416 | 0d |  |  |  |  |  |  |  |
| 428 | E.OCM.150.5 | Conduct Change Management Roadmap and Communication Campaign |  | 1d? | 2007-01-18 | 2007-01-19 |  | 0d |  |  |  |  |  |  |  |
| 429 | E.OCM.155.4 | Monitor Change Management Roadmap and Communication Campaign Effectiveness |  | 1d? | 2007-01-18 | 2007-01-19 |  | 0d |  |  |  |  |  |  |  |
| 430 | E.ACT.PF | **Plan for Future** |  | 3.09d? | 2007-01-18 | 2007-01-23 | 416 | 2.47d | 49.42h |  |  |  |  |  |  |
| 431 | E.RD.160 | Convert Project Views to Reusable Viewpoints |  | 1d? | 2007-01-18 | 2007-01-19 |  | 4.56d |  |  |  |  |  |  |  |
| 432 | E.PS.135 | Determine Future Functional Enhancements |  | 24.71h | 2007-01-18 | 2007-01-23 |  | 2.47d | 24.71h | PS.135 | 110 | EXEC | PS | Post System Support |  |
| 433 | E.PS.140 | Plan Enhancements |  | 14.83h | 2007-01-18 | 2007-01-22 |  | 3.71d | 24.71h | PS.140 | 110 | EXEC | PS | Post System Support |  |
| 434 | E.OCM.250 | Measure Organizational Change Effectiveness |  | 1d? | 2007-01-18 | 2007-01-19 |  | 4.56d |  |  |  |  |  |  |  |
| 435 | E.ACT.DITTP | **Deploy IT Transition Plan** |  | 1d? | 2007-01-18 | 2007-01-19 | 416 | 0d |  |  |  |  |  |  |  |
| 436 | E.OCM.260 | Implement IT Transition Plan |  | 1d? | 2007-01-18 | 2007-01-19 |  | 0d |  |  |  |  |  |  |  |
| 437 | E.ACT.SO | **Sign-Off Milestone** |  | 1d? | 2007-01-25 | 2007-01-26 | 421, 430 | 0d |  |  |  |  |  |  |  |
| 438 | E.PMC.SO | Sign-Off Milestone | milestone | 1d? | 2007-01-25 | 2007-01-26 |  | 0d |  |  |  |  |  |  |  |
| 439 | PC | **Project Closure** |  | 16h? | 2007-01-26 | 2007-01-30 |  | 0d |  | PC | null |  |  |  |  |
| 440 | PC.ACT.GA | **Gain Acceptance** |  | 1d? | 2007-01-26 | 2007-01-29 | 437 | 0d |  | PMC.PCSUM1 | 190 | MGMT | PMC | Project Management Control | OG |
| 441 | PC.SM.050 | Gain Acceptance |  | 1d? | 2007-01-26 | 2007-01-29 |  | 0d |  |  |  |  |  |  |  |

Notes:
- 417: Text1: System in Production Milestone
- 420: Text1: Managed Production Environment
- 422: Text1: Key Business Strategies and Objectives
- 423: Text1: System Evaluation
- 425: Text1: Fault Corrections
- 426: Text1: Problem Log
- 428: Text1: Change Management Roadmap and Communication Events
- 429: Text1: Change Management Roadmap and Communication Campaign Effectiveness Assessment
- 431: Text1: New Reusable Viewpoints
- 432: Text1: Future Functional Enhancements
- 433: Text1: Future MoSCoW List
- 434: Text1: Organizational Effectiveness Assessment
- 436: Text1: Aligned IT Organization
- 438: Text1: Sign-Off Milestone
- 441: Text1: Final Acceptance Certificate

| ID | WBS | Task | Duration | Start | Finish | Predecessors | Total slack | Text1 | Text2 | Text8 | Text3 | Text6 | Text7 | Text18 |
| --- | --- | --- | --- | --- | --- | --- | --- | --- | --- | --- | --- | --- | --- | --- |
| 442 | PC.ACT.CPC | **Close Processes and Contract** | 1d? | 2007-01-29 | 2007-01-30 | 440 | 0d | Closed Processes and Contract |  |  |  |  |  |  |
| 443 | PC.SM.060 | Close Scope Management | 1d? | 2007-01-29 | 2007-01-30 |  | 0d | Closed Scope Management |  |  |  |  |  |  |
| 444 | PC.SM.070 | Identify Future System Enhancements | 1d? | 2007-01-29 | 2007-01-30 |  | 0d | Future System Enhancements |  |  |  |  |  |  |
| 445 | PC.FM.050 | Close Project Financials | 1d? | 2007-01-29 | 2007-01-30 |  | 0d | Closed Project Financials |  |  |  |  |  |  |
| 446 | PC.WM.060 | Close Work Management | 1d? | 2007-01-29 | 2007-01-30 |  | 0d | Closed Work Management |  |  |  |  |  |  |
| 447 | PC.RKM.060 | Conduct Post-Production Risk Assessment | 1d? | 2007-01-29 | 2007-01-30 |  | 0d | Post-Production Risk Assessment |  |  |  |  |  |  |
| 448 | PC.IPM.050 | Produce Final Issue and Problem Report and Close Log(s) | 1d? | 2007-01-29 | 2007-01-30 |  | 0d | Closed Issue and Problem Log |  |  |  |  |  |  |
| 449 | PC.STM.070 | Release Staff | 1d? | 2007-01-29 | 2007-01-30 |  | 0d | Released Staff |  |  |  |  |  |  |
| 450 | PC.CMM.060 | Submit Final Reports | 1d? | 2007-01-29 | 2007-01-30 |  | 0d | Final Reports |  |  |  |  |  |  |
| 451 | PC.QM.060 | Conduct Post Production Quality Review | 1d? | 2007-01-29 | 2007-01-30 |  | 0d | Post-Production Quality Review |  |  |  |  |  |  |
| 452 | PC.CM.080 | Close Configuration Management | 1d? | 2007-01-29 | 2007-01-30 |  | 0d | Closed Configuration Management |  |  |  |  |  |  |
| 453 | PC.IFM.050 | Close Infrastructure | 1d? | 2007-01-29 | 2007-01-30 |  | 0d | Closed Infrastructure |  |  |  |  |  |  |
| 454 | PC.PCM.040 | Close Contract | 1d? | 2007-01-29 | 2007-01-30 |  | 0d | Closed Contract |  |  |  |  |  |  |
| 455 | PC.OCHM.040 | Establish Follow-Up Process | 1d? | 2007-01-29 | 2007-01-30 |  | 0d | Follow-Up Process |  |  |  |  |  |  |
| 456 | PC.ACT.DLLAP | **Document Lessons Learned and Archive Project** | 1d? | 2007-01-29 | 2007-01-30 | 440 | 0d |  |  |  |  |  |  |  |
| 457 | PC.CMM.040 | Document Lessons Learned | 1d? | 2007-01-29 | 2007-01-30 |  | 0d | Lessons Learned |  |  |  |  |  |  |
| 458 | PC.CMM.050 | Turn Over Project Documentation (Project Archives) | 1d? | 2007-01-29 | 2007-01-30 |  | 0d | Project Archives |  |  |  |  |  |  |
| 459 | PGM | **Program Management** | 8h? | 2006-05-31 | 2006-05-31 |  | 0d |  | PGM | null |  |  |  |  |
| 460 | PGM.ACT.PGM | **Perform PGM Program Management** | 1d? | 2006-05-31 | 2006-05-31 |  | 0d |  | PMC.PGMSUM | 190 | OG | PMC | Project Management Control | MGMT |
| 461 | PGM.PMC.PGMSUM1 | Perform Program Management Activities | 1d? | 2006-05-31 | 2006-05-31 |  | 0d | Program Management Activities |  |  |  |  |  |  |
